task_id,proj_id,wbs_id,clndr_id,phys_complete_pct,rev_fdbk_flag,est_wt,lock_plan_flag,auto_compute_act_flag,complete_pct_type,task_type,duration_type,status_code,task_code,task_name,rsrc_id,total_float_hr_cnt,free_float_hr_cnt,remain_drtn_hr_cnt,act_work_qty,remain_work_qty,target_work_qty,target_drtn_hr_cnt,target_equip_qty,act_equip_qty,remain_equip_qty,cstr_date,act_start_date,act_end_date,late_start_date,late_end_date,expect_end_date,early_start_date,early_end_date,restart_date,reend_date,target_start_date,target_end_date,rem_late_start_date,rem_late_end_date,cstr_type,priority_type,suspend_date,resume_date,float_path,float_path_order,guid,tmpl_guid,cstr_date2,cstr_type2,driving_path_flag,act_this_per_work_qty,act_this_per_equip_qty,external_early_start_date,external_late_end_date,create_date,update_date,create_user,update_user,location_id
141166,27164,54782,178,0,N,1,N,N,CP_Drtn,TT_Task,DT_FixedDUR2,TK_NotStart,SCO1000,Bundling / Phasing of circuits for project sequencing,,0,0,80,0,0,0,80,0,0,0,2023-07-03 00:00,,,2023-07-03 08:00,2023-07-17 16:00,,2023-07-03 08:00,2023-07-17 16:00,2023-07-03 08:00,2023-07-17 16:00,2023-07-03 08:00,2023-07-17 16:00,2023-07-03 08:00,2023-07-17 16:00,CS_MSOA,PT_Normal,,,,,p/G9q1S7XU+OqCyxya5vIA,UJjuaNL6SEi7r5Yn69vahA,,,Y,0,0,,,2023-02-08 18:30,2023-02-08 18:31,NotPrmUser,NotPrmUser,
141167,27164,54782,178,0,N,1,N,N,CP_Drtn,TT_Task,DT_FixedDUR2,TK_NotStart,SCO1010,Constructability Review,,0,0,40,0,0,0,40,0,0,0,,,,2023-07-18 08:00,2023-07-24 16:00,,2023-07-18 08:00,2023-07-24 16:00,2023-07-18 08:00,2023-07-24 16:00,2023-07-18 08:00,2023-07-24 16:00,2023-07-18 08:00,2023-07-24 16:00,,PT_Normal,,,,,ReeSZLqrAk2F8ze/A6S9Kw,CG/UvRRQ0kKwwXtUZSTJZA,,,Y,0,0,,,2023-02-08 18:30,2023-02-08 18:31,NotPrmUser,NotPrmUser,
141168,27164,54782,178,0,N,1,N,N,CP_Drtn,TT_Task,DT_FixedDUR2,TK_NotStart,SCO1020,SDG&E Review,,0,0,16,0,0,0,16,0,0,0,,,,2023-07-25 08:00,2023-07-26 16:00,,2023-07-25 08:00,2023-07-26 16:00,2023-07-25 08:00,2023-07-26 16:00,2023-07-25 08:00,2023-07-26 16:00,2023-07-25 08:00,2023-07-26 16:00,,PT_Normal,,,,,SsGDh3RazE6nrVe5kBxrSA,wAXZeb3RvUWInuZ0vOWywQ,,,Y,0,0,,,2023-02-08 18:30,2023-02-08 18:31,NotPrmUser,NotPrmUser,
141169,27164,54783,178,0,N,1,N,N,CP_Drtn,TT_Task,DT_FixedDUR2,TK_NotStart,PLA1000,Workorder Setup,,0,0,40,0,0,0,40,0,0,0,,,,2023-07-27 08:00,2023-08-02 16:00,,2023-07-27 08:00,2023-08-02 16:00,2023-07-27 08:00,2023-08-02 16:00,2023-07-27 08:00,2023-08-02 16:00,2023-07-27 08:00,2023-08-02 16:00,,PT_Normal,,,,,t4G25SBIQEWa16MhSCFHtg,2nQLorlKHUSlsyRyBzMwLg,,,Y,0,0,,,2023-02-08 18:30,2023-02-08 18:31,NotPrmUser,NotPrmUser,
141170,27164,54786,178,0,N,1,N,N,CP_Drtn,TT_Task,DT_FixedDUR2,TK_NotStart,DES1040,10% Submittal,,0,0,200,0,0,0,200,0,0,0,,,,2023-10-12 08:00,2023-11-15 16:00,,2023-10-12 08:00,2023-11-15 16:00,2023-10-12 08:00,2023-11-15 16:00,2023-10-12 08:00,2023-11-15 16:00,2023-10-12 08:00,2023-11-15 16:00,,PT_Normal,,,,,lhUUbmmlz0qBlW6U2UJ5GQ,lkILpi3jsECEqBMIGWirgQ,,,Y,0,0,,,2023-02-08 18:30,2023-02-08 18:31,NotPrmUser,NotPrmUser,
141171,27164,54786,178,0,N,1,N,N,CP_Drtn,TT_Task,DT_FixedDUR2,TK_NotStart,DES1050,30% Submittal,,0,0,400,0,0,0,400,0,0,0,,,,2023-11-16 08:00,2024-01-31 16:00,,2023-11-16 08:00,2024-01-31 16:00,2023-11-16 08:00,2024-01-31 16:00,2023-11-16 08:00,2024-01-31 16:00,2023-11-16 08:00,2024-01-31 16:00,,PT_Normal,,,,,9Jud0Zi0YUqGxndCJq1nFw,eyVqv558MEyC1wT4hwvUFQ,,,Y,0,0,,,2023-02-08 18:30,2023-02-08 18:31,NotPrmUser,NotPrmUser,
141172,27164,54786,178,0,N,1,N,N,CP_Drtn,TT_Task,DT_FixedDUR2,TK_NotStart,DES1060,30% Review,,0,0,80,0,0,0,80,0,0,0,,,,2024-02-01 08:00,2024-02-14 16:00,,2024-02-01 08:00,2024-02-14 16:00,2024-02-01 08:00,2024-02-14 16:00,2024-02-01 08:00,2024-02-14 16:00,2024-02-01 08:00,2024-02-14 16:00,,PT_Normal,,,,,X0jcY4xucECL2PHOjdzm7Q,3/fAvhn7U0yLjm/7EvavKQ,,,Y,0,0,,,2023-02-08 18:30,2023-02-08 18:31,NotPrmUser,NotPrmUser,
141173,27164,54786,178,0,N,1,N,N,CP_Drtn,TT_Task,DT_FixedDUR2,TK_NotStart,DES1070,60% Submittal (60 taking less tahn 30%),,600,0,560,0,0,0,560,0,0,0,,,,2024-05-30 08:00,2024-09-04 16:00,,2024-02-15 08:00,2024-05-22 16:00,2024-02-15 08:00,2024-05-22 16:00,2024-02-15 08:00,2024-05-22 16:00,2024-05-30 08:00,2024-09-04 16:00,,PT_Normal,,,,,Z79egalxJkuY/4EawqdWUA,CE/72uy8nkGLiZAVDar6aQ,,,N,0,0,,,2023-02-08 18:30,2023-02-08 18:31,NotPrmUser,NotPrmUser,
141174,27164,54786,178,0,N,1,N,N,CP_Drtn,TT_Task,DT_FixedDUR2,TK_NotStart,DES1080,60% Review (check env reviews at 30 and 60),,600,0,80,0,0,0,80,0,0,0,,,,2024-09-05 08:00,2024-09-18 16:00,,2024-05-23 08:00,2024-06-05 16:00,2024-05-23 08:00,2024-06-05 16:00,2024-05-23 08:00,2024-06-05 16:00,2024-09-05 08:00,2024-09-18 16:00,,PT_Normal,,,,,GILGRV1ZekK01ZrkTfAJsQ,DCJwPZ3pzEyb//dCGK++bQ,,,N,0,0,,,2023-02-08 18:30,2023-02-08 18:31,NotPrmUser,NotPrmUser,
141175,27164,54786,178,0,N,1,N,N,CP_Drtn,TT_Task,DT_FixedDUR2,TK_NotStart,DES1090,90% Submittal,,600,0,360,0,0,0,360,0,0,0,,,,2024-09-19 08:00,2024-11-20 16:00,,2024-06-06 08:00,2024-08-07 16:00,2024-06-06 08:00,2024-08-07 16:00,2024-06-06 08:00,2024-08-07 16:00,2024-09-19 08:00,2024-11-20 16:00,,PT_Normal,,,,,swia9onImE20l/KUkPnizA,C2FOBsWNhkC2yDZp5ophyg,,,N,0,0,,,2023-02-08 18:30,2023-02-08 18:31,NotPrmUser,NotPrmUser,
141176,27164,54786,178,0,N,1,N,N,CP_Drtn,TT_Task,DT_FixedDUR2,TK_NotStart,DES1100,90% Review - 20 days review,,600,0,80,0,0,0,80,0,0,0,,,,2024-11-21 08:00,2024-12-04 16:00,,2024-08-08 08:00,2024-08-21 16:00,2024-08-08 08:00,2024-08-21 16:00,2024-08-08 08:00,2024-08-21 16:00,2024-11-21 08:00,2024-12-04 16:00,,PT_Normal,,,,,dG7od/hmzUSLyk/tSj6UUw,oUOWVLVkj0qmk6bbY3JOXQ,,,N,0,0,,,2023-02-08 18:30,2023-02-08 18:31,NotPrmUser,NotPrmUser,
141177,27164,54786,178,0,N,1,N,N,CP_Drtn,TT_Task,DT_FixedDUR2,TK_NotStart,DES1110,100% Submittal,,680,0,160,0,0,0,160,0,0,0,,,,2024-12-19 08:00,2025-01-15 16:00,,2024-08-22 08:00,2024-09-18 16:00,2024-08-22 08:00,2024-09-18 16:00,2024-08-22 08:00,2024-09-18 16:00,2024-12-19 08:00,2025-01-15 16:00,,PT_Normal,,,,,3Bek8gSCzkSpYdNZIMLs8A,057QYhYmf029ZDEs4064Dg,,,N,0,0,,,2023-02-08 18:30,2023-02-08 18:31,NotPrmUser,NotPrmUser,
141178,27164,54786,178,0,N,1,N,N,CP_Drtn,TT_Task,DT_FixedDUR2,TK_NotStart,DES1120,Issue IFC Design Package,,680,680,80,0,0,0,80,0,0,0,,,,2025-01-16 08:00,2025-01-29 16:00,,2024-09-19 08:00,2024-10-02 16:00,2024-09-19 08:00,2024-10-02 16:00,2024-09-19 08:00,2024-10-02 16:00,2025-01-16 08:00,2025-01-29 16:00,,PT_Normal,,,,,Vpc3ATyp9Ui9UxajcxgAUA,mvhJnQnDuUim7+7D4BMMFQ,,,N,0,0,,,2023-02-08 18:30,2023-02-08 18:31,NotPrmUser,NotPrmUser,
141179,27164,54787,178,0,N,1,N,N,CP_Drtn,TT_Task,DT_FixedDUR2,TK_NotStart,DES1130,60% Submittal,,640,0,480,0,0,0,480,0,0,0,,,,2024-05-09 08:00,2024-07-31 16:00,,2024-01-18 08:00,2024-04-10 16:00,2024-01-18 08:00,2024-04-10 16:00,2024-01-18 08:00,2024-04-10 16:00,2024-05-09 08:00,2024-07-31 16:00,,PT_Normal,,,,,DnbhUyj66E2I1QU5bfutig,TGAd8oYBgUOIhfpPX+Z4FA,,,N,0,0,,,2023-02-08 18:30,2023-02-08 18:31,NotPrmUser,NotPrmUser,
141180,27164,54787,178,0,N,1,N,N,CP_Drtn,TT_Task,DT_FixedDUR2,TK_NotStart,DES1140,60% Review,,880,0,80,0,0,0,80,0,0,0,,,,2024-09-12 08:00,2024-09-25 16:00,,2024-04-11 08:00,2024-04-24 16:00,2024-04-11 08:00,2024-04-24 16:00,2024-04-11 08:00,2024-04-24 16:00,2024-09-12 08:00,2024-09-25 16:00,,PT_Normal,,,,,d1LsbePO6UKsS+53PEdzOw,NpUnSl5xf0WyLpp+y8c1Ug,,,N,0,0,,,2023-02-08 18:30,2023-02-08 18:31,NotPrmUser,NotPrmUser,
141181,27164,54787,178,0,N,1,N,N,CP_Drtn,TT_Task,DT_FixedDUR2,TK_NotStart,DES1150,90% Submittal,,1120,0,400,0,0,0,400,0,0,0,,,,2024-11-07 08:00,2025-01-15 16:00,,2024-04-25 08:00,2024-07-03 16:00,2024-04-25 08:00,2024-07-03 16:00,2024-04-25 08:00,2024-07-03 16:00,2024-11-07 08:00,2025-01-15 16:00,,PT_Normal,,,,,5B0KcGy+eE2VHRw/B6tiXA,FiUWsIvI80Gm3KS5x5eG8A,,,N,0,0,,,2023-02-08 18:30,2023-02-08 18:31,NotPrmUser,NotPrmUser,
141182,27164,54787,178,0,N,1,N,N,CP_Drtn,TT_Task,DT_FixedDUR2,TK_NotStart,DES1160,90% Review,,1120,0,80,0,0,0,80,0,0,0,,,,2025-01-16 08:00,2025-01-29 16:00,,2024-07-04 08:00,2024-07-17 16:00,2024-07-04 08:00,2024-07-17 16:00,2024-07-04 08:00,2024-07-17 16:00,2025-01-16 08:00,2025-01-29 16:00,,PT_Normal,,,,,/ObyqQvtlUaIU8VuWeqT3A,73ox+ebTiUOBx0He+BfE7A,,,N,0,0,,,2023-02-08 18:30,2023-02-08 18:31,NotPrmUser,NotPrmUser,
141183,27164,54787,178,0,N,1,N,N,CP_Drtn,TT_Task,DT_FixedDUR2,TK_NotStart,DES1170,100% Submittal,,1120,880,160,0,0,0,160,0,0,0,,,,2025-01-30 08:00,2025-02-26 16:00,,2024-07-18 08:00,2024-08-14 16:00,2024-07-18 08:00,2024-08-14 16:00,2024-07-18 08:00,2024-08-14 16:00,2025-01-30 08:00,2025-02-26 16:00,,PT_Normal,,,,,tzyhE0XTYU2H79qIyR30Gg,Q2j9Pd8RWkmmMLuOuxgptQ,,,N,0,0,,,2023-02-08 18:30,2023-02-08 18:31,NotPrmUser,NotPrmUser,
141184,27164,54787,178,0,N,1,N,N,CP_Drtn,TT_Task,DT_FixedDUR2,TK_NotStart,DES1180,Issue IFC Design Package,,240,0,80,0,0,0,80,0,0,0,,,,2025-02-27 08:00,2025-03-12 16:00,,2025-01-16 08:00,2025-01-29 16:00,2025-01-16 08:00,2025-01-29 16:00,2025-01-16 08:00,2025-01-29 16:00,2025-02-27 08:00,2025-03-12 16:00,,PT_Normal,,,,,OTJde+SzSEOo0GdAo6w18g,3/adxHRWBUOshsFYhPVL4Q,,,N,0,0,,,2023-02-08 18:30,2023-02-08 18:31,NotPrmUser,NotPrmUser,
141185,27164,54788,178,0,N,1,N,N,CP_Drtn,TT_Task,DT_FixedDUR2,TK_NotStart,DES1190,Issue Services Worksheet to Design Firms,,640,0,160,0,0,0,160,0,0,0,,,,2024-03-14 08:00,2024-04-10 16:00,,2023-11-16 08:00,2023-12-15 16:00,2023-11-16 08:00,2023-12-15 16:00,2023-11-16 08:00,2023-12-15 16:00,2024-03-14 08:00,2024-04-10 16:00,,PT_Normal,,,,,fbrBQpYKPEGKojkWpi+PQw,jWBa0INtYEqNs2DdNn4DVg,,,N,0,0,,,2023-02-08 18:30,2023-02-08 18:31,NotPrmUser,NotPrmUser,
141186,27164,54789,178,0,N,1,N,N,CP_Drtn,TT_Task,DT_FixedDUR2,TK_NotStart,DES1220,SED Design,,6376,0,240,0,0,0,240,0,0,0,,,,2026-11-09 08:00,2026-12-18 16:00,,2023-10-12 08:00,2023-11-22 16:00,2023-10-12 08:00,2023-11-22 16:00,2023-10-12 08:00,2023-11-22 16:00,2026-11-09 08:00,2026-12-18 16:00,,PT_Normal,,,,,ukey+VR1SUKORbVWm1Dttw,ZcFgUGOIukmcE0okTudoYg,,,N,0,0,,,2023-02-08 18:30,2023-02-08 18:31,NotPrmUser,NotPrmUser,
141187,27164,54789,178,0,N,1,N,N,CP_Drtn,TT_Task,DT_FixedDUR2,TK_NotStart,DES1230,Issue IFC Design Package,,6376,5320,160,0,0,0,160,0,0,0,,,,2026-12-21 08:00,2027-01-15 16:00,,2023-11-27 08:00,2023-12-26 16:00,2023-11-27 08:00,2023-12-26 16:00,2023-11-27 08:00,2023-12-26 16:00,2026-12-21 08:00,2027-01-15 16:00,,PT_Normal,,,,,tpcjCv4HnUyYdROiYYSo8Q,mToT1AWCAU2o/bfgxafLEw,,,N,0,0,,,2023-02-08 18:30,2023-02-08 18:31,NotPrmUser,NotPrmUser,
141188,27164,54791,178,0,N,1,N,N,CP_Drtn,TT_Task,DT_FixedDUR2,TK_NotStart,PRO1000,Civil BOM - Long Lead @ 30%,,680,0,120,0,0,0,120,0,0,0,,,,2024-06-13 08:00,2024-07-03 16:00,,2024-02-15 08:00,2024-03-06 16:00,2024-02-15 08:00,2024-03-06 16:00,2024-02-15 08:00,2024-03-06 16:00,2024-06-13 08:00,2024-07-03 16:00,,PT_Normal,,,,,eS30vz+jk06G2qGmFlprnQ,gSQ37bNl2kipoID5Adq4Eg,,,N,0,0,,,2023-02-08 18:30,2023-02-08 18:31,NotPrmUser,NotPrmUser,
141189,27164,54791,178,0,N,1,N,N,CP_Drtn,TT_Task,DT_FixedDUR2,TK_NotStart,PRO1020,Electrical BOM - Long Lead @ 60%,,920,0,120,0,0,0,120,0,0,0,,,,2024-10-03 08:00,2024-10-23 16:00,,2024-04-25 08:00,2024-05-15 16:00,2024-04-25 08:00,2024-05-15 16:00,2024-04-25 08:00,2024-05-15 16:00,2024-10-03 08:00,2024-10-23 16:00,,PT_Normal,,,,,Uw/nVPxUb06uidkpf+igKw,lL62srRvUkece6pvohjT0w,,,N,0,0,,,2023-02-08 18:30,2023-02-08 18:31,NotPrmUser,NotPrmUser,
141190,27164,54791,178,0,N,1,N,N,CP_Drtn,TT_Task,DT_FixedDUR2,TK_NotStart,PRO1040,BOM - Short Lead @ 60%,,600,0,120,0,0,0,120,0,0,0,,,,2024-12-05 08:00,2024-12-25 16:00,,2024-08-22 08:00,2024-09-11 16:00,2024-08-22 08:00,2024-09-11 16:00,2024-08-22 08:00,2024-09-11 16:00,2024-12-05 08:00,2024-12-25 16:00,,PT_Normal,,,,,BkKvK6cao0eMioghvgqT9g,EhasyDNjnE+RctaYiwqWXw,,,N,0,0,,,2023-02-08 18:30,2023-02-08 18:31,NotPrmUser,NotPrmUser,
141191,27164,54792,178,0,N,1,N,N,CP_Drtn,TT_Task,DT_FixedDUR2,TK_NotStart,PER1000,CalTrans Permit,,0,0,2000,0,0,0,2000,0,0,0,,,,2024-02-15 08:00,2025-01-29 16:00,,2024-02-15 08:00,2025-01-29 16:00,2024-02-15 08:00,2025-01-29 16:00,2024-02-15 08:00,2025-01-29 16:00,2024-02-15 08:00,2025-01-29 16:00,,PT_Normal,,,,,ESYN0jjb6E+OUeYe9XLQIw,FUsJTnrLZ06TpXqZgF7zKQ,,,Y,0,0,,,2023-02-08 18:30,2023-02-08 18:31,NotPrmUser,NotPrmUser,
141192,27164,54792,178,0,N,1,N,N,CP_Drtn,TT_Task,DT_FixedDUR2,TK_NotStart,PER1010,City & County Permits,,1200,1200,800,0,0,0,800,0,0,0,,,,2024-09-12 08:00,2025-01-29 16:00,,2024-02-15 08:00,2024-07-03 16:00,2024-02-15 08:00,2024-07-03 16:00,2024-02-15 08:00,2024-07-03 16:00,2024-09-12 08:00,2025-01-29 16:00,,PT_Normal,,,,,t71jms8qZUW6IrZQ1DCfQw,Q2gS6QDsNU2rbVuW/TeQ6A,,,N,0,0,,,2023-02-08 18:30,2023-02-08 18:31,NotPrmUser,NotPrmUser,
141193,27164,54792,178,0,N,1,N,N,CP_Drtn,TT_Task,DT_FixedDUR2,TK_NotStart,PER1020,Other Permit (TBD),,1200,1200,800,0,0,0,800,0,0,0,,,,2024-09-12 08:00,2025-01-29 16:00,,2024-02-15 08:00,2024-07-03 16:00,2024-02-15 08:00,2024-07-03 16:00,2024-02-15 08:00,2024-07-03 16:00,2024-09-12 08:00,2025-01-29 16:00,,PT_Normal,,,,,3T7bjPC5MEarU4p/SFnL+Q,TqdJVLrO/0m5/rVsRs5ebw,,,N,0,0,,,2023-02-08 18:30,2023-02-08 18:31,NotPrmUser,NotPrmUser,
141194,27164,54793,178,0,N,1,N,N,CP_Drtn,TT_Task,DT_FixedDUR2,TK_NotStart,PUB1000,Public Affairs / Community Outreach,,6216,6216,800,0,0,0,800,0,0,0,,,,2027-05-17 08:00,2027-10-01 16:00,,2024-05-23 08:00,2024-10-09 16:00,2024-05-23 08:00,2024-10-09 16:00,2024-05-23 08:00,2024-10-09 16:00,2027-05-17 08:00,2027-10-01 16:00,,PT_Normal,,,,,jGZNxu42nUGaDnPdxWv/+w,VKME7MsMKk+2RLdXS/ejaA,,,N,0,0,,,2023-02-08 18:30,2023-02-08 18:31,NotPrmUser,NotPrmUser,
141195,27164,54794,178,0,N,1,N,N,CP_Drtn,TT_Task,DT_FixedDUR2,TK_NotStart,LAN1000,Land Rights and Easement Acquisition,,880,880,1200,0,0,0,1200,0,0,0,,,,2024-07-04 08:00,2025-01-29 16:00,,2024-02-01 08:00,2024-08-28 16:00,2024-02-01 08:00,2024-08-28 16:00,2024-02-01 08:00,2024-08-28 16:00,2024-07-04 08:00,2025-01-29 16:00,,PT_Normal,,,,,zTHboeDX3U+t+PQRzbWHxA,d0ulyl+IkUubuk6NcP7LGQ,,,N,0,0,,,2023-02-08 18:30,2023-02-08 18:31,NotPrmUser,NotPrmUser,
141196,27164,54794,178,0,N,1,N,N,CP_Drtn,TT_Task,DT_FixedDUR2,TK_NotStart,LAN1010,Tribal Land Rights,,880,880,1200,0,0,0,1200,0,0,0,,,,2024-07-04 08:00,2025-01-29 16:00,,2024-02-01 08:00,2024-08-28 16:00,2024-02-01 08:00,2024-08-28 16:00,2024-02-01 08:00,2024-08-28 16:00,2024-07-04 08:00,2025-01-29 16:00,,PT_Normal,,,,,Vdf0E9WdoUm3z24durOJGA,i+m/5q7//0+rplY/gxOfnw,,,N,0,0,,,2023-02-08 18:30,2023-02-08 18:31,NotPrmUser,NotPrmUser,
141197,27164,54794,178,0,N,1,N,N,CP_Drtn,TT_Task,DT_FixedDUR2,TK_NotStart,LAN1020,Laydown Yards,,880,880,1200,0,0,0,1200,0,0,0,,,,2024-07-04 08:00,2025-01-29 16:00,,2024-02-01 08:00,2024-08-28 16:00,2024-02-01 08:00,2024-08-28 16:00,2024-02-01 08:00,2024-08-28 16:00,2024-07-04 08:00,2025-01-29 16:00,,PT_Normal,,,,,nWDWN2EjYEmG0XXpPdRo4A,Kws3n0LR0UaiXcZ6gJldlA,,,N,0,0,,,2023-02-08 18:30,2023-02-08 18:31,NotPrmUser,NotPrmUser,
141198,27164,54795,178,0,N,1,N,N,CP_Drtn,TT_Task,DT_FixedDUR2,TK_NotStart,ENV1000,10% Environmental Submittal,,680,0,200,0,0,0,200,0,0,0,,,,2024-02-15 08:00,2024-03-20 16:00,,2023-10-12 08:00,2023-11-15 16:00,2023-10-12 08:00,2023-11-15 16:00,2023-10-12 08:00,2023-11-15 16:00,2024-02-15 08:00,2024-03-20 16:00,,PT_Normal,,,,,ZdAlVpjfREyTRZd8/4oRmg,FFmY8xmRwUW/Yxv+CerpbQ,,,N,0,0,,,2023-02-08 18:30,2023-02-08 18:31,NotPrmUser,NotPrmUser,
141199,27164,54795,178,0,N,1,N,N,CP_Drtn,TT_Task,DT_FixedDUR2,TK_NotStart,ENV1010,10% Environmental Review,,680,0,120,0,0,0,120,0,0,0,,,,2024-03-21 08:00,2024-04-10 16:00,,2023-11-16 08:00,2023-12-08 16:00,2023-11-16 08:00,2023-12-08 16:00,2023-11-16 08:00,2023-12-08 16:00,2024-03-21 08:00,2024-04-10 16:00,,PT_Normal,,,,,N1d8HQtNYkGDREGQ1vVx0A,RBa0ZN3FXEaLJSmtH1lgow,,,N,0,0,,,2023-02-08 18:30,2023-02-08 18:31,NotPrmUser,NotPrmUser,
141200,27164,54795,178,0,N,1,N,N,CP_Drtn,TT_Task,DT_FixedDUR2,TK_NotStart,ENV1020,30% Environmental Submittal,,640,0,200,0,0,0,200,0,0,0,,,,2024-08-01 08:00,2024-09-04 16:00,,2024-04-11 08:00,2024-05-15 16:00,2024-04-11 08:00,2024-05-15 16:00,2024-04-11 08:00,2024-05-15 16:00,2024-08-01 08:00,2024-09-04 16:00,,PT_Normal,,,,,vQJW3CYtJEm3hdUOZL3brw,jwPTBZ4PPUmnapBHIW/lMA,,,N,0,0,,,2023-02-08 18:30,2023-02-08 18:31,NotPrmUser,NotPrmUser,
141201,27164,54795,178,0,N,1,N,N,CP_Drtn,TT_Task,DT_FixedDUR2,TK_NotStart,ENV1030,30% Environmental Review,,640,0,120,0,0,0,120,0,0,0,,,,2024-09-05 08:00,2024-09-25 16:00,,2024-05-16 08:00,2024-06-05 16:00,2024-05-16 08:00,2024-06-05 16:00,2024-05-16 08:00,2024-06-05 16:00,2024-09-05 08:00,2024-09-25 16:00,,PT_Normal,,,,,RYav382GXE+WUXOfTZ/tUQ,Fw9H/eSbxEOrOHXY3R8NcA,,,N,0,0,,,2023-02-08 18:30,2023-02-08 18:31,NotPrmUser,NotPrmUser,
141202,27164,54795,178,0,N,1,N,N,CP_Drtn,TT_Task,DT_FixedDUR2,TK_NotStart,ENV1040,60% Environmental Submittal,,640,0,280,0,0,0,280,0,0,0,,,,2024-09-26 08:00,2024-11-13 16:00,,2024-06-06 08:00,2024-07-24 16:00,2024-06-06 08:00,2024-07-24 16:00,2024-06-06 08:00,2024-07-24 16:00,2024-09-26 08:00,2024-11-13 16:00,,PT_Normal,,,,,3rot5+4TWEiaZwZG70RxDg,RNxVHlHdkUWghJkt3fOWWw,,,N,0,0,,,2023-02-08 18:30,2023-02-08 18:31,NotPrmUser,NotPrmUser,
141203,27164,54795,178,0,N,1,N,N,CP_Drtn,TT_Task,DT_FixedDUR2,TK_NotStart,ENV1050,60% Environmental Review,,640,0,120,0,0,0,120,0,0,0,,,,2024-11-14 08:00,2024-12-04 16:00,,2024-07-25 08:00,2024-08-14 16:00,2024-07-25 08:00,2024-08-14 16:00,2024-07-25 08:00,2024-08-14 16:00,2024-11-14 08:00,2024-12-04 16:00,,PT_Normal,,,,,bb3MIr/75keb+HqSmMbRSw,wKDbpmEOb0+SkQQUK6CYNw,,,N,0,0,,,2023-02-08 18:30,2023-02-08 18:31,NotPrmUser,NotPrmUser,
141204,27164,54795,178,0,N,1,N,N,CP_Drtn,TT_Task,DT_FixedDUR2,TK_NotStart,ENV1060,BIA NEPA Submittal,,640,0,160,0,0,0,160,0,0,0,,,,2024-12-05 08:00,2025-01-01 16:00,,2024-08-15 08:00,2024-09-11 16:00,2024-08-15 08:00,2024-09-11 16:00,2024-08-15 08:00,2024-09-11 16:00,2024-12-05 08:00,2025-01-01 16:00,,PT_Normal,,,,,feQ76NE8okGk2m/Zyx1gcQ,DU72mjcJR0WN+C5bqrdlQw,,,N,0,0,,,2023-02-08 18:30,2023-02-08 18:31,NotPrmUser,NotPrmUser,
141205,27164,54795,178,0,N,1,N,N,CP_Drtn,TT_Task,DT_FixedDUR2,TK_NotStart,ENV1070,"BIA Received (Add 250 days, if needed)",,640,640,160,0,0,0,160,0,0,0,,,,2025-01-02 08:00,2025-01-29 16:00,,2024-09-12 08:00,2024-10-09 16:00,2024-09-12 08:00,2024-10-09 16:00,2024-09-12 08:00,2024-10-09 16:00,2025-01-02 08:00,2025-01-29 16:00,,PT_Normal,,,,,AK+ufR3rx0KaEGrccXVvDw,W+9L7Yenr0OVzxCMI6f6Tg,,,N,0,0,,,2023-02-08 18:30,2023-02-08 18:31,NotPrmUser,NotPrmUser,
141206,27164,54785,178,0,N,1,N,N,CP_Drtn,TT_Task,DT_FixedDUR2,TK_NotStart,DES1010,Seismic / Geotech Submittal (60-90 for BIA) - Avg 45 days,,680,0,200,0,0,0,200,0,0,0,,,,2024-04-11 08:00,2024-05-15 16:00,,2023-12-11 08:00,2024-01-17 16:00,2023-12-11 08:00,2024-01-17 16:00,2023-12-11 08:00,2024-01-17 16:00,2024-04-11 08:00,2024-05-15 16:00,,PT_Normal,,,,,cM664K6KfUCziA5+IhSEMg,tNXmnehY1ESsp9RSEnnunQ,,,N,0,0,,,2023-02-08 18:30,2023-02-08 18:31,NotPrmUser,NotPrmUser,
141207,27164,54785,178,0,N,1,N,N,CP_Drtn,TT_Task,DT_FixedDUR2,TK_NotStart,DES1020,Potholing Submittal,,680,40,200,0,0,0,200,0,0,0,,,,2024-05-16 08:00,2024-06-19 16:00,,2024-01-18 08:00,2024-02-21 16:00,2024-01-18 08:00,2024-02-21 16:00,2024-01-18 08:00,2024-02-21 16:00,2024-05-16 08:00,2024-06-19 16:00,,PT_Normal,,,,,Kr0P/wahWEeTR7QP7NyaOg,WYlXlTk3DUmU9nqmEo9wSA,,,N,0,0,,,2023-02-08 18:30,2023-02-08 18:31,NotPrmUser,NotPrmUser,
141208,27164,54785,178,0,N,1,N,N,CP_Drtn,TT_Task,DT_FixedDUR2,TK_NotStart,DES1030,Potholing Release /Perform Potholing,,640,0,240,0,0,0,240,0,0,0,,,,2024-06-20 08:00,2024-07-31 16:00,,2024-02-29 08:00,2024-04-10 16:00,2024-02-29 08:00,2024-04-10 16:00,2024-02-29 08:00,2024-04-10 16:00,2024-06-20 08:00,2024-07-31 16:00,,PT_Normal,,,,,RTGf6LxJLkebAHRtef4x4g,0H1DvFwoNUC8Cqg89ktvmQ,,,N,0,0,,,2023-02-08 18:30,2023-02-08 18:31,NotPrmUser,NotPrmUser,
141209,27164,54797,178,0,N,1,N,N,CP_Drtn,TT_Task,DT_FixedDUR2,TK_NotStart,PCON100,Initiate Performance Partnering Process @ 60%,,1000,0,40,0,0,0,40,0,0,0,,,,2024-11-28 08:00,2024-12-04 16:00,,2024-06-06 08:00,2024-06-12 16:00,2024-06-06 08:00,2024-06-12 16:00,2024-06-06 08:00,2024-06-12 16:00,2024-11-28 08:00,2024-12-04 16:00,,PT_Normal,,,,,P904/aqsNka7gha5XST85Q,uO2EEJC+QEG7hDBueb3HJA,,,N,0,0,,,2023-02-08 18:30,2023-02-08 18:31,NotPrmUser,NotPrmUser,
141210,27164,54797,178,0,N,1,N,N,CP_Drtn,TT_Task,DT_FixedDUR2,TK_NotStart,PCON110,Receive Estimate from Contractor,,1000,0,120,0,0,0,120,0,0,0,,,,2024-12-05 08:00,2024-12-25 16:00,,2024-06-13 08:00,2024-07-03 16:00,2024-06-13 08:00,2024-07-03 16:00,2024-06-13 08:00,2024-07-03 16:00,2024-12-05 08:00,2024-12-25 16:00,,PT_Normal,,,,,9qteq56uCEqtKI9Dv32Hww,0+Pf5T3kLkG6BjUThtnC6g,,,N,0,0,,,2023-02-08 18:30,2023-02-08 18:31,NotPrmUser,NotPrmUser,
141211,27164,54797,178,0,N,1,N,N,CP_Drtn,TT_Task,DT_FixedDUR2,TK_NotStart,PCON120,Bid Estimate Negotiations,,1000,0,80,0,0,0,80,0,0,0,,,,2024-12-26 08:00,2025-01-08 16:00,,2024-07-04 08:00,2024-07-17 16:00,2024-07-04 08:00,2024-07-17 16:00,2024-07-04 08:00,2024-07-17 16:00,2024-12-26 08:00,2025-01-08 16:00,,PT_Normal,,,,,3fbF8bNFjk6RhrdR6mlrVA,nbXSNCFlZ0SHqCtgC+n3Aw,,,N,0,0,,,2023-02-08 18:30,2023-02-08 18:31,NotPrmUser,NotPrmUser,
141212,27164,54797,178,0,N,1,N,N,CP_Drtn,TT_Task,DT_FixedDUR2,TK_NotStart,PCON130,Revise Estimate based on IFC,,1000,0,40,0,0,0,40,0,0,0,,,,2025-01-09 08:00,2025-01-15 16:00,,2024-07-18 08:00,2024-07-24 16:00,2024-07-18 08:00,2024-07-24 16:00,2024-07-18 08:00,2024-07-24 16:00,2025-01-09 08:00,2025-01-15 16:00,,PT_Normal,,,,,lLrOS4SMyEG+oV29+VgM4Q,Of1eNmH8bU+1jPFgWfIL9Q,,,N,0,0,,,2023-02-08 18:30,2023-02-08 18:31,NotPrmUser,NotPrmUser,
141213,27164,54797,178,0,N,1,N,N,CP_Drtn,TT_Task,DT_FixedDUR2,TK_NotStart,PCON140,Issue Release (add milestone bid award),,1000,1000,80,0,0,0,80,0,0,0,,,,2025-01-16 08:00,2025-01-29 16:00,,2024-07-25 08:00,2024-08-07 16:00,2024-07-25 08:00,2024-08-07 16:00,2024-07-25 08:00,2024-08-07 16:00,2025-01-16 08:00,2025-01-29 16:00,,PT_Normal,,,,,Sw4Q587fqkG1EyFB2ARRgA,9QgtBnbMc06eVKyZcrEptA,,,N,0,0,,,2023-02-08 18:30,2023-02-08 18:31,NotPrmUser,NotPrmUser,
141214,27164,54799,178,0,N,1,N,N,CP_Drtn,TT_Task,DT_FixedDUR2,TK_NotStart,PCON200,Civil Pre-Construction Meeting (Civil Construction Ready),,0,0,40,0,0,0,40,0,0,0,,,,2025-01-30 08:00,2025-02-05 16:00,,2025-01-30 08:00,2025-02-05 16:00,2025-01-30 08:00,2025-02-05 16:00,2025-01-30 08:00,2025-02-05 16:00,2025-01-30 08:00,2025-02-05 16:00,,PT_Normal,,,,,j22m1Y1FnU25Ppe/WHvliQ,kubzUe+l7EiT8DoExw5ddA,,,Y,0,0,,,2023-02-08 18:30,2023-02-08 18:31,NotPrmUser,NotPrmUser,
141215,27164,54799,178,0,N,1,N,N,CP_Drtn,TT_Task,DT_FixedDUR2,TK_NotStart,PCON210,Electrical - Pre-Construction Meeting (Electical Construction Ready),,240,0,40,0,0,0,40,0,0,0,,,,2025-03-13 08:00,2025-03-19 16:00,,2025-01-30 08:00,2025-02-05 16:00,2025-01-30 08:00,2025-02-05 16:00,2025-01-30 08:00,2025-02-05 16:00,2025-03-13 08:00,2025-03-19 16:00,,PT_Normal,,,,,Np0sZfDnaEejU0Zcwk6UHQ,KTAOr72RjU6/GE099WDT3A,,,N,0,0,,,2023-02-08 18:30,2023-02-08 18:31,NotPrmUser,NotPrmUser,
141216,27164,54798,178,0,N,1,N,N,CP_Drtn,TT_Task,DT_FixedDUR2,TK_NotStart,PCON150,Initiate Performance Partnering Process @ 60%,,1480,0,40,0,0,0,40,0,0,0,,,,2025-01-09 08:00,2025-01-15 16:00,,2024-04-25 08:00,2024-05-01 16:00,2024-04-25 08:00,2024-05-01 16:00,2024-04-25 08:00,2024-05-01 16:00,2025-01-09 08:00,2025-01-15 16:00,,PT_Normal,,,,,HF+WWA9WMUqGDQ9YBi+PLg,wZ0KyWAvX0C2Rg6hFCIYIA,,,N,0,0,,,2023-02-08 18:30,2023-02-08 18:31,NotPrmUser,NotPrmUser,
141217,27164,54798,178,0,N,1,N,N,CP_Drtn,TT_Task,DT_FixedDUR2,TK_NotStart,PCON160,Receive Estimate from Contractor,,1480,0,120,0,0,0,120,0,0,0,,,,2025-01-16 08:00,2025-02-05 16:00,,2024-05-02 08:00,2024-05-22 16:00,2024-05-02 08:00,2024-05-22 16:00,2024-05-02 08:00,2024-05-22 16:00,2025-01-16 08:00,2025-02-05 16:00,,PT_Normal,,,,,IUttpZ+Ze0yt/hc2aXV9kg,z5AL9q9Je0mEhJn9pJ/USQ,,,N,0,0,,,2023-02-08 18:30,2023-02-08 18:31,NotPrmUser,NotPrmUser,
141218,27164,54798,178,0,N,1,N,N,CP_Drtn,TT_Task,DT_FixedDUR2,TK_NotStart,PCON170,Bid Estimate Negotiations,,1480,0,80,0,0,0,80,0,0,0,,,,2025-02-06 08:00,2025-02-19 16:00,,2024-05-23 08:00,2024-06-05 16:00,2024-05-23 08:00,2024-06-05 16:00,2024-05-23 08:00,2024-06-05 16:00,2025-02-06 08:00,2025-02-19 16:00,,PT_Normal,,,,,YYZSA0LCmUm4eSyuRnVKFA,L/jwNpSJ90aUQ86fF33Vew,,,N,0,0,,,2023-02-08 18:30,2023-02-08 18:31,NotPrmUser,NotPrmUser,
141219,27164,54798,178,0,N,1,N,N,CP_Drtn,TT_Task,DT_FixedDUR2,TK_NotStart,PCON180,Revise Estimate based on IFC,,1480,0,40,0,0,0,40,0,0,0,,,,2025-02-20 08:00,2025-02-26 16:00,,2024-06-06 08:00,2024-06-12 16:00,2024-06-06 08:00,2024-06-12 16:00,2024-06-06 08:00,2024-06-12 16:00,2025-02-20 08:00,2025-02-26 16:00,,PT_Normal,,,,,XE3Wuw7ulUqkNz0nJL6Bzw,9PYrFVrwZkaC9i+erGHGcA,,,N,0,0,,,2023-02-08 18:30,2023-02-08 18:31,NotPrmUser,NotPrmUser,
141220,27164,54798,178,0,N,1,N,N,CP_Drtn,TT_Task,DT_FixedDUR2,TK_NotStart,PCON190,Issue Release,,1480,1240,80,0,0,0,80,0,0,0,,,,2025-02-27 08:00,2025-03-12 16:00,,2024-06-13 08:00,2024-06-26 16:00,2024-06-13 08:00,2024-06-26 16:00,2024-06-13 08:00,2024-06-26 16:00,2025-02-27 08:00,2025-03-12 16:00,,PT_Normal,,,,,wns30Sl88EW6bMej5ZuQ8w,ypRi9fJdjEGJXJWmRSOXsQ,,,N,0,0,,,2023-02-08 18:30,2023-02-08 18:31,NotPrmUser,NotPrmUser,
141221,27164,54791,178,0,N,1,N,N,CP_Drtn,TT_Task,DT_FixedDUR2,TK_NotStart,PRO1010,Order Long Lead Civil Material,,680,680,1200,0,0,0,1200,0,0,0,,,,2024-07-04 08:00,2025-01-29 16:00,,2024-03-07 08:00,2024-10-02 16:00,2024-03-07 08:00,2024-10-02 16:00,2024-03-07 08:00,2024-10-02 16:00,2024-07-04 08:00,2025-01-29 16:00,,PT_Normal,,,,,tMVj+GhiqEaidYZF/T1OaA,iqrqKFIso0SZ/9KtNKHQSw,,,N,0,0,,,2023-02-08 18:30,2023-02-08 18:31,NotPrmUser,NotPrmUser,
141222,27164,54791,178,0,N,1,N,N,CP_Drtn,TT_Task,DT_FixedDUR2,TK_NotStart,PRO1050,Order Short Lead Materials,,600,600,200,0,0,0,200,0,0,0,,,,2024-12-26 08:00,2025-01-29 16:00,,2024-09-12 08:00,2024-10-16 16:00,2024-09-12 08:00,2024-10-16 16:00,2024-09-12 08:00,2024-10-16 16:00,2024-12-26 08:00,2025-01-29 16:00,,PT_Normal,,,,,zHpGORC8wEGvwPykrP/4Zw,HG8HkqlHsUiMbyFiLqs79g,,,N,0,0,,,2023-02-08 18:30,2023-02-08 18:31,NotPrmUser,NotPrmUser,
141223,27164,54791,178,0,N,1,N,N,CP_Drtn,TT_Task,DT_FixedDUR2,TK_NotStart,PRO1030,Order Long Lead Electrical Materials,,920,680,800,0,0,0,800,0,0,0,,,,2024-10-24 08:00,2025-03-12 16:00,,2024-05-16 08:00,2024-10-02 16:00,2024-05-16 08:00,2024-10-02 16:00,2024-05-16 08:00,2024-10-02 16:00,2024-10-24 08:00,2025-03-12 16:00,,PT_Normal,,,,,PpyIm9zo9E+rwssTHtfPrg,Ot03DPCAqEqUOxDSdUjRFA,,,N,0,0,,,2023-02-08 18:30,2023-02-08 18:31,NotPrmUser,NotPrmUser,
141224,27164,54801,178,0,N,1,N,N,CP_Drtn,TT_Task,DT_FixedDUR2,TK_NotStart,CON2000,Civil Construction (Trenching 300 feet/day),7730,0,0,3520,0,10728,10728,3520,0,0,0,,,,2025-02-06 08:00,2026-10-14 16:00,,2025-02-06 08:00,2026-10-14 16:00,2025-02-06 08:00,2026-10-14 16:00,2025-02-06 08:00,2026-10-14 16:00,2025-02-06 08:00,2026-10-14 16:00,,PT_Normal,,,,,lhQzBb5VlkOyfJ1BaeSrLg,Cc7w20P8f0utwLryIKqDzA,,,Y,0,0,,,2023-02-08 18:30,2023-02-08 19:10,NotPrmUser,NotPrmUser,
141225,27164,54802,178,0,N,1,N,N,CP_Drtn,TT_Task,DT_FixedDUR2,TK_NotStart,CON3000,Electrical Construction,7786,0,0,3280,0,1640,1640,3280,0,0,0,,,,2025-03-20 08:00,2026-10-14 16:00,,2025-03-20 08:00,2026-10-14 16:00,2025-03-20 08:00,2026-10-14 16:00,2025-03-20 08:00,2026-10-14 16:00,2025-03-20 08:00,2026-10-14 16:00,,PT_Normal,,,,,F4yejunl0EC/i9HTvH7FJw,eL9RTWVJH06rISvJK83jKA,,,Y,0,0,,,2023-02-08 18:30,2023-02-08 19:35,NotPrmUser,NotPrmUser,
141226,27164,54803,178,0,N,1,N,N,CP_Drtn,TT_Task,DT_FixedDUR2,TK_NotStart,CON4000,Service Cutover,,1056,0,2920,0,0,0,2920,0,0,0,,,,2025-11-24 08:00,2027-04-16 16:00,,2025-05-22 08:00,2026-10-14 16:00,2025-05-22 08:00,2026-10-14 16:00,2025-05-22 08:00,2026-10-14 16:00,2025-11-24 08:00,2027-04-16 16:00,,PT_Normal,,,,,MUXcMvpw7UCZxfEfkdMGQA,3AgEpr76m0CqqKE2VKijgA,,,N,0,0,,,2023-02-08 18:30,2023-02-08 18:31,NotPrmUser,NotPrmUser,
141227,27164,54804,178,0,N,1,N,N,CP_Drtn,TT_Task,DT_FixedDUR2,TK_NotStart,CON5000,Scada Construction,,1056,0,520,0,0,0,520,0,0,0,,,,2027-01-18 08:00,2027-04-16 16:00,,2026-07-16 08:00,2026-10-14 16:00,2026-07-16 08:00,2026-10-14 16:00,2026-07-16 08:00,2026-10-14 16:00,2027-01-18 08:00,2027-04-16 16:00,,PT_Normal,,,,,DqZ5cS2LFU2VV/RJxEAm1g,GoyHULsbG0axNtmLSoRstw,,,N,0,0,,,2023-02-08 18:30,2023-02-08 18:31,NotPrmUser,NotPrmUser,
141228,27164,54805,178,0,N,1,N,N,CP_Drtn,TT_Task,DT_FixedDUR2,TK_NotStart,CON6000,Substation Construction,,1056,0,520,0,0,0,520,0,0,0,,,,2027-01-18 08:00,2027-04-16 16:00,,2026-07-16 08:00,2026-10-14 16:00,2026-07-16 08:00,2026-10-14 16:00,2026-07-16 08:00,2026-10-14 16:00,2027-01-18 08:00,2027-04-16 16:00,,PT_Normal,,,,,tNlRA6+8NU+NH80zlhYA0A,HxNOt/ChV0qIpddPYwKJ2Q,,,N,0,0,,,2023-02-08 18:30,2023-02-08 18:31,NotPrmUser,NotPrmUser,
141229,27164,54806,178,0,N,1,N,N,CP_Drtn,TT_Task,DT_FixedDrtn,TK_NotStart,CON7000,Overhead RFS (1000 feet per day),7785,0,0,1056,0,1056,1056,1056,0,0,0,,,,2026-10-15 08:00,2027-04-16 16:00,,2026-10-15 08:00,2027-04-16 16:00,2026-10-15 08:00,2027-04-16 16:00,2026-10-15 08:00,2027-04-16 16:00,2026-10-15 08:00,2027-04-16 16:00,,PT_Normal,,,,,+NoPX+TalEWyIr/UkxfFkg,GTug5VQymUiil1f+PGPbQQ,,,Y,0,0,,,2023-02-08 18:30,2023-02-08 18:31,NotPrmUser,NotPrmUser,
141230,27164,54800,178,0,N,1,N,N,CP_Drtn,TT_Task,DT_FixedDUR2,TK_NotStart,ISD1000,ISD - Energize - Put in service,,2008,2008,8,0,0,0,8,25,0,25,,,,2027-10-01 08:00,2027-10-01 16:00,,2026-10-15 08:00,2026-10-15 16:00,2026-10-15 08:00,2026-10-15 16:00,2026-10-15 08:00,2026-10-15 16:00,2027-10-01 08:00,2027-10-01 16:00,,PT_Normal,,,,,5V4U6LRJFk+CqYilm6sOqA,YEeYplFmpk6MD8b5pL75EQ,,,N,0,0,,,2023-02-08 18:30,2023-02-08 18:31,NotPrmUser,NotPrmUser,
141231,27164,54783,178,0,N,1,N,N,CP_Drtn,TT_Task,DT_FixedDUR2,TK_NotStart,SUR1000,Survey and LiDAR,7385,0,0,400,0,9182,9182,400,0,0,0,,,,2023-08-03 08:00,2023-10-11 16:00,,2023-08-03 08:00,2023-10-11 16:00,2023-08-03 08:00,2023-10-11 16:00,2023-08-03 08:00,2023-10-11 16:00,2023-08-03 08:00,2023-10-11 16:00,,PT_Normal,,,,,38NzRbykAUCBPd0E52XABg,HMqLrquq4UyNgK32EbaSOQ,,,Y,0,0,,,2023-02-08 18:30,2023-02-08 18:31,NotPrmUser,NotPrmUser,
141232,27164,54788,178,0,N,1,N,N,CP_Drtn,TT_Task,DT_FixedDUR2,TK_NotStart,DES1200,Receive Services Worksheet and Cable Info from Design Firms,,640,0,160,0,0,0,160,0,0,0,,,,2024-04-11 08:00,2024-05-08 16:00,,2023-12-18 08:00,2024-01-17 16:00,2023-12-18 08:00,2024-01-17 16:00,2023-12-18 08:00,2024-01-17 16:00,2024-04-11 08:00,2024-05-08 16:00,,PT_Normal,,,,,YH/bkQ92BEKyaBGayI0PEA,vZxKQP6vz06Lt+Q+aHtf1A,,,N,0,0,,,2023-02-08 18:30,2023-02-08 18:31,NotPrmUser,NotPrmUser,
141233,27164,54788,178,0,N,1,N,N,CP_Drtn,TT_Task,DT_FixedDUR2,TK_NotStart,DES1210,Issue to Trench Inspectors,,2376,1320,80,0,0,0,80,0,0,0,,,,2025-11-10 08:00,2025-11-21 16:00,,2024-09-19 08:00,2024-10-02 16:00,2024-09-19 08:00,2024-10-02 16:00,2024-09-19 08:00,2024-10-02 16:00,2025-11-10 08:00,2025-11-21 16:00,,PT_Normal,,,,,5kKC4gBwmkeqqLEJdwHLWA,jDSUvCUDBE20vcnnUrcpTA,,,N,0,0,,,2023-02-08 18:30,2023-02-08 18:31,NotPrmUser,NotPrmUser,
141234,27164,54800,178,0,N,1,N,N,CP_Drtn,TT_FinMile,DT_FixedDrtn,TK_NotStart,CON1020,Construction Complete,,0,0,0,0,0,0,0,0,0,0,,,,2027-04-16 16:00,2027-04-16 16:00,,2027-04-16 16:00,2027-04-16 16:00,2027-04-16 16:00,2027-04-16 16:00,2027-04-16 16:00,2027-04-16 16:00,2027-04-16 16:00,2027-04-16 16:00,,PT_Normal,,,,,V0EXV4Ycf0m/qlCVMUUzIQ,Jpm8Jlf0zUe3mbcFiZnPOA,,,Y,0,0,,,2023-02-08 18:30,2023-02-08 18:31,NotPrmUser,NotPrmUser,
141235,27164,54800,178,0,N,1,N,N,CP_Drtn,TT_Mile,DT_FixedDrtn,TK_NotStart,CON1010,Construction Start,,5536,5536,0,0,0,0,0,0,0,0,,,,2027-10-01 16:00,2027-10-01 16:00,,2025-02-06 08:00,2025-02-06 08:00,2025-02-06 08:00,2025-02-06 08:00,2025-02-06 08:00,2025-02-06 08:00,2027-10-01 16:00,2027-10-01 16:00,,PT_Normal,,,,,vASNw5ZcmE2QmbdnmjloqQ,jrN70TGxMUenH8TL8Xp3mg,,,N,0,0,,,2023-02-08 18:30,2023-02-08 18:31,NotPrmUser,NotPrmUser,
141236,27164,54809,178,0,N,1,N,N,CP_Drtn,TT_Task,DT_FixedDUR2,TK_NotStart,CLO1020,GIS/As-Built and Records Complete,,480,480,480,0,0,0,480,0,0,0,,,,2027-07-12 08:00,2027-10-01 16:00,,2027-04-19 08:00,2027-07-09 16:00,2027-04-19 08:00,2027-07-09 16:00,2027-04-19 08:00,2027-07-09 16:00,2027-07-12 08:00,2027-10-01 16:00,,PT_Normal,,,,,dUiP9OaOeEyvtJbVC2j1nQ,Mc32FHt2XUObI28baj4acg,,,N,0,0,,,2023-02-08 18:30,2023-02-08 18:31,NotPrmUser,NotPrmUser,
141237,27164,54810,178,0,N,1,N,N,CP_Drtn,TT_Task,DT_FixedDUR2,TK_NotStart,CLO1030,"PO's complete, Work Order Reconcilled and Closed",,0,0,960,0,0,0,960,0,0,0,,,,2027-04-19 08:00,2027-10-01 16:00,,2027-04-19 08:00,2027-10-01 16:00,2027-04-19 08:00,2027-10-01 16:00,2027-04-19 08:00,2027-10-01 16:00,2027-04-19 08:00,2027-10-01 16:00,,PT_Normal,,,,,mcHza9ZBL0GuRuc2lzHvNw,97tKFORzCUeml3WsPGtYTw,,,Y,0,0,,,2023-02-08 18:30,2023-02-08 18:31,NotPrmUser,NotPrmUser,
141238,27164,54808,178,0,N,1,N,N,CP_Drtn,TT_FinMile,DT_FixedDrtn,TK_NotStart,CLO1010,Project Complete,,0,0,0,0,0,0,0,0,0,0,,,,2027-10-01 16:00,2027-10-01 16:00,,2027-10-01 16:00,2027-10-01 16:00,2027-10-01 16:00,2027-10-01 16:00,2027-10-01 16:00,2027-10-01 16:00,2027-10-01 16:00,2027-10-01 16:00,,PT_Normal,,,,,CPOV5mrJsESBlDNN+ME0cg,H37c9Z88FkyCtn2XtTIToQ,,,Y,0,0,,,2023-02-08 18:30,2023-02-08 18:31,NotPrmUser,NotPrmUser,
141239,27164,54784,178,0,N,1,N,N,CP_Drtn,TT_LOE,DT_FixedDUR2,TK_NotStart,DES1000,Design Summary,7257,4096,0,2680,0,16233,16233,2680,0,0,0,,,,2023-10-12 08:00,2027-01-15 16:00,,2023-10-12 08:00,2025-01-29 16:00,2023-10-12 08:00,2025-01-29 16:00,2023-10-12 08:00,2025-01-29 16:00,2023-10-12 08:00,2027-01-15 16:00,,PT_Normal,,,,,NLze2Mdc00u+d++pE8PXzQ,WVuX6dMydkmJglQCEWXAvw,,,N,0,0,,,2023-02-08 18:30,2023-02-08 18:31,NotPrmUser,NotPrmUser,
141240,27164,54800,178,0,N,1,N,N,CP_Drtn,TT_LOE,DT_FixedDUR2,TK_NotStart,CON1000,Construction Summary,7385,0,0,4576,0,9972,9972,4576,25,0,25,,,,2027-04-16 16:00,2027-04-16 16:00,,2025-02-06 08:00,2027-04-16 16:00,2025-02-06 08:00,2027-04-16 16:00,2025-02-06 08:00,2027-04-16 16:00,2027-04-16 16:00,2027-04-16 16:00,,PT_Normal,,,,,BzuX5nfwq0WlrWRKuqijvQ,Yw6WQQUY+0iBV1+IkMDynA,,,N,0,0,,,2023-02-08 18:30,2023-02-08 18:31,NotPrmUser,NotPrmUser,
141241,27164,54808,178,0,N,1,N,N,CP_Drtn,TT_LOE,DT_FixedDUR2,TK_NotStart,CLO1000,Close Out Summary,7385,0,0,960,0,4482,4482,960,0,0,0,,,,2027-04-19 08:00,2027-10-01 16:00,,2027-04-19 08:00,2027-10-01 16:00,2027-04-19 08:00,2027-10-01 16:00,2027-04-19 08:00,2027-10-01 16:00,2027-04-19 08:00,2027-10-01 16:00,,PT_Normal,,,,,kN1XiVMG/EmaHMWHp1Fzfg,3a1/sR4xTUiRY/Bl0a9Q0Q,,,Y,0,0,,,2023-02-08 18:30,2023-02-08 18:31,NotPrmUser,NotPrmUser,
141242,27164,54781,178,0,N,1,N,N,CP_Drtn,TT_LOE,DT_FixedDUR2,TK_NotStart,PCON1000,Pre-Construction Summary,,0,0,3296,0,0,0,3296,0,0,0,,,,2023-07-03 08:00,2025-02-05 16:00,,2023-07-03 08:00,2025-02-05 16:00,2023-07-03 08:00,2025-02-05 16:00,2023-07-03 08:00,2025-02-05 16:00,2023-07-03 08:00,2025-02-05 16:00,,PT_Normal,,,,,DM9o6rtfHUC76y8aSRXUaA,C08Jzy7azES2bx6XkNtiMw,,,Y,0,0,,,2023-02-08 18:30,2023-02-08 18:31,NotPrmUser,NotPrmUser,
141243,27165,54812,178,0,N,1,N,N,CP_Drtn,TT_Task,DT_FixedDUR2,TK_NotStart,SCO1000,Bundling / Phasing of circuits for project sequencing,,0,0,80,0,0,0,80,0,0,0,2023-07-17 00:00,,,2023-07-17 08:00,2023-07-28 16:00,,2023-07-17 08:00,2023-07-28 16:00,2023-07-17 08:00,2023-07-28 16:00,2023-07-17 08:00,2023-07-28 16:00,2023-07-17 08:00,2023-07-28 16:00,CS_MSOA,PT_Normal,,,,,fIZHKB+zlkCyfa/9ooXB0Q,XPismLZwLE2lAyMthfBOyQ,,,Y,0,0,,,2023-02-08 18:30,2023-02-08 18:31,NotPrmUser,NotPrmUser,
141244,27165,54812,178,0,N,1,N,N,CP_Drtn,TT_Task,DT_FixedDUR2,TK_NotStart,SCO1010,Constructability Review,,0,0,40,0,0,0,40,0,0,0,,,,2023-07-31 08:00,2023-08-04 16:00,,2023-07-31 08:00,2023-08-04 16:00,2023-07-31 08:00,2023-08-04 16:00,2023-07-31 08:00,2023-08-04 16:00,2023-07-31 08:00,2023-08-04 16:00,,PT_Normal,,,,,dLxOnU+cvEOwpNqtXR/z5Q,PqwQ4MVviEi/yxpO6YsLmA,,,Y,0,0,,,2023-02-08 18:30,2023-02-08 18:31,NotPrmUser,NotPrmUser,
141245,27165,54812,178,0,N,1,N,N,CP_Drtn,TT_Task,DT_FixedDUR2,TK_NotStart,SCO1020,SDG&E Review,,0,0,16,0,0,0,16,0,0,0,,,,2023-08-07 08:00,2023-08-08 16:00,,2023-08-07 08:00,2023-08-08 16:00,2023-08-07 08:00,2023-08-08 16:00,2023-08-07 08:00,2023-08-08 16:00,2023-08-07 08:00,2023-08-08 16:00,,PT_Normal,,,,,E0nmlH+g4EOdbYhHEjKokQ,osVCXxJB7Umxk2FC7XOgNw,,,Y,0,0,,,2023-02-08 18:30,2023-02-08 18:31,NotPrmUser,NotPrmUser,
141246,27165,54813,178,0,N,1,N,N,CP_Drtn,TT_Task,DT_FixedDUR2,TK_NotStart,PLA1000,Workorder Setup,,0,0,40,0,0,0,40,0,0,0,,,,2023-08-09 08:00,2023-08-15 16:00,,2023-08-09 08:00,2023-08-15 16:00,2023-08-09 08:00,2023-08-15 16:00,2023-08-09 08:00,2023-08-15 16:00,2023-08-09 08:00,2023-08-15 16:00,,PT_Normal,,,,,8WmITI/09EuO8C7Wri5u2w,N7g/X6L8eEi5ZncUwy82bg,,,Y,0,0,,,2023-02-08 18:30,2023-02-08 18:31,NotPrmUser,NotPrmUser,
141247,27165,54816,178,0,N,1,N,N,CP_Drtn,TT_Task,DT_FixedDUR2,TK_NotStart,DES1040,10% Submittal,,0,0,200,0,0,0,200,0,0,0,,,,2023-10-25 08:00,2023-11-30 16:00,,2023-10-25 08:00,2023-11-30 16:00,2023-10-25 08:00,2023-11-30 16:00,2023-10-25 08:00,2023-11-30 16:00,2023-10-25 08:00,2023-11-30 16:00,,PT_Normal,,,,,E2LsOSWRl0WUkSqL+koliQ,3pmM6b59sUyj/T2iFP984A,,,Y,0,0,,,2023-02-08 18:30,2023-02-08 18:31,NotPrmUser,NotPrmUser,
141248,27165,54816,178,0,N,1,N,N,CP_Drtn,TT_Task,DT_FixedDUR2,TK_NotStart,DES1050,30% Submittal,,0,0,400,0,0,0,400,0,0,0,,,,2023-12-01 08:00,2024-02-13 16:00,,2023-12-01 08:00,2024-02-13 16:00,2023-12-01 08:00,2024-02-13 16:00,2023-12-01 08:00,2024-02-13 16:00,2023-12-01 08:00,2024-02-13 16:00,,PT_Normal,,,,,cQHl36M10EC1r8TF8zyMdg,CS7IuqexSEWrAPB1GDIBXQ,,,Y,0,0,,,2023-02-08 18:30,2023-02-08 18:31,NotPrmUser,NotPrmUser,
141249,27165,54816,178,0,N,1,N,N,CP_Drtn,TT_Task,DT_FixedDUR2,TK_NotStart,DES1060,30% Review,,0,0,80,0,0,0,80,0,0,0,,,,2024-02-14 08:00,2024-02-27 16:00,,2024-02-14 08:00,2024-02-27 16:00,2024-02-14 08:00,2024-02-27 16:00,2024-02-14 08:00,2024-02-27 16:00,2024-02-14 08:00,2024-02-27 16:00,,PT_Normal,,,,,GwpAWpNelUWBx9azxRf5AQ,wJlZgMrFaUSRNGBL8ymEaA,,,Y,0,0,,,2023-02-08 18:30,2023-02-08 18:31,NotPrmUser,NotPrmUser,
141250,27165,54816,178,0,N,1,N,N,CP_Drtn,TT_Task,DT_FixedDUR2,TK_NotStart,DES1070,60% Submittal,,600,0,560,0,0,0,560,0,0,0,,,,2024-06-12 08:00,2024-09-17 16:00,,2024-02-28 08:00,2024-06-04 16:00,2024-02-28 08:00,2024-06-04 16:00,2024-02-28 08:00,2024-06-04 16:00,2024-06-12 08:00,2024-09-17 16:00,,PT_Normal,,,,,jXjW3Da6+EaA1Nbvpk3YcA,4qRBtyfLsEWVHR8XEA8k6g,,,N,0,0,,,2023-02-08 18:30,2023-02-08 18:31,NotPrmUser,NotPrmUser,
141251,27165,54816,178,0,N,1,N,N,CP_Drtn,TT_Task,DT_FixedDUR2,TK_NotStart,DES1080,60% Review,,600,0,80,0,0,0,80,0,0,0,,,,2024-09-18 08:00,2024-10-01 16:00,,2024-06-05 08:00,2024-06-18 16:00,2024-06-05 08:00,2024-06-18 16:00,2024-06-05 08:00,2024-06-18 16:00,2024-09-18 08:00,2024-10-01 16:00,,PT_Normal,,,,,9negded020ybLiCPdnCJFA,ZA0APMnfwUiJUgF0d14gIA,,,N,0,0,,,2023-02-08 18:30,2023-02-08 18:31,NotPrmUser,NotPrmUser,
141252,27165,54816,178,0,N,1,N,N,CP_Drtn,TT_Task,DT_FixedDUR2,TK_NotStart,DES1090,90% Submittal,,600,0,360,0,0,0,360,0,0,0,,,,2024-10-02 08:00,2024-12-03 16:00,,2024-06-19 08:00,2024-08-20 16:00,2024-06-19 08:00,2024-08-20 16:00,2024-06-19 08:00,2024-08-20 16:00,2024-10-02 08:00,2024-12-03 16:00,,PT_Normal,,,,,mOVK2imFREyky7xXSXitqg,H1TpZ9CBYEa+5BXIHtiyFA,,,N,0,0,,,2023-02-08 18:30,2023-02-08 18:31,NotPrmUser,NotPrmUser,
141253,27165,54816,178,0,N,1,N,N,CP_Drtn,TT_Task,DT_FixedDUR2,TK_NotStart,DES1100,90% Review,,600,0,80,0,0,0,80,0,0,0,,,,2024-12-04 08:00,2024-12-17 16:00,,2024-08-21 08:00,2024-09-03 16:00,2024-08-21 08:00,2024-09-03 16:00,2024-08-21 08:00,2024-09-03 16:00,2024-12-04 08:00,2024-12-17 16:00,,PT_Normal,,,,,xnb8Gj/pTEeE4PUV2ZykTw,wyx6XLYzxESuN7/hqj8smQ,,,N,0,0,,,2023-02-08 18:30,2023-02-08 18:31,NotPrmUser,NotPrmUser,
141254,27165,54816,178,0,N,1,N,N,CP_Drtn,TT_Task,DT_FixedDUR2,TK_NotStart,DES1110,100% Submittal,,680,0,160,0,0,0,160,0,0,0,,,,2025-01-01 08:00,2025-01-28 16:00,,2024-09-04 08:00,2024-10-01 16:00,2024-09-04 08:00,2024-10-01 16:00,2024-09-04 08:00,2024-10-01 16:00,2025-01-01 08:00,2025-01-28 16:00,,PT_Normal,,,,,96+jIWPZqkiXrbxAtj6vdQ,AcQ+I5YmPk+yDiHWU1yB+Q,,,N,0,0,,,2023-02-08 18:30,2023-02-08 18:31,NotPrmUser,NotPrmUser,
141255,27165,54816,178,0,N,1,N,N,CP_Drtn,TT_Task,DT_FixedDUR2,TK_NotStart,DES1120,Issue IFC Design Package,,680,680,80,0,0,0,80,0,0,0,,,,2025-01-29 08:00,2025-02-11 16:00,,2024-10-02 08:00,2024-10-15 16:00,2024-10-02 08:00,2024-10-15 16:00,2024-10-02 08:00,2024-10-15 16:00,2025-01-29 08:00,2025-02-11 16:00,,PT_Normal,,,,,Nn1BWxSv6kawmy+V4DSIbQ,DAMYmyZAmkqlE0sLKwjdKg,,,N,0,0,,,2023-02-08 18:30,2023-02-08 18:31,NotPrmUser,NotPrmUser,
141256,27165,54817,178,0,N,1,N,N,CP_Drtn,TT_Task,DT_FixedDUR2,TK_NotStart,DES1130,60% Submittal,,840,0,480,0,0,0,480,0,0,0,,,,2024-06-26 08:00,2024-09-17 16:00,,2024-01-31 08:00,2024-04-23 16:00,2024-01-31 08:00,2024-04-23 16:00,2024-01-31 08:00,2024-04-23 16:00,2024-06-26 08:00,2024-09-17 16:00,,PT_Normal,,,,,QPcaGOz210CVzx2+HP1gQA,hDvlwV5Rlk6vGQaPpoGsGw,,,N,0,0,,,2023-02-08 18:30,2023-02-08 18:31,NotPrmUser,NotPrmUser,
141257,27165,54817,178,0,N,1,N,N,CP_Drtn,TT_Task,DT_FixedDUR2,TK_NotStart,DES1140,60% Review,,920,0,80,0,0,0,80,0,0,0,,,,2024-10-02 08:00,2024-10-15 16:00,,2024-04-24 08:00,2024-05-07 16:00,2024-04-24 08:00,2024-05-07 16:00,2024-04-24 08:00,2024-05-07 16:00,2024-10-02 08:00,2024-10-15 16:00,,PT_Normal,,,,,7W1SvvQ6fE2BkDXRd+7Lpg,3JC+RN9Dd0SOp86LXGBrug,,,N,0,0,,,2023-02-08 18:30,2023-02-08 18:31,NotPrmUser,NotPrmUser,
141258,27165,54817,178,0,N,1,N,N,CP_Drtn,TT_Task,DT_FixedDUR2,TK_NotStart,DES1150,90% Submittal,,1120,0,400,0,0,0,400,0,0,0,,,,2024-11-20 08:00,2025-01-28 16:00,,2024-05-08 08:00,2024-07-16 16:00,2024-05-08 08:00,2024-07-16 16:00,2024-05-08 08:00,2024-07-16 16:00,2024-11-20 08:00,2025-01-28 16:00,,PT_Normal,,,,,4CV4wK1nL0GQFp6s89OOig,/CcaKOeWskCxmOSbFEFXNg,,,N,0,0,,,2023-02-08 18:30,2023-02-08 18:31,NotPrmUser,NotPrmUser,
141259,27165,54817,178,0,N,1,N,N,CP_Drtn,TT_Task,DT_FixedDUR2,TK_NotStart,DES1160,90% Review,,1120,0,80,0,0,0,80,0,0,0,,,,2025-01-29 08:00,2025-02-11 16:00,,2024-07-17 08:00,2024-07-30 16:00,2024-07-17 08:00,2024-07-30 16:00,2024-07-17 08:00,2024-07-30 16:00,2025-01-29 08:00,2025-02-11 16:00,,PT_Normal,,,,,gEbgx3jbIU64+mZYrqc5Qw,Zy1vMy9pdE+UdLldMMzzcQ,,,N,0,0,,,2023-02-08 18:30,2023-02-08 18:31,NotPrmUser,NotPrmUser,
141260,27165,54817,178,0,N,1,N,N,CP_Drtn,TT_Task,DT_FixedDUR2,TK_NotStart,DES1170,100% Submittal,,1120,880,160,0,0,0,160,0,0,0,,,,2025-02-12 08:00,2025-03-11 16:00,,2024-07-31 08:00,2024-08-27 16:00,2024-07-31 08:00,2024-08-27 16:00,2024-07-31 08:00,2024-08-27 16:00,2025-02-12 08:00,2025-03-11 16:00,,PT_Normal,,,,,1bSPcv1/oEmdwJ1Q1oz6/g,vmwnpKBPyke8uiNWPgrF1g,,,N,0,0,,,2023-02-08 18:30,2023-02-08 18:31,NotPrmUser,NotPrmUser,
141261,27165,54817,178,0,N,1,N,N,CP_Drtn,TT_Task,DT_FixedDUR2,TK_NotStart,DES1180,Issue IFC Design Package,,240,0,80,0,0,0,80,0,0,0,,,,2025-03-12 08:00,2025-03-25 16:00,,2025-01-29 08:00,2025-02-11 16:00,2025-01-29 08:00,2025-02-11 16:00,2025-01-29 08:00,2025-02-11 16:00,2025-03-12 08:00,2025-03-25 16:00,,PT_Normal,,,,,FZ6Wt7py/kWiw931H8JFzw,SS0Vv6s47ESrXH1id5qPuw,,,N,0,0,,,2023-02-08 18:30,2023-02-08 18:31,NotPrmUser,NotPrmUser,
141262,27165,54818,178,0,N,1,N,N,CP_Drtn,TT_Task,DT_FixedDUR2,TK_NotStart,DES1190,Issue Services Worksheet to Design Firms,,760,0,160,0,0,0,160,0,0,0,,,,2024-04-17 08:00,2024-05-14 16:00,,2023-12-01 08:00,2024-01-02 16:00,2023-12-01 08:00,2024-01-02 16:00,2023-12-01 08:00,2024-01-02 16:00,2024-04-17 08:00,2024-05-14 16:00,,PT_Normal,,,,,b1p80lcOFkOOVGmkM0lZ2A,UZDWRGUPXUWTxEZIblNzLw,,,N,0,0,,,2023-02-08 18:30,2023-02-08 18:31,NotPrmUser,NotPrmUser,
141263,27165,54819,178,0,N,1,N,N,CP_Drtn,TT_Task,DT_FixedDUR2,TK_NotStart,DES1220,SED Design,,6376,0,240,0,0,0,240,0,0,0,,,,2026-11-20 08:00,2026-12-31 16:00,,2023-10-25 08:00,2023-12-07 16:00,2023-10-25 08:00,2023-12-07 16:00,2023-10-25 08:00,2023-12-07 16:00,2026-11-20 08:00,2026-12-31 16:00,,PT_Normal,,,,,DDi4KY7DQ0eLgWrdhOOSyA,rtgQMUVsVEKI/WSG9CS95g,,,N,0,0,,,2023-02-08 18:30,2023-02-08 18:31,NotPrmUser,NotPrmUser,
141264,27165,54819,178,0,N,1,N,N,CP_Drtn,TT_Task,DT_FixedDUR2,TK_NotStart,DES1230,Issue IFC Design Package,,6376,5320,160,0,0,0,160,0,0,0,,,,2027-01-01 08:00,2027-01-28 16:00,,2023-12-08 08:00,2024-01-09 16:00,2023-12-08 08:00,2024-01-09 16:00,2023-12-08 08:00,2024-01-09 16:00,2027-01-01 08:00,2027-01-28 16:00,,PT_Normal,,,,,SjHaMFdGVUe8GjnqUH51aw,oZTaRdRVjEScG0tDzSsHhQ,,,N,0,0,,,2023-02-08 18:30,2023-02-08 18:31,NotPrmUser,NotPrmUser,
141265,27165,54821,178,0,N,1,N,N,CP_Drtn,TT_Task,DT_FixedDUR2,TK_NotStart,PRO1000,Civil BOM - Long Lead @ 30%,,680,0,120,0,0,0,120,0,0,0,,,,2024-06-26 08:00,2024-07-16 16:00,,2024-02-28 08:00,2024-03-19 16:00,2024-02-28 08:00,2024-03-19 16:00,2024-02-28 08:00,2024-03-19 16:00,2024-06-26 08:00,2024-07-16 16:00,,PT_Normal,,,,,crlj2cC0RkOVM2xSERLACA,tXpt2Vij90SBF0DIlnhbvw,,,N,0,0,,,2023-02-08 18:30,2023-02-08 18:31,NotPrmUser,NotPrmUser,
141266,27165,54821,178,0,N,1,N,N,CP_Drtn,TT_Task,DT_FixedDUR2,TK_NotStart,PRO1020,Electrical BOM - Long Lead @ 60%,,920,0,120,0,0,0,120,0,0,0,,,,2024-10-16 08:00,2024-11-05 16:00,,2024-05-08 08:00,2024-05-28 16:00,2024-05-08 08:00,2024-05-28 16:00,2024-05-08 08:00,2024-05-28 16:00,2024-10-16 08:00,2024-11-05 16:00,,PT_Normal,,,,,pms1/kdFHkqK8ruakXlIIg,2JATKe6Xck2jFVnUh4Vi+w,,,N,0,0,,,2023-02-08 18:30,2023-02-08 18:31,NotPrmUser,NotPrmUser,
141267,27165,54821,178,0,N,1,N,N,CP_Drtn,TT_Task,DT_FixedDUR2,TK_NotStart,PRO1040,BOM - Short Lead @ 60%,,600,0,120,0,0,0,120,0,0,0,,,,2024-12-18 08:00,2025-01-07 16:00,,2024-09-04 08:00,2024-09-24 16:00,2024-09-04 08:00,2024-09-24 16:00,2024-09-04 08:00,2024-09-24 16:00,2024-12-18 08:00,2025-01-07 16:00,,PT_Normal,,,,,iZzU2SY3Kk+zA8DPAbve0g,1Mjf82QTgk6u6uomoUF3gw,,,N,0,0,,,2023-02-08 18:30,2023-02-08 18:31,NotPrmUser,NotPrmUser,
141268,27165,54822,178,0,N,1,N,N,CP_Drtn,TT_Task,DT_FixedDUR2,TK_NotStart,PER1000,CalTrans Permit,,0,0,2000,0,0,0,2000,0,0,0,,,,2024-02-28 08:00,2025-02-11 16:00,,2024-02-28 08:00,2025-02-11 16:00,2024-02-28 08:00,2025-02-11 16:00,2024-02-28 08:00,2025-02-11 16:00,2024-02-28 08:00,2025-02-11 16:00,,PT_Normal,,,,,LqISQz/jnUakLXiAXeVC5Q,ariT9ohpkkasMAymInVCLQ,,,Y,0,0,,,2023-02-08 18:30,2023-02-08 18:31,NotPrmUser,NotPrmUser,
141269,27165,54822,178,0,N,1,N,N,CP_Drtn,TT_Task,DT_FixedDUR2,TK_NotStart,PER1010,City & County Permits,,1200,1200,800,0,0,0,800,0,0,0,,,,2024-09-25 08:00,2025-02-11 16:00,,2024-02-28 08:00,2024-07-16 16:00,2024-02-28 08:00,2024-07-16 16:00,2024-02-28 08:00,2024-07-16 16:00,2024-09-25 08:00,2025-02-11 16:00,,PT_Normal,,,,,7oVXlScl50WZfVeyd4iHPw,1YzkNUyDuEKHeHYhCQ+ojQ,,,N,0,0,,,2023-02-08 18:30,2023-02-08 18:31,NotPrmUser,NotPrmUser,
141270,27165,54822,178,0,N,1,N,N,CP_Drtn,TT_Task,DT_FixedDUR2,TK_NotStart,PER1020,Other Permit (TBD),,1200,1200,800,0,0,0,800,0,0,0,,,,2024-09-25 08:00,2025-02-11 16:00,,2024-02-28 08:00,2024-07-16 16:00,2024-02-28 08:00,2024-07-16 16:00,2024-02-28 08:00,2024-07-16 16:00,2024-09-25 08:00,2025-02-11 16:00,,PT_Normal,,,,,9HxtQX3n4k6azoODe2qWhQ,yrW3Z2e/4Emq7R27uXRXsA,,,N,0,0,,,2023-02-08 18:30,2023-02-08 18:31,NotPrmUser,NotPrmUser,
141271,27165,54823,178,0,N,1,N,N,CP_Drtn,TT_Task,DT_FixedDUR2,TK_NotStart,PUB1000,Public Affairs / Community Outreach,,6216,6216,800,0,0,0,800,0,0,0,,,,2027-05-28 08:00,2027-10-14 16:00,,2024-06-05 08:00,2024-10-22 16:00,2024-06-05 08:00,2024-10-22 16:00,2024-06-05 08:00,2024-10-22 16:00,2027-05-28 08:00,2027-10-14 16:00,,PT_Normal,,,,,pKHb6sR05EyK/TwbKMYcsA,0SaChRI/L0+lVu9mURqvAQ,,,N,0,0,,,2023-02-08 18:30,2023-02-08 18:31,NotPrmUser,NotPrmUser,
141272,27165,54824,178,0,N,1,N,N,CP_Drtn,TT_Task,DT_FixedDUR2,TK_NotStart,LAN1000,Land Rights and Easement Acquisition,,880,880,1200,0,0,0,1200,0,0,0,,,,2024-07-17 08:00,2025-02-11 16:00,,2024-02-14 08:00,2024-09-10 16:00,2024-02-14 08:00,2024-09-10 16:00,2024-02-14 08:00,2024-09-10 16:00,2024-07-17 08:00,2025-02-11 16:00,,PT_Normal,,,,,LRNvGxo82k295FidaMLSZw,mvtv5o72oUq3oCUbvlLIXg,,,N,0,0,,,2023-02-08 18:30,2023-02-08 18:31,NotPrmUser,NotPrmUser,
141273,27165,54824,178,0,N,1,N,N,CP_Drtn,TT_Task,DT_FixedDUR2,TK_NotStart,LAN1010,Tribal Land Rights,,880,880,1200,0,0,0,1200,0,0,0,,,,2024-07-17 08:00,2025-02-11 16:00,,2024-02-14 08:00,2024-09-10 16:00,2024-02-14 08:00,2024-09-10 16:00,2024-02-14 08:00,2024-09-10 16:00,2024-07-17 08:00,2025-02-11 16:00,,PT_Normal,,,,,7LOBNjMzlEy6tk6cBgYwNw,hJHRPvjOdEGvG630CdAA6w,,,N,0,0,,,2023-02-08 18:30,2023-02-08 18:31,NotPrmUser,NotPrmUser,
141274,27165,54824,178,0,N,1,N,N,CP_Drtn,TT_Task,DT_FixedDUR2,TK_NotStart,LAN1020,Laydown Yards,,880,880,1200,0,0,0,1200,0,0,0,,,,2024-07-17 08:00,2025-02-11 16:00,,2024-02-14 08:00,2024-09-10 16:00,2024-02-14 08:00,2024-09-10 16:00,2024-02-14 08:00,2024-09-10 16:00,2024-07-17 08:00,2025-02-11 16:00,,PT_Normal,,,,,sl9jhDZnqU2mUbvs1HwfSw,zQArQ8Gcu0S/8MqfpOd4bw,,,N,0,0,,,2023-02-08 18:30,2023-02-08 18:31,NotPrmUser,NotPrmUser,
141275,27165,54825,178,0,N,1,N,N,CP_Drtn,TT_Task,DT_FixedDUR2,TK_NotStart,ENV1000,10% Environmental Submittal,,880,0,200,0,0,0,200,0,0,0,,,,2024-04-03 08:00,2024-05-07 16:00,,2023-10-25 08:00,2023-11-30 16:00,2023-10-25 08:00,2023-11-30 16:00,2023-10-25 08:00,2023-11-30 16:00,2024-04-03 08:00,2024-05-07 16:00,,PT_Normal,,,,,NZBkhHQXhEahxL/PTH5iYw,2osvXl0JoUK6XhmtJgOP8g,,,N,0,0,,,2023-02-08 18:30,2023-02-08 18:31,NotPrmUser,NotPrmUser,
141276,27165,54825,178,0,N,1,N,N,CP_Drtn,TT_Task,DT_FixedDUR2,TK_NotStart,ENV1010,10% Environmental Review,,880,0,120,0,0,0,120,0,0,0,,,,2024-05-08 08:00,2024-05-28 16:00,,2023-12-01 08:00,2023-12-21 16:00,2023-12-01 08:00,2023-12-21 16:00,2023-12-01 08:00,2023-12-21 16:00,2024-05-08 08:00,2024-05-28 16:00,,PT_Normal,,,,,O6GcQE+4dUKD6oSSvIGs7A,po/TSPh8x0iI6lWBHTekFg,,,N,0,0,,,2023-02-08 18:30,2023-02-08 18:31,NotPrmUser,NotPrmUser,
141277,27165,54825,178,0,N,1,N,N,CP_Drtn,TT_Task,DT_FixedDUR2,TK_NotStart,ENV1020,30% Environmental Submittal,,840,0,200,0,0,0,200,0,0,0,,,,2024-09-18 08:00,2024-10-22 16:00,,2024-04-24 08:00,2024-05-28 16:00,2024-04-24 08:00,2024-05-28 16:00,2024-04-24 08:00,2024-05-28 16:00,2024-09-18 08:00,2024-10-22 16:00,,PT_Normal,,,,,247kxwpAjE+Xt5ooPfBiog,jQHtrpktuUyfPYJSEchhUg,,,N,0,0,,,2023-02-08 18:30,2023-02-08 18:31,NotPrmUser,NotPrmUser,
141278,27165,54825,178,0,N,1,N,N,CP_Drtn,TT_Task,DT_FixedDUR2,TK_NotStart,ENV1030,30% Environmental Review,,840,0,120,0,0,0,120,0,0,0,,,,2024-10-23 08:00,2024-11-12 16:00,,2024-05-29 08:00,2024-06-18 16:00,2024-05-29 08:00,2024-06-18 16:00,2024-05-29 08:00,2024-06-18 16:00,2024-10-23 08:00,2024-11-12 16:00,,PT_Normal,,,,,QksvTYnIkEe5bGivC8aRGg,r2L+n6h9w02EU4atZHPqFQ,,,N,0,0,,,2023-02-08 18:30,2023-02-08 18:31,NotPrmUser,NotPrmUser,
141279,27165,54825,178,0,N,1,N,N,CP_Drtn,TT_Task,DT_FixedDUR2,TK_NotStart,ENV1040,60% Environmental Submittal,,840,0,280,0,0,0,280,0,0,0,,,,2024-11-13 08:00,2024-12-31 16:00,,2024-06-19 08:00,2024-08-06 16:00,2024-06-19 08:00,2024-08-06 16:00,2024-06-19 08:00,2024-08-06 16:00,2024-11-13 08:00,2024-12-31 16:00,,PT_Normal,,,,,AsioxjJUSUaHjKv898HDLA,LBUX2rLyjE2yuBDA6dpJiA,,,N,0,0,,,2023-02-08 18:30,2023-02-08 18:31,NotPrmUser,NotPrmUser,
141280,27165,54825,178,0,N,1,N,N,CP_Drtn,TT_Task,DT_FixedDUR2,TK_NotStart,ENV1050,60% Environmental Release,,960,960,120,0,0,0,120,0,0,0,,,,2025-01-22 08:00,2025-02-11 16:00,,2024-08-07 08:00,2024-08-27 16:00,2024-08-07 08:00,2024-08-27 16:00,2024-08-07 08:00,2024-08-27 16:00,2025-01-22 08:00,2025-02-11 16:00,,PT_Normal,,,,,6i8sDnwkHEeu2We3gJpS2A,hUsUnc7oWEe/oSzOnKOEdw,,,N,0,0,,,2023-02-08 18:30,2023-02-08 18:31,NotPrmUser,NotPrmUser,
141281,27165,54825,178,0,N,1,N,N,CP_Drtn,TT_Task,DT_FixedDUR2,TK_NotStart,ENV1060,BIA NEPA Submittal,,840,0,80,0,0,0,80,0,0,0,,,,2025-01-01 08:00,2025-01-14 16:00,,2024-08-07 08:00,2024-08-20 16:00,2024-08-07 08:00,2024-08-20 16:00,2024-08-07 08:00,2024-08-20 16:00,2025-01-01 08:00,2025-01-14 16:00,,PT_Normal,,,,,m7U7Xa03JU2H7zEe8Aa5lA,koWLggYKMEa+A2RlOo9cmQ,,,N,0,0,,,2023-02-08 18:30,2023-02-08 18:31,NotPrmUser,NotPrmUser,
141282,27165,54825,178,0,N,1,N,N,CP_Drtn,TT_Task,DT_FixedDUR2,TK_NotStart,ENV1070,"BIA Received (Add 250 days, if needed)",,840,840,160,0,0,0,160,0,0,0,,,,2025-01-15 08:00,2025-02-11 16:00,,2024-08-21 08:00,2024-09-17 16:00,2024-08-21 08:00,2024-09-17 16:00,2024-08-21 08:00,2024-09-17 16:00,2025-01-15 08:00,2025-02-11 16:00,,PT_Normal,,,,,7PLRiXzu20aZM8qrmFYo5A,jmRMowjQQUKW4zejGRy+bg,,,N,0,0,,,2023-02-08 18:30,2023-02-08 18:31,NotPrmUser,NotPrmUser,
141283,27165,54815,178,0,N,1,N,N,CP_Drtn,TT_Task,DT_FixedDUR2,TK_NotStart,DES1010,Seismic / Geotech Submittal,,880,0,200,0,0,0,200,0,0,0,,,,2024-05-29 08:00,2024-07-02 16:00,,2023-12-26 08:00,2024-01-30 16:00,2023-12-26 08:00,2024-01-30 16:00,2023-12-26 08:00,2024-01-30 16:00,2024-05-29 08:00,2024-07-02 16:00,,PT_Normal,,,,,yi87ZY624k2qkiPphqYAyA,pvZ8VL//aUKA6qGPnxCaeA,,,N,0,0,,,2023-02-08 18:30,2023-02-08 18:31,NotPrmUser,NotPrmUser,
141284,27165,54815,178,0,N,1,N,N,CP_Drtn,TT_Task,DT_FixedDUR2,TK_NotStart,DES1020,Potholing Submittal,,880,40,200,0,0,0,200,0,0,0,,,,2024-07-03 08:00,2024-08-06 16:00,,2024-01-31 08:00,2024-03-05 16:00,2024-01-31 08:00,2024-03-05 16:00,2024-01-31 08:00,2024-03-05 16:00,2024-07-03 08:00,2024-08-06 16:00,,PT_Normal,,,,,tPrNA5it/k6Lsi1alFadCg,JB1lknNRHkeX0/kmUf2bcg,,,N,0,0,,,2023-02-08 18:30,2023-02-08 18:31,NotPrmUser,NotPrmUser,
141285,27165,54815,178,0,N,1,N,N,CP_Drtn,TT_Task,DT_FixedDUR2,TK_NotStart,DES1030,Potholing Release /Perform Potholing,,840,0,240,0,0,0,240,0,0,0,,,,2024-08-07 08:00,2024-09-17 16:00,,2024-03-13 08:00,2024-04-23 16:00,2024-03-13 08:00,2024-04-23 16:00,2024-03-13 08:00,2024-04-23 16:00,2024-08-07 08:00,2024-09-17 16:00,,PT_Normal,,,,,YfN6ud189UWz4VEKyWRm6w,jC0KKLxIl0SuepwfQGD/gg,,,N,0,0,,,2023-02-08 18:30,2023-02-08 18:31,NotPrmUser,NotPrmUser,
141286,27165,54827,178,0,N,1,N,N,CP_Drtn,TT_Task,DT_FixedDUR2,TK_NotStart,PCON100,Initiate Performance Partnering Process @ 60%,,1000,0,40,0,0,0,40,0,0,0,,,,2024-12-11 08:00,2024-12-17 16:00,,2024-06-19 08:00,2024-06-25 16:00,2024-06-19 08:00,2024-06-25 16:00,2024-06-19 08:00,2024-06-25 16:00,2024-12-11 08:00,2024-12-17 16:00,,PT_Normal,,,,,pqwYqj8PRUCZl/cDewSolg,oGT34T5FpUWIsF4gv7I/nQ,,,N,0,0,,,2023-02-08 18:30,2023-02-08 18:31,NotPrmUser,NotPrmUser,
141287,27165,54827,178,0,N,1,N,N,CP_Drtn,TT_Task,DT_FixedDUR2,TK_NotStart,PCON110,Receive Estimate from Contractor,,1000,0,120,0,0,0,120,0,0,0,,,,2024-12-18 08:00,2025-01-07 16:00,,2024-06-26 08:00,2024-07-16 16:00,2024-06-26 08:00,2024-07-16 16:00,2024-06-26 08:00,2024-07-16 16:00,2024-12-18 08:00,2025-01-07 16:00,,PT_Normal,,,,,2vbcxTdUskCh7NDKy7yHlA,FgGXstq9Bk+05ak1QrLaZQ,,,N,0,0,,,2023-02-08 18:30,2023-02-08 18:31,NotPrmUser,NotPrmUser,
141288,27165,54827,178,0,N,1,N,N,CP_Drtn,TT_Task,DT_FixedDUR2,TK_NotStart,PCON120,Bid Estimate Negotiations,,1000,0,80,0,0,0,80,0,0,0,,,,2025-01-08 08:00,2025-01-21 16:00,,2024-07-17 08:00,2024-07-30 16:00,2024-07-17 08:00,2024-07-30 16:00,2024-07-17 08:00,2024-07-30 16:00,2025-01-08 08:00,2025-01-21 16:00,,PT_Normal,,,,,wHIY2Hffr0OLkFJPXZk6WA,dRAJsoQC0kSlEzZlgmi/hA,,,N,0,0,,,2023-02-08 18:30,2023-02-08 18:31,NotPrmUser,NotPrmUser,
141289,27165,54827,178,0,N,1,N,N,CP_Drtn,TT_Task,DT_FixedDUR2,TK_NotStart,PCON130,Revise Estimate based on IFC,,1000,0,40,0,0,0,40,0,0,0,,,,2025-01-22 08:00,2025-01-28 16:00,,2024-07-31 08:00,2024-08-06 16:00,2024-07-31 08:00,2024-08-06 16:00,2024-07-31 08:00,2024-08-06 16:00,2025-01-22 08:00,2025-01-28 16:00,,PT_Normal,,,,,PvNc1aQRQk6B2Ls2iUdB8Q,bFdokqt86UeH8GCPDC3K3g,,,N,0,0,,,2023-02-08 18:30,2023-02-08 18:31,NotPrmUser,NotPrmUser,
141290,27165,54827,178,0,N,1,N,N,CP_Drtn,TT_Task,DT_FixedDUR2,TK_NotStart,PCON140,Issue Release,,1000,1000,80,0,0,0,80,0,0,0,,,,2025-01-29 08:00,2025-02-11 16:00,,2024-08-07 08:00,2024-08-20 16:00,2024-08-07 08:00,2024-08-20 16:00,2024-08-07 08:00,2024-08-20 16:00,2025-01-29 08:00,2025-02-11 16:00,,PT_Normal,,,,,T4fStNY0x0eqm7k9QSoL7A,F/jQrRDqrUaN4zJ0eNMF7g,,,N,0,0,,,2023-02-08 18:30,2023-02-08 18:31,NotPrmUser,NotPrmUser,
141291,27165,54829,178,0,N,1,N,N,CP_Drtn,TT_Task,DT_FixedDUR2,TK_NotStart,PCON200,Civil Pre-Construction Meeting (Civil Construction Ready),,0,0,40,0,0,0,40,0,0,0,,,,2025-02-12 08:00,2025-02-18 16:00,,2025-02-12 08:00,2025-02-18 16:00,2025-02-12 08:00,2025-02-18 16:00,2025-02-12 08:00,2025-02-18 16:00,2025-02-12 08:00,2025-02-18 16:00,,PT_Normal,,,,,7UirdxxlQ0GN1JT0FAzvfg,juMbLly8ok6NgFcrjFkK9Q,,,Y,0,0,,,2023-02-08 18:30,2023-02-08 18:31,NotPrmUser,NotPrmUser,
141292,27165,54829,178,0,N,1,N,N,CP_Drtn,TT_Task,DT_FixedDUR2,TK_NotStart,PCON210,Electrical - Pre-Construction Meeting (Electical Construction Ready),,240,0,40,0,0,0,40,0,0,0,,,,2025-03-26 08:00,2025-04-01 16:00,,2025-02-12 08:00,2025-02-18 16:00,2025-02-12 08:00,2025-02-18 16:00,2025-02-12 08:00,2025-02-18 16:00,2025-03-26 08:00,2025-04-01 16:00,,PT_Normal,,,,,s+hActd6yEicrU5HPOS2vg,dtlRB/etBUWyPtRrqmcy7g,,,N,0,0,,,2023-02-08 18:30,2023-02-08 18:31,NotPrmUser,NotPrmUser,
141293,27165,54828,178,0,N,1,N,N,CP_Drtn,TT_Task,DT_FixedDUR2,TK_NotStart,PCON150,Initiate Performance Partnering Process @ 60%,,1480,0,40,0,0,0,40,0,0,0,,,,2025-01-22 08:00,2025-01-28 16:00,,2024-05-08 08:00,2024-05-14 16:00,2024-05-08 08:00,2024-05-14 16:00,2024-05-08 08:00,2024-05-14 16:00,2025-01-22 08:00,2025-01-28 16:00,,PT_Normal,,,,,FgDWNHPKL0KGxaNbIlQRKA,s/8BCdvU+UiQgxMmy2r1ng,,,N,0,0,,,2023-02-08 18:30,2023-02-08 18:31,NotPrmUser,NotPrmUser,
141294,27165,54828,178,0,N,1,N,N,CP_Drtn,TT_Task,DT_FixedDUR2,TK_NotStart,PCON160,Receive Estimate from Contractor,,1480,0,120,0,0,0,120,0,0,0,,,,2025-01-29 08:00,2025-02-18 16:00,,2024-05-15 08:00,2024-06-04 16:00,2024-05-15 08:00,2024-06-04 16:00,2024-05-15 08:00,2024-06-04 16:00,2025-01-29 08:00,2025-02-18 16:00,,PT_Normal,,,,,BI8I/PKuXUqO98etaKcvLw,chj/h1Sj+Ui7u1xpxRPGMA,,,N,0,0,,,2023-02-08 18:30,2023-02-08 18:31,NotPrmUser,NotPrmUser,
141295,27165,54828,178,0,N,1,N,N,CP_Drtn,TT_Task,DT_FixedDUR2,TK_NotStart,PCON170,Bid Estimate Negotiations,,1480,0,80,0,0,0,80,0,0,0,,,,2025-02-19 08:00,2025-03-04 16:00,,2024-06-05 08:00,2024-06-18 16:00,2024-06-05 08:00,2024-06-18 16:00,2024-06-05 08:00,2024-06-18 16:00,2025-02-19 08:00,2025-03-04 16:00,,PT_Normal,,,,,c0knXM69l0i1jeTwD+yb8A,G55OZmof3U2UP4y+sJLb/A,,,N,0,0,,,2023-02-08 18:30,2023-02-08 18:31,NotPrmUser,NotPrmUser,
141296,27165,54828,178,0,N,1,N,N,CP_Drtn,TT_Task,DT_FixedDUR2,TK_NotStart,PCON180,Revise Estimate based on IFC,,1480,0,40,0,0,0,40,0,0,0,,,,2025-03-05 08:00,2025-03-11 16:00,,2024-06-19 08:00,2024-06-25 16:00,2024-06-19 08:00,2024-06-25 16:00,2024-06-19 08:00,2024-06-25 16:00,2025-03-05 08:00,2025-03-11 16:00,,PT_Normal,,,,,oL3bIESt20eSL9PkbYiuDw,yo5rPGLC6E+BHys7PO4rfg,,,N,0,0,,,2023-02-08 18:30,2023-02-08 18:31,NotPrmUser,NotPrmUser,
141297,27165,54828,178,0,N,1,N,N,CP_Drtn,TT_Task,DT_FixedDUR2,TK_NotStart,PCON190,Issue Release,,1480,1240,80,0,0,0,80,0,0,0,,,,2025-03-12 08:00,2025-03-25 16:00,,2024-06-26 08:00,2024-07-09 16:00,2024-06-26 08:00,2024-07-09 16:00,2024-06-26 08:00,2024-07-09 16:00,2025-03-12 08:00,2025-03-25 16:00,,PT_Normal,,,,,Snhv06HZ9ESJnVGsXiJIrA,S6NgR83aiU2ojl+dckob+w,,,N,0,0,,,2023-02-08 18:30,2023-02-08 18:31,NotPrmUser,NotPrmUser,
141298,27165,54821,178,0,N,1,N,N,CP_Drtn,TT_Task,DT_FixedDUR2,TK_NotStart,PRO1010,Order Long Lead Civil Material,,680,680,1200,0,0,0,1200,0,0,0,,,,2024-07-17 08:00,2025-02-11 16:00,,2024-03-20 08:00,2024-10-15 16:00,2024-03-20 08:00,2024-10-15 16:00,2024-03-20 08:00,2024-10-15 16:00,2024-07-17 08:00,2025-02-11 16:00,,PT_Normal,,,,,kGkBWcW2gkOUT1lYEjynyA,jwoW+p1CEUWpQuYKjGY/Qg,,,N,0,0,,,2023-02-08 18:30,2023-02-08 18:31,NotPrmUser,NotPrmUser,
141299,27165,54821,178,0,N,1,N,N,CP_Drtn,TT_Task,DT_FixedDUR2,TK_NotStart,PRO1050,Order Short Lead Materials,,600,600,200,0,0,0,200,0,0,0,,,,2025-01-08 08:00,2025-02-11 16:00,,2024-09-25 08:00,2024-10-29 16:00,2024-09-25 08:00,2024-10-29 16:00,2024-09-25 08:00,2024-10-29 16:00,2025-01-08 08:00,2025-02-11 16:00,,PT_Normal,,,,,8ekdHnEl5kCtWlGTt3d0Tw,uF7S6Tq0dkm2nRYewbgYBw,,,N,0,0,,,2023-02-08 18:30,2023-02-08 18:31,NotPrmUser,NotPrmUser,
141300,27165,54821,178,0,N,1,N,N,CP_Drtn,TT_Task,DT_FixedDUR2,TK_NotStart,PRO1030,Order Long Lead Electrical Materials,,920,680,800,0,0,0,800,0,0,0,,,,2024-11-06 08:00,2025-03-25 16:00,,2024-05-29 08:00,2024-10-15 16:00,2024-05-29 08:00,2024-10-15 16:00,2024-05-29 08:00,2024-10-15 16:00,2024-11-06 08:00,2025-03-25 16:00,,PT_Normal,,,,,ms81pf52k0Gir9xXTy0ogA,miuoHwVtdUGi9t8t1Zjoxg,,,N,0,0,,,2023-02-08 18:30,2023-02-08 18:31,NotPrmUser,NotPrmUser,
141301,27165,54831,178,0,N,1,N,N,CP_Drtn,TT_Task,DT_FixedDUR2,TK_NotStart,CON2000,Civil Construction (Trenching 300 feet/day),7730,0,0,3520,0,7208,7208,3520,0,0,0,,,,2025-02-19 08:00,2026-10-27 16:00,,2025-02-19 08:00,2026-10-27 16:00,2025-02-19 08:00,2026-10-27 16:00,2025-02-19 08:00,2026-10-27 16:00,2025-02-19 08:00,2026-10-27 16:00,,PT_Normal,,,,,nFaeMRFEk02sL1f2ydh8kQ,izRPxXObLEaj+P9C1Z8iDw,,,Y,0,0,,,2023-02-08 18:30,2023-02-08 19:11,NotPrmUser,NotPrmUser,
141302,27165,54832,178,0,N,1,N,N,CP_Drtn,TT_Task,DT_FixedDUR2,TK_NotStart,CON3000,Electrical Construction,7786,0,0,3280,0,1640,1640,3280,0,0,0,,,,2025-04-02 08:00,2026-10-27 16:00,,2025-04-02 08:00,2026-10-27 16:00,2025-04-02 08:00,2026-10-27 16:00,2025-04-02 08:00,2026-10-27 16:00,2025-04-02 08:00,2026-10-27 16:00,,PT_Normal,,,,,2/lCslpPl0aRjVh6qCOEzQ,y9Iwhx/tc0ucQiB1lXFE0w,,,Y,0,0,,,2023-02-08 18:30,2023-02-08 19:35,NotPrmUser,NotPrmUser,
141303,27165,54833,178,0,N,1,N,N,CP_Drtn,TT_Task,DT_FixedDUR2,TK_NotStart,CON4000,Service Cutover,,1056,0,2920,0,0,0,2920,0,0,0,,,,2025-12-05 08:00,2027-04-29 16:00,,2025-06-04 08:00,2026-10-27 16:00,2025-06-04 08:00,2026-10-27 16:00,2025-06-04 08:00,2026-10-27 16:00,2025-12-05 08:00,2027-04-29 16:00,,PT_Normal,,,,,hLwK+/TDkUqtmNIP4uaQ0A,KIKOcr8aTEaIHnCGP87TMA,,,N,0,0,,,2023-02-08 18:30,2023-02-08 18:31,NotPrmUser,NotPrmUser,
141304,27165,54834,178,0,N,1,N,N,CP_Drtn,TT_Task,DT_FixedDUR2,TK_NotStart,CON5000,Scada Construction,,1056,0,520,0,0,0,520,0,0,0,,,,2027-01-29 08:00,2027-04-29 16:00,,2026-07-29 08:00,2026-10-27 16:00,2026-07-29 08:00,2026-10-27 16:00,2026-07-29 08:00,2026-10-27 16:00,2027-01-29 08:00,2027-04-29 16:00,,PT_Normal,,,,,7DNO6t2Pk0+6DFMPIkq6+g,1RCvoO47TUKEMEDWkIsfuw,,,N,0,0,,,2023-02-08 18:30,2023-02-08 18:31,NotPrmUser,NotPrmUser,
141305,27165,54835,178,0,N,1,N,N,CP_Drtn,TT_Task,DT_FixedDUR2,TK_NotStart,CON6000,Substation Construction,,1056,0,520,0,0,0,520,0,0,0,,,,2027-01-29 08:00,2027-04-29 16:00,,2026-07-29 08:00,2026-10-27 16:00,2026-07-29 08:00,2026-10-27 16:00,2026-07-29 08:00,2026-10-27 16:00,2027-01-29 08:00,2027-04-29 16:00,,PT_Normal,,,,,HLL/ItBjV0CifhfxLQLROg,tKndsYJcxEi9QmdMWnRCgA,,,N,0,0,,,2023-02-08 18:30,2023-02-08 18:31,NotPrmUser,NotPrmUser,
141306,27165,54836,178,0,N,1,N,N,CP_Drtn,TT_Task,DT_FixedDrtn,TK_NotStart,CON7000,Overhead RFS (1000 feet per day),7785,0,0,1056,0,1056,1056,1056,0,0,0,,,,2026-10-28 08:00,2027-04-29 16:00,,2026-10-28 08:00,2027-04-29 16:00,2026-10-28 08:00,2027-04-29 16:00,2026-10-28 08:00,2027-04-29 16:00,2026-10-28 08:00,2027-04-29 16:00,,PT_Normal,,,,,/lzIBrIXhkSdBqSZOZ2JFA,r0En7xRxHU+HobocNNcMLw,,,Y,0,0,,,2023-02-08 18:30,2023-02-08 18:31,NotPrmUser,NotPrmUser,
141307,27165,54830,178,0,N,1,N,N,CP_Drtn,TT_Task,DT_FixedDUR2,TK_NotStart,ISD1000,ISD - Energize - Put in service,,2008,2008,8,0,0,0,8,25,0,25,,,,2027-10-14 08:00,2027-10-14 16:00,,2026-10-28 08:00,2026-10-28 16:00,2026-10-28 08:00,2026-10-28 16:00,2026-10-28 08:00,2026-10-28 16:00,2027-10-14 08:00,2027-10-14 16:00,,PT_Normal,,,,,UCRlgXMgREeoP+G/fyghUg,nsvPWRLK502vlLRGcpvTrg,,,N,0,0,,,2023-02-08 18:30,2023-02-08 18:31,NotPrmUser,NotPrmUser,
141308,27165,54813,178,0,N,1,N,N,CP_Drtn,TT_Task,DT_FixedDUR2,TK_NotStart,SUR1000,Survey and LiDAR,7385,0,0,400,0,9182,9182,400,0,0,0,,,,2023-08-16 08:00,2023-10-24 16:00,,2023-08-16 08:00,2023-10-24 16:00,2023-08-16 08:00,2023-10-24 16:00,2023-08-16 08:00,2023-10-24 16:00,2023-08-16 08:00,2023-10-24 16:00,,PT_Normal,,,,,bc6968ZB60WGNqBPXZKCjg,nUKOJXdkiE26W4C1Qt6izQ,,,Y,0,0,,,2023-02-08 18:30,2023-02-08 18:31,NotPrmUser,NotPrmUser,
141309,27165,54818,178,0,N,1,N,N,CP_Drtn,TT_Task,DT_FixedDUR2,TK_NotStart,DES1200,Receive Services Worksheet and Cable Info from Design Firms,,760,0,160,0,0,0,160,0,0,0,,,,2024-05-15 08:00,2024-06-11 16:00,,2024-01-03 08:00,2024-01-30 16:00,2024-01-03 08:00,2024-01-30 16:00,2024-01-03 08:00,2024-01-30 16:00,2024-05-15 08:00,2024-06-11 16:00,,PT_Normal,,,,,0IJxKArKNkmlm8CUXjJZOw,xIsoQ7psCUeU4qc28r3CIA,,,N,0,0,,,2023-02-08 18:30,2023-02-08 18:31,NotPrmUser,NotPrmUser,
141310,27165,54818,178,0,N,1,N,N,CP_Drtn,TT_Task,DT_FixedDUR2,TK_NotStart,DES1210,Issue to Trench Inspectors,,2376,1320,80,0,0,0,80,0,0,0,,,,2025-11-21 08:00,2025-12-04 16:00,,2024-10-02 08:00,2024-10-15 16:00,2024-10-02 08:00,2024-10-15 16:00,2024-10-02 08:00,2024-10-15 16:00,2025-11-21 08:00,2025-12-04 16:00,,PT_Normal,,,,,Fy00GcL4cE2iTINyUeIMoA,+MBcsClLl0OidSYSBENRLw,,,N,0,0,,,2023-02-08 18:30,2023-02-08 18:31,NotPrmUser,NotPrmUser,
141311,27165,54830,178,0,N,1,N,N,CP_Drtn,TT_FinMile,DT_FixedDrtn,TK_NotStart,CON1020,Construction Complete,,0,0,0,0,0,0,0,0,0,0,,,,2027-04-29 16:00,2027-04-29 16:00,,2027-04-29 16:00,2027-04-29 16:00,2027-04-29 16:00,2027-04-29 16:00,2027-04-29 16:00,2027-04-29 16:00,2027-04-29 16:00,2027-04-29 16:00,,PT_Normal,,,,,vzXDD/biukefieTxvems3w,IuS1iappUkGu+QS1Z4UaiA,,,Y,0,0,,,2023-02-08 18:30,2023-02-08 18:31,NotPrmUser,NotPrmUser,
141312,27165,54830,178,0,N,1,N,N,CP_Drtn,TT_Mile,DT_FixedDrtn,TK_NotStart,CON1010,Construction Start,,5536,5536,0,0,0,0,0,0,0,0,,,,2027-10-14 16:00,2027-10-14 16:00,,2025-02-19 08:00,2025-02-19 08:00,2025-02-19 08:00,2025-02-19 08:00,2025-02-19 08:00,2025-02-19 08:00,2027-10-14 16:00,2027-10-14 16:00,,PT_Normal,,,,,Ynzvza9T4ESLDvGYBoLLSQ,ercxJNhpHkKvoybTx2IvoQ,,,N,0,0,,,2023-02-08 18:30,2023-02-08 18:31,NotPrmUser,NotPrmUser,
141313,27165,54839,178,0,N,1,N,N,CP_Drtn,TT_Task,DT_FixedDUR2,TK_NotStart,CLO1020,GIS/As-Built and Records Complete,,480,480,480,0,0,0,480,0,0,0,,,,2027-07-23 08:00,2027-10-14 16:00,,2027-04-30 08:00,2027-07-22 16:00,2027-04-30 08:00,2027-07-22 16:00,2027-04-30 08:00,2027-07-22 16:00,2027-07-23 08:00,2027-10-14 16:00,,PT_Normal,,,,,S/+1tGM290mU7nO+inR7FA,2f5+eOwByUmxOS7D6TqoOw,,,N,0,0,,,2023-02-08 18:30,2023-02-08 18:31,NotPrmUser,NotPrmUser,
141314,27165,54840,178,0,N,1,N,N,CP_Drtn,TT_Task,DT_FixedDUR2,TK_NotStart,CLO1030,"PO's complete, Work Order Reconcilled and Closed",,0,0,960,0,0,0,960,0,0,0,,,,2027-04-30 08:00,2027-10-14 16:00,,2027-04-30 08:00,2027-10-14 16:00,2027-04-30 08:00,2027-10-14 16:00,2027-04-30 08:00,2027-10-14 16:00,2027-04-30 08:00,2027-10-14 16:00,,PT_Normal,,,,,xA3bW8Lph0uBCb8Iq8j4sQ,FVmahLBF40+HbveTX+cSPw,,,Y,0,0,,,2023-02-08 18:30,2023-02-08 18:31,NotPrmUser,NotPrmUser,
141315,27165,54838,178,0,N,1,N,N,CP_Drtn,TT_FinMile,DT_FixedDrtn,TK_NotStart,CLO1010,Project Complete,,0,0,0,0,0,0,0,0,0,0,,,,2027-10-14 16:00,2027-10-14 16:00,,2027-10-14 16:00,2027-10-14 16:00,2027-10-14 16:00,2027-10-14 16:00,2027-10-14 16:00,2027-10-14 16:00,2027-10-14 16:00,2027-10-14 16:00,,PT_Normal,,,,,qVBLganMZkqfIk3Nx6Ugpw,mKxWG2H6hk+8/FgQ4rD8Tg,,,Y,0,0,,,2023-02-08 18:30,2023-02-08 18:31,NotPrmUser,NotPrmUser,
141316,27165,54814,178,0,N,1,N,N,CP_Drtn,TT_LOE,DT_FixedDUR2,TK_NotStart,DES1000,Design Summary,7257,4096,0,2680,0,16233,16233,2680,0,0,0,,,,2023-10-25 08:00,2027-01-28 16:00,,2023-10-25 08:00,2025-02-11 16:00,2023-10-25 08:00,2025-02-11 16:00,2023-10-25 08:00,2025-02-11 16:00,2023-10-25 08:00,2027-01-28 16:00,,PT_Normal,,,,,qOVqLkMqJUWS30l1TsNYzw,ftpFlIcob0mj4p7xjFO9kg,,,N,0,0,,,2023-02-08 18:30,2023-02-08 18:31,NotPrmUser,NotPrmUser,
141317,27165,54830,178,0,N,1,N,N,CP_Drtn,TT_LOE,DT_FixedDUR2,TK_NotStart,CON1000,Construction Summary,7385,0,0,4576,0,9972,9972,4576,25,0,25,,,,2027-04-29 16:00,2027-04-29 16:00,,2025-02-19 08:00,2027-04-29 16:00,2025-02-19 08:00,2027-04-29 16:00,2025-02-19 08:00,2027-04-29 16:00,2027-04-29 16:00,2027-04-29 16:00,,PT_Normal,,,,,2FrfNiRMr0yJPCKacsr6Vw,DM0XQa435U6rlecqTcwSbw,,,N,0,0,,,2023-02-08 18:30,2023-02-08 18:31,NotPrmUser,NotPrmUser,
141318,27165,54838,178,0,N,1,N,N,CP_Drtn,TT_LOE,DT_FixedDUR2,TK_NotStart,CLO1000,Close Out Summary,7385,0,0,960,0,4482,4482,960,0,0,0,,,,2027-04-30 08:00,2027-10-14 16:00,,2027-04-30 08:00,2027-10-14 16:00,2027-04-30 08:00,2027-10-14 16:00,2027-04-30 08:00,2027-10-14 16:00,2027-04-30 08:00,2027-10-14 16:00,,PT_Normal,,,,,OtnwneYwq0+WtsXY7/s1wg,Y2YkEPgoekS5s7QEF4dHzw,,,Y,0,0,,,2023-02-08 18:30,2023-02-08 18:31,NotPrmUser,NotPrmUser,
141319,27165,54811,178,0,N,1,N,N,CP_Drtn,TT_LOE,DT_FixedDUR2,TK_NotStart,PCON1000,Pre-Construction Summary,,0,0,3296,0,0,0,3296,0,0,0,,,,2023-07-17 08:00,2025-02-18 16:00,,2023-07-17 08:00,2025-02-18 16:00,2023-07-17 08:00,2025-02-18 16:00,2023-07-17 08:00,2025-02-18 16:00,2023-07-17 08:00,2025-02-18 16:00,,PT_Normal,,,,,aTFI/XYRykyM7YZEEIMuXw,GL54AdoME0+kFu+Ctp2HtA,,,Y,0,0,,,2023-02-08 18:30,2023-02-08 18:31,NotPrmUser,NotPrmUser,
141320,27166,54842,178,0,N,1,N,N,CP_Drtn,TT_Task,DT_FixedDUR2,TK_NotStart,SCO1000,Bundling / Phasing of circuits for project sequencing,,0,0,80,0,0,0,80,0,0,0,2023-07-31 00:00,,,2023-07-31 08:00,2023-08-11 16:00,,2023-07-31 08:00,2023-08-11 16:00,2023-07-31 08:00,2023-08-11 16:00,2023-07-31 08:00,2023-08-11 16:00,2023-07-31 08:00,2023-08-11 16:00,CS_MSOA,PT_Normal,,,,,0AGaDP5NMUCCv0rUQzduLg,dSUfImZZdU6DIdcyIrVTAQ,,,Y,0,0,,,2023-02-08 18:30,2023-02-08 18:31,NotPrmUser,NotPrmUser,
141321,27166,54842,178,0,N,1,N,N,CP_Drtn,TT_Task,DT_FixedDUR2,TK_NotStart,SCO1010,Constructability Review,,0,0,40,0,0,0,40,0,0,0,,,,2023-08-14 08:00,2023-08-18 16:00,,2023-08-14 08:00,2023-08-18 16:00,2023-08-14 08:00,2023-08-18 16:00,2023-08-14 08:00,2023-08-18 16:00,2023-08-14 08:00,2023-08-18 16:00,,PT_Normal,,,,,RZRKkR01RUOWgXleZ52+iA,iI9H53rYlUydzSkwy5guIw,,,Y,0,0,,,2023-02-08 18:30,2023-02-08 18:31,NotPrmUser,NotPrmUser,
141322,27166,54842,178,0,N,1,N,N,CP_Drtn,TT_Task,DT_FixedDUR2,TK_NotStart,SCO1020,SDG&E Review,,0,0,16,0,0,0,16,0,0,0,,,,2023-08-21 08:00,2023-08-22 16:00,,2023-08-21 08:00,2023-08-22 16:00,2023-08-21 08:00,2023-08-22 16:00,2023-08-21 08:00,2023-08-22 16:00,2023-08-21 08:00,2023-08-22 16:00,,PT_Normal,,,,,gVjK0yZSmEKHkNm+2YKABg,af8yQu2U9Umn80kaBDbwuQ,,,Y,0,0,,,2023-02-08 18:30,2023-02-08 18:31,NotPrmUser,NotPrmUser,
141323,27166,54843,178,0,N,1,N,N,CP_Drtn,TT_Task,DT_FixedDUR2,TK_NotStart,PLA1000,Workorder Setup,,0,0,40,0,0,0,40,0,0,0,,,,2023-08-23 08:00,2023-08-29 16:00,,2023-08-23 08:00,2023-08-29 16:00,2023-08-23 08:00,2023-08-29 16:00,2023-08-23 08:00,2023-08-29 16:00,2023-08-23 08:00,2023-08-29 16:00,,PT_Normal,,,,,XVpp6HVJkEOi7P65llZBHw,eQePiRJekU+PbxmK2a21BQ,,,Y,0,0,,,2023-02-08 18:30,2023-02-08 18:31,NotPrmUser,NotPrmUser,
141324,27166,54846,178,0,N,1,N,N,CP_Drtn,TT_Task,DT_FixedDUR2,TK_NotStart,DES1040,10% Submittal,,0,0,200,0,0,0,200,0,0,0,,,,2023-11-08 08:00,2023-12-14 16:00,,2023-11-08 08:00,2023-12-14 16:00,2023-11-08 08:00,2023-12-14 16:00,2023-11-08 08:00,2023-12-14 16:00,2023-11-08 08:00,2023-12-14 16:00,,PT_Normal,,,,,c0TWwKIy60a08q3IUdzMWA,XuCu17StC0a0QL5e4sWIPA,,,Y,0,0,,,2023-02-08 18:30,2023-02-08 18:31,NotPrmUser,NotPrmUser,
141325,27166,54846,178,0,N,1,N,N,CP_Drtn,TT_Task,DT_FixedDUR2,TK_NotStart,DES1050,30% Submittal,,0,0,400,0,0,0,400,0,0,0,,,,2023-12-15 08:00,2024-02-27 16:00,,2023-12-15 08:00,2024-02-27 16:00,2023-12-15 08:00,2024-02-27 16:00,2023-12-15 08:00,2024-02-27 16:00,2023-12-15 08:00,2024-02-27 16:00,,PT_Normal,,,,,cNE/9yUwIky7wEXTTiOmXA,gVghrf2ZVUeVYxGm0vj35w,,,Y,0,0,,,2023-02-08 18:30,2023-02-08 18:31,NotPrmUser,NotPrmUser,
141326,27166,54846,178,0,N,1,N,N,CP_Drtn,TT_Task,DT_FixedDUR2,TK_NotStart,DES1060,30% Review,,0,0,80,0,0,0,80,0,0,0,,,,2024-02-28 08:00,2024-03-12 16:00,,2024-02-28 08:00,2024-03-12 16:00,2024-02-28 08:00,2024-03-12 16:00,2024-02-28 08:00,2024-03-12 16:00,2024-02-28 08:00,2024-03-12 16:00,,PT_Normal,,,,,CCISpMhx8E2wdWgCoFz9Cg,t+sP+Y5K+km/purisizBpQ,,,Y,0,0,,,2023-02-08 18:30,2023-02-08 18:31,NotPrmUser,NotPrmUser,
141327,27166,54846,178,0,N,1,N,N,CP_Drtn,TT_Task,DT_FixedDUR2,TK_NotStart,DES1070,60% Submittal,,600,0,560,0,0,0,560,0,0,0,,,,2024-06-26 08:00,2024-10-01 16:00,,2024-03-13 08:00,2024-06-18 16:00,2024-03-13 08:00,2024-06-18 16:00,2024-03-13 08:00,2024-06-18 16:00,2024-06-26 08:00,2024-10-01 16:00,,PT_Normal,,,,,LC1FAUPZGk22ilfc0JX5Iw,zKEnzRXamESFJ97qtDkoNg,,,N,0,0,,,2023-02-08 18:30,2023-02-08 18:31,NotPrmUser,NotPrmUser,
141328,27166,54846,178,0,N,1,N,N,CP_Drtn,TT_Task,DT_FixedDUR2,TK_NotStart,DES1080,60% Review,,600,0,80,0,0,0,80,0,0,0,,,,2024-10-02 08:00,2024-10-15 16:00,,2024-06-19 08:00,2024-07-02 16:00,2024-06-19 08:00,2024-07-02 16:00,2024-06-19 08:00,2024-07-02 16:00,2024-10-02 08:00,2024-10-15 16:00,,PT_Normal,,,,,PvINtbBR0UykiEJV8pYVRw,7e9ptkcAH02QeUEiEvUmsQ,,,N,0,0,,,2023-02-08 18:30,2023-02-08 18:31,NotPrmUser,NotPrmUser,
141329,27166,54846,178,0,N,1,N,N,CP_Drtn,TT_Task,DT_FixedDUR2,TK_NotStart,DES1090,90% Submittal,,600,0,360,0,0,0,360,0,0,0,,,,2024-10-16 08:00,2024-12-17 16:00,,2024-07-03 08:00,2024-09-03 16:00,2024-07-03 08:00,2024-09-03 16:00,2024-07-03 08:00,2024-09-03 16:00,2024-10-16 08:00,2024-12-17 16:00,,PT_Normal,,,,,bOs3dtxOt0yhCNDQvnVSSw,5tUK4C37JkuN0L+nVyxOwg,,,N,0,0,,,2023-02-08 18:30,2023-02-08 18:31,NotPrmUser,NotPrmUser,
141330,27166,54846,178,0,N,1,N,N,CP_Drtn,TT_Task,DT_FixedDUR2,TK_NotStart,DES1100,90% Review,,600,0,80,0,0,0,80,0,0,0,,,,2024-12-18 08:00,2024-12-31 16:00,,2024-09-04 08:00,2024-09-17 16:00,2024-09-04 08:00,2024-09-17 16:00,2024-09-04 08:00,2024-09-17 16:00,2024-12-18 08:00,2024-12-31 16:00,,PT_Normal,,,,,2Gpg8MhlXEGDd0OymT0+TQ,EM0J/NHTPkmQZY4ZkEjxFA,,,N,0,0,,,2023-02-08 18:30,2023-02-08 18:31,NotPrmUser,NotPrmUser,
141331,27166,54846,178,0,N,1,N,N,CP_Drtn,TT_Task,DT_FixedDUR2,TK_NotStart,DES1110,100% Submittal,,680,0,160,0,0,0,160,0,0,0,,,,2025-01-15 08:00,2025-02-11 16:00,,2024-09-18 08:00,2024-10-15 16:00,2024-09-18 08:00,2024-10-15 16:00,2024-09-18 08:00,2024-10-15 16:00,2025-01-15 08:00,2025-02-11 16:00,,PT_Normal,,,,,uOuHsDNxvEK0/yg6xChpUg,ScnvF2pJNUK/1L4dNfGUDA,,,N,0,0,,,2023-02-08 18:30,2023-02-08 18:31,NotPrmUser,NotPrmUser,
141332,27166,54846,178,0,N,1,N,N,CP_Drtn,TT_Task,DT_FixedDUR2,TK_NotStart,DES1120,Issue IFC Design Package,,0,0,80,0,0,0,80,0,0,0,,,,2025-02-12 08:00,2025-02-25 16:00,,2025-02-12 08:00,2025-02-25 16:00,2025-02-12 08:00,2025-02-25 16:00,2025-02-12 08:00,2025-02-25 16:00,2025-02-12 08:00,2025-02-25 16:00,,PT_Normal,,,,,Rv74qHx70kCeDcoz6nbH4w,dmCp7xzZwEqTiLSlt4HTOQ,,,Y,0,0,,,2023-02-08 18:30,2023-02-08 18:31,NotPrmUser,NotPrmUser,
141333,27166,54847,178,0,N,1,N,N,CP_Drtn,TT_Task,DT_FixedDUR2,TK_NotStart,DES1130,60% Submittal,,840,0,480,0,0,0,480,0,0,0,,,,2024-07-10 08:00,2024-10-01 16:00,,2024-02-14 08:00,2024-05-07 16:00,2024-02-14 08:00,2024-05-07 16:00,2024-02-14 08:00,2024-05-07 16:00,2024-07-10 08:00,2024-10-01 16:00,,PT_Normal,,,,,s5JRJt6NtkaD6XrFKlb0bg,ac/kmtPuSkSx8ibYZmrz1g,,,N,0,0,,,2023-02-08 18:30,2023-02-08 18:31,NotPrmUser,NotPrmUser,
141334,27166,54847,178,0,N,1,N,N,CP_Drtn,TT_Task,DT_FixedDUR2,TK_NotStart,DES1140,60% Review,,920,0,80,0,0,0,80,0,0,0,,,,2024-10-16 08:00,2024-10-29 16:00,,2024-05-08 08:00,2024-05-21 16:00,2024-05-08 08:00,2024-05-21 16:00,2024-05-08 08:00,2024-05-21 16:00,2024-10-16 08:00,2024-10-29 16:00,,PT_Normal,,,,,GzeqM4PwFUmKvmXMJSiYjA,i1uazksptUaOoBs9bhpLyA,,,N,0,0,,,2023-02-08 18:30,2023-02-08 18:31,NotPrmUser,NotPrmUser,
141335,27166,54847,178,0,N,1,N,N,CP_Drtn,TT_Task,DT_FixedDUR2,TK_NotStart,DES1150,90% Submittal,,1120,0,400,0,0,0,400,0,0,0,,,,2024-12-04 08:00,2025-02-11 16:00,,2024-05-22 08:00,2024-07-30 16:00,2024-05-22 08:00,2024-07-30 16:00,2024-05-22 08:00,2024-07-30 16:00,2024-12-04 08:00,2025-02-11 16:00,,PT_Normal,,,,,9UVE9aJ2pECRyawGtFohEA,nfC4zNE9VUK6cn+7RCH7aA,,,N,0,0,,,2023-02-08 18:30,2023-02-08 18:31,NotPrmUser,NotPrmUser,
141336,27166,54847,178,0,N,1,N,N,CP_Drtn,TT_Task,DT_FixedDUR2,TK_NotStart,DES1160,90% Review,,1120,0,80,0,0,0,80,0,0,0,,,,2025-02-12 08:00,2025-02-25 16:00,,2024-07-31 08:00,2024-08-13 16:00,2024-07-31 08:00,2024-08-13 16:00,2024-07-31 08:00,2024-08-13 16:00,2025-02-12 08:00,2025-02-25 16:00,,PT_Normal,,,,,94MTFrw4SkSs2jr0jkAE1w,YFiz14cZCk+Qkm8/GNN23w,,,N,0,0,,,2023-02-08 18:30,2023-02-08 18:31,NotPrmUser,NotPrmUser,
141337,27166,54847,178,0,N,1,N,N,CP_Drtn,TT_Task,DT_FixedDUR2,TK_NotStart,DES1170,100% Submittal,,1120,880,160,0,0,0,160,0,0,0,,,,2025-02-26 08:00,2025-03-25 16:00,,2024-08-14 08:00,2024-09-10 16:00,2024-08-14 08:00,2024-09-10 16:00,2024-08-14 08:00,2024-09-10 16:00,2025-02-26 08:00,2025-03-25 16:00,,PT_Normal,,,,,zrs7AdzXe0eh4h67rxDh8w,qZ3KrtsnsUaTKLu/em9Chg,,,N,0,0,,,2023-02-08 18:30,2023-02-08 18:31,NotPrmUser,NotPrmUser,
141338,27166,54847,178,0,N,1,N,N,CP_Drtn,TT_Task,DT_FixedDUR2,TK_NotStart,DES1180,Issue IFC Design Package,,240,0,80,0,0,0,80,0,0,0,,,,2025-03-26 08:00,2025-04-08 16:00,,2025-02-12 08:00,2025-02-25 16:00,2025-02-12 08:00,2025-02-25 16:00,2025-02-12 08:00,2025-02-25 16:00,2025-03-26 08:00,2025-04-08 16:00,,PT_Normal,,,,,p8dzJWwn7U+6Co+qGsYHtw,1ZBnlMrVHkqYYRCP4sSZBw,,,N,0,0,,,2023-02-08 18:30,2023-02-08 18:31,NotPrmUser,NotPrmUser,
141339,27166,54848,178,0,N,1,N,N,CP_Drtn,TT_Task,DT_FixedDUR2,TK_NotStart,DES1190,Issue Services Worksheet to Design Firms,,760,0,160,0,0,0,160,0,0,0,,,,2024-05-01 08:00,2024-05-28 16:00,,2023-12-15 08:00,2024-01-16 16:00,2023-12-15 08:00,2024-01-16 16:00,2023-12-15 08:00,2024-01-16 16:00,2024-05-01 08:00,2024-05-28 16:00,,PT_Normal,,,,,uELORsHmH0qKOQ9wor0YdQ,Kvlsn6xnqkWhwh6WrHvPPw,,,N,0,0,,,2023-02-08 18:30,2023-02-08 18:31,NotPrmUser,NotPrmUser,
141340,27166,54849,178,0,N,1,N,N,CP_Drtn,TT_Task,DT_FixedDUR2,TK_NotStart,DES1220,SED Design,,6376,0,240,0,0,0,240,0,0,0,,,,2026-12-04 08:00,2027-01-14 16:00,,2023-11-08 08:00,2023-12-21 16:00,2023-11-08 08:00,2023-12-21 16:00,2023-11-08 08:00,2023-12-21 16:00,2026-12-04 08:00,2027-01-14 16:00,,PT_Normal,,,,,cwQSm6+M6UmaIpuuBX/NnQ,G0Wlbt7CP0O1ZSidskDevw,,,N,0,0,,,2023-02-08 18:30,2023-02-08 18:31,NotPrmUser,NotPrmUser,
141341,27166,54849,178,0,N,1,N,N,CP_Drtn,TT_Task,DT_FixedDUR2,TK_NotStart,DES1230,Issue IFC Design Package,,6376,5320,160,0,0,0,160,0,0,0,,,,2027-01-15 08:00,2027-02-11 16:00,,2023-12-26 08:00,2024-01-23 16:00,2023-12-26 08:00,2024-01-23 16:00,2023-12-26 08:00,2024-01-23 16:00,2027-01-15 08:00,2027-02-11 16:00,,PT_Normal,,,,,vGMoxDxzyEy2/I8ujSnGog,75sssXLxGkCGqQ+JmPNJWA,,,N,0,0,,,2023-02-08 18:30,2023-02-08 18:31,NotPrmUser,NotPrmUser,
141342,27166,54851,178,0,N,1,N,N,CP_Drtn,TT_Task,DT_FixedDUR2,TK_NotStart,PRO1000,Civil BOM - Long Lead @ 30%,,680,0,120,0,0,0,120,0,0,0,,,,2024-07-10 08:00,2024-07-30 16:00,,2024-03-13 08:00,2024-04-02 16:00,2024-03-13 08:00,2024-04-02 16:00,2024-03-13 08:00,2024-04-02 16:00,2024-07-10 08:00,2024-07-30 16:00,,PT_Normal,,,,,tHvuKBUFTkGpq66uFG/EqQ,JIbmFe9Fs0uWdgqry6scAA,,,N,0,0,,,2023-02-08 18:30,2023-02-08 18:31,NotPrmUser,NotPrmUser,
141343,27166,54851,178,0,N,1,N,N,CP_Drtn,TT_Task,DT_FixedDUR2,TK_NotStart,PRO1020,Electrical BOM - Long Lead @ 60%,,920,0,120,0,0,0,120,0,0,0,,,,2024-10-30 08:00,2024-11-19 16:00,,2024-05-22 08:00,2024-06-11 16:00,2024-05-22 08:00,2024-06-11 16:00,2024-05-22 08:00,2024-06-11 16:00,2024-10-30 08:00,2024-11-19 16:00,,PT_Normal,,,,,dxmdwwrTQkiFxg/UXWRnGg,KNIwd0nzakOwDZLWbsK28A,,,N,0,0,,,2023-02-08 18:30,2023-02-08 18:31,NotPrmUser,NotPrmUser,
141344,27166,54851,178,0,N,1,N,N,CP_Drtn,TT_Task,DT_FixedDUR2,TK_NotStart,PRO1040,BOM - Short Lead @ 60%,,600,0,120,0,0,0,120,0,0,0,,,,2025-01-01 08:00,2025-01-21 16:00,,2024-09-18 08:00,2024-10-08 16:00,2024-09-18 08:00,2024-10-08 16:00,2024-09-18 08:00,2024-10-08 16:00,2025-01-01 08:00,2025-01-21 16:00,,PT_Normal,,,,,mvmx/ENTP0a5cDkh0z8jSQ,OVQ2rEcThU+L8R72vEPwvg,,,N,0,0,,,2023-02-08 18:30,2023-02-08 18:31,NotPrmUser,NotPrmUser,
141345,27166,54852,178,0,N,1,N,N,CP_Drtn,TT_Task,DT_FixedDUR2,TK_NotStart,PER1000,CalTrans Permit,,0,0,2000,0,0,0,2000,0,0,0,,,,2024-03-13 08:00,2025-02-25 16:00,,2024-03-13 08:00,2025-02-25 16:00,2024-03-13 08:00,2025-02-25 16:00,2024-03-13 08:00,2025-02-25 16:00,2024-03-13 08:00,2025-02-25 16:00,,PT_Normal,,,,,vbt2B0K4c06SU6/WzGN4EA,WFFeTIu7HU+59js4ssm2ow,,,Y,0,0,,,2023-02-08 18:30,2023-02-08 18:31,NotPrmUser,NotPrmUser,
141346,27166,54852,178,0,N,1,N,N,CP_Drtn,TT_Task,DT_FixedDUR2,TK_NotStart,PER1010,City & County Permits,,1200,1200,800,0,0,0,800,0,0,0,,,,2024-10-09 08:00,2025-02-25 16:00,,2024-03-13 08:00,2024-07-30 16:00,2024-03-13 08:00,2024-07-30 16:00,2024-03-13 08:00,2024-07-30 16:00,2024-10-09 08:00,2025-02-25 16:00,,PT_Normal,,,,,64CJeHsQ70easikroPuPsg,4DiBWNFhd0uIzXFlGtlRRg,,,N,0,0,,,2023-02-08 18:30,2023-02-08 18:31,NotPrmUser,NotPrmUser,
141347,27166,54852,178,0,N,1,N,N,CP_Drtn,TT_Task,DT_FixedDUR2,TK_NotStart,PER1020,Other Permit (TBD),,1200,1200,800,0,0,0,800,0,0,0,,,,2024-10-09 08:00,2025-02-25 16:00,,2024-03-13 08:00,2024-07-30 16:00,2024-03-13 08:00,2024-07-30 16:00,2024-03-13 08:00,2024-07-30 16:00,2024-10-09 08:00,2025-02-25 16:00,,PT_Normal,,,,,s0ksPjnno028so3CPrbfsg,qBhOJTJXJUCgs7qUUpPP7w,,,N,0,0,,,2023-02-08 18:30,2023-02-08 18:31,NotPrmUser,NotPrmUser,
141348,27166,54853,178,0,N,1,N,N,CP_Drtn,TT_Task,DT_FixedDUR2,TK_NotStart,PUB1000,Public Affairs / Community Outreach,,6216,6216,800,0,0,0,800,0,0,0,,,,2027-06-11 08:00,2027-10-28 16:00,,2024-06-19 08:00,2024-11-05 16:00,2024-06-19 08:00,2024-11-05 16:00,2024-06-19 08:00,2024-11-05 16:00,2027-06-11 08:00,2027-10-28 16:00,,PT_Normal,,,,,jhYyJcONPUid2V1cUHnPxg,UKYj589wyUCjuti1lbhbfg,,,N,0,0,,,2023-02-08 18:30,2023-02-08 18:31,NotPrmUser,NotPrmUser,
141349,27166,54854,178,0,N,1,N,N,CP_Drtn,TT_Task,DT_FixedDUR2,TK_NotStart,LAN1000,Land Rights and Easement Acquisition,,880,880,1200,0,0,0,1200,0,0,0,,,,2024-07-31 08:00,2025-02-25 16:00,,2024-02-28 08:00,2024-09-24 16:00,2024-02-28 08:00,2024-09-24 16:00,2024-02-28 08:00,2024-09-24 16:00,2024-07-31 08:00,2025-02-25 16:00,,PT_Normal,,,,,oV0hzv7tzk+p02M8DBDj/g,I6sotsrthUG8boGjvayvbQ,,,N,0,0,,,2023-02-08 18:30,2023-02-08 18:31,NotPrmUser,NotPrmUser,
141350,27166,54854,178,0,N,1,N,N,CP_Drtn,TT_Task,DT_FixedDUR2,TK_NotStart,LAN1010,Tribal Land Rights,,880,880,1200,0,0,0,1200,0,0,0,,,,2024-07-31 08:00,2025-02-25 16:00,,2024-02-28 08:00,2024-09-24 16:00,2024-02-28 08:00,2024-09-24 16:00,2024-02-28 08:00,2024-09-24 16:00,2024-07-31 08:00,2025-02-25 16:00,,PT_Normal,,,,,nF2zPi3+50+mcevAM5nuzg,IVVwyiwEzE+KbxdDIjLH9g,,,N,0,0,,,2023-02-08 18:30,2023-02-08 18:31,NotPrmUser,NotPrmUser,
141351,27166,54854,178,0,N,1,N,N,CP_Drtn,TT_Task,DT_FixedDUR2,TK_NotStart,LAN1020,Laydown Yards,,880,880,1200,0,0,0,1200,0,0,0,,,,2024-07-31 08:00,2025-02-25 16:00,,2024-02-28 08:00,2024-09-24 16:00,2024-02-28 08:00,2024-09-24 16:00,2024-02-28 08:00,2024-09-24 16:00,2024-07-31 08:00,2025-02-25 16:00,,PT_Normal,,,,,GKOMY7TxIUu0vCO6Nbr4HQ,hO+2z0fIXU2HgMoKl7K9sg,,,N,0,0,,,2023-02-08 18:30,2023-02-08 18:31,NotPrmUser,NotPrmUser,
141352,27166,54855,178,0,N,1,N,N,CP_Drtn,TT_Task,DT_FixedDUR2,TK_NotStart,ENV1000,10% Environmental Submittal,,880,0,200,0,0,0,200,0,0,0,,,,2024-04-17 08:00,2024-05-21 16:00,,2023-11-08 08:00,2023-12-14 16:00,2023-11-08 08:00,2023-12-14 16:00,2023-11-08 08:00,2023-12-14 16:00,2024-04-17 08:00,2024-05-21 16:00,,PT_Normal,,,,,BpBg6HqdWkS6jA0EGgjfng,gHZzplTpvEmXt5grSrI9kA,,,N,0,0,,,2023-02-08 18:30,2023-02-08 18:31,NotPrmUser,NotPrmUser,
141353,27166,54855,178,0,N,1,N,N,CP_Drtn,TT_Task,DT_FixedDUR2,TK_NotStart,ENV1010,10% Environmental Review,,880,0,120,0,0,0,120,0,0,0,,,,2024-05-22 08:00,2024-06-11 16:00,,2023-12-15 08:00,2024-01-09 16:00,2023-12-15 08:00,2024-01-09 16:00,2023-12-15 08:00,2024-01-09 16:00,2024-05-22 08:00,2024-06-11 16:00,,PT_Normal,,,,,gHhgqrLIIEWFXO6ZsctCRg,NaUfUAwmr0SvXZ95Nyt4uQ,,,N,0,0,,,2023-02-08 18:30,2023-02-08 18:31,NotPrmUser,NotPrmUser,
141354,27166,54855,178,0,N,1,N,N,CP_Drtn,TT_Task,DT_FixedDUR2,TK_NotStart,ENV1020,30% Environmental Submittal,,840,0,200,0,0,0,200,0,0,0,,,,2024-10-02 08:00,2024-11-05 16:00,,2024-05-08 08:00,2024-06-11 16:00,2024-05-08 08:00,2024-06-11 16:00,2024-05-08 08:00,2024-06-11 16:00,2024-10-02 08:00,2024-11-05 16:00,,PT_Normal,,,,,PxTfUbc0P02+bdX6zwMzxQ,hOWyG90kK02EMYX1gNRKxA,,,N,0,0,,,2023-02-08 18:30,2023-02-08 18:31,NotPrmUser,NotPrmUser,
141355,27166,54855,178,0,N,1,N,N,CP_Drtn,TT_Task,DT_FixedDUR2,TK_NotStart,ENV1030,30% Environmental Review,,840,0,120,0,0,0,120,0,0,0,,,,2024-11-06 08:00,2024-11-26 16:00,,2024-06-12 08:00,2024-07-02 16:00,2024-06-12 08:00,2024-07-02 16:00,2024-06-12 08:00,2024-07-02 16:00,2024-11-06 08:00,2024-11-26 16:00,,PT_Normal,,,,,IWpyUn0o5UCCOAYKWmPAYw,nF2bNgSYi02gnH9I/NA7Ow,,,N,0,0,,,2023-02-08 18:30,2023-02-08 18:31,NotPrmUser,NotPrmUser,
141356,27166,54855,178,0,N,1,N,N,CP_Drtn,TT_Task,DT_FixedDUR2,TK_NotStart,ENV1040,60% Environmental Submittal,,840,0,280,0,0,0,280,0,0,0,,,,2024-11-27 08:00,2025-01-14 16:00,,2024-07-03 08:00,2024-08-20 16:00,2024-07-03 08:00,2024-08-20 16:00,2024-07-03 08:00,2024-08-20 16:00,2024-11-27 08:00,2025-01-14 16:00,,PT_Normal,,,,,68wI2gxLykKFOkcPgF1xVA,bk9oBjg67k6OaFgnS1fWsg,,,N,0,0,,,2023-02-08 18:30,2023-02-08 18:31,NotPrmUser,NotPrmUser,
141357,27166,54855,178,0,N,1,N,N,CP_Drtn,TT_Task,DT_FixedDUR2,TK_NotStart,ENV1050,60% Environmental Release,,960,960,120,0,0,0,120,0,0,0,,,,2025-02-05 08:00,2025-02-25 16:00,,2024-08-21 08:00,2024-09-10 16:00,2024-08-21 08:00,2024-09-10 16:00,2024-08-21 08:00,2024-09-10 16:00,2025-02-05 08:00,2025-02-25 16:00,,PT_Normal,,,,,RlO7m/RxTE2q52ZNLAFRQQ,1mZ+jTm9jkCz+ujjo+mOqw,,,N,0,0,,,2023-02-08 18:30,2023-02-08 18:31,NotPrmUser,NotPrmUser,
141358,27166,54855,178,0,N,1,N,N,CP_Drtn,TT_Task,DT_FixedDUR2,TK_NotStart,ENV1060,BIA NEPA Submittal,,840,0,80,0,0,0,80,0,0,0,,,,2025-01-15 08:00,2025-01-28 16:00,,2024-08-21 08:00,2024-09-03 16:00,2024-08-21 08:00,2024-09-03 16:00,2024-08-21 08:00,2024-09-03 16:00,2025-01-15 08:00,2025-01-28 16:00,,PT_Normal,,,,,u+CLHjBQS0mIA7kkZzHiPA,w4gyGU3u0kmPLBi63fkvng,,,N,0,0,,,2023-02-08 18:30,2023-02-08 18:31,NotPrmUser,NotPrmUser,
141359,27166,54855,178,0,N,1,N,N,CP_Drtn,TT_Task,DT_FixedDUR2,TK_NotStart,ENV1070,"BIA Received (Add 250 days, if needed)",,840,840,160,0,0,0,160,0,0,0,,,,2025-01-29 08:00,2025-02-25 16:00,,2024-09-04 08:00,2024-10-01 16:00,2024-09-04 08:00,2024-10-01 16:00,2024-09-04 08:00,2024-10-01 16:00,2025-01-29 08:00,2025-02-25 16:00,,PT_Normal,,,,,2F9GqycfqU+KHKut8Sj9hw,GNY6siZ290qZ5eRnqkVbsw,,,N,0,0,,,2023-02-08 18:30,2023-02-08 18:31,NotPrmUser,NotPrmUser,
141360,27166,54845,178,0,N,1,N,N,CP_Drtn,TT_Task,DT_FixedDUR2,TK_NotStart,DES1010,Seismic / Geotech Submittal,,880,0,200,0,0,0,200,0,0,0,,,,2024-06-12 08:00,2024-07-16 16:00,,2024-01-10 08:00,2024-02-13 16:00,2024-01-10 08:00,2024-02-13 16:00,2024-01-10 08:00,2024-02-13 16:00,2024-06-12 08:00,2024-07-16 16:00,,PT_Normal,,,,,l4q0H8trnkWXhX89rhBBfQ,8+mpMf0kJUKWh9ASBNjF7Q,,,N,0,0,,,2023-02-08 18:30,2023-02-08 18:31,NotPrmUser,NotPrmUser,
141361,27166,54845,178,0,N,1,N,N,CP_Drtn,TT_Task,DT_FixedDUR2,TK_NotStart,DES1020,Potholing Submittal,,880,40,200,0,0,0,200,0,0,0,,,,2024-07-17 08:00,2024-08-20 16:00,,2024-02-14 08:00,2024-03-19 16:00,2024-02-14 08:00,2024-03-19 16:00,2024-02-14 08:00,2024-03-19 16:00,2024-07-17 08:00,2024-08-20 16:00,,PT_Normal,,,,,z3swh5ue8kaFdp8m+n/Dcw,wLKpyvoDLEOUm5xEmzE9gA,,,N,0,0,,,2023-02-08 18:30,2023-02-08 18:31,NotPrmUser,NotPrmUser,
141362,27166,54845,178,0,N,1,N,N,CP_Drtn,TT_Task,DT_FixedDUR2,TK_NotStart,DES1030,Potholing Release /Perform Potholing,,840,0,240,0,0,0,240,0,0,0,,,,2024-08-21 08:00,2024-10-01 16:00,,2024-03-27 08:00,2024-05-07 16:00,2024-03-27 08:00,2024-05-07 16:00,2024-03-27 08:00,2024-05-07 16:00,2024-08-21 08:00,2024-10-01 16:00,,PT_Normal,,,,,ujwLcR+s6kykOOH44tY4vg,pfZFpbx8bUmVj387jvjJDQ,,,N,0,0,,,2023-02-08 18:30,2023-02-08 18:31,NotPrmUser,NotPrmUser,
141363,27166,54857,178,0,N,1,N,N,CP_Drtn,TT_Task,DT_FixedDUR2,TK_NotStart,PCON100,Initiate Performance Partnering Process @ 60%,,1000,0,40,0,0,0,40,0,0,0,,,,2024-12-25 08:00,2024-12-31 16:00,,2024-07-03 08:00,2024-07-09 16:00,2024-07-03 08:00,2024-07-09 16:00,2024-07-03 08:00,2024-07-09 16:00,2024-12-25 08:00,2024-12-31 16:00,,PT_Normal,,,,,kzqfaVASyU6ofomfq4EL1A,5n7F78U8+kCSZF665B3djA,,,N,0,0,,,2023-02-08 18:30,2023-02-08 18:31,NotPrmUser,NotPrmUser,
141364,27166,54857,178,0,N,1,N,N,CP_Drtn,TT_Task,DT_FixedDUR2,TK_NotStart,PCON110,Receive Estimate from Contractor,,1000,0,120,0,0,0,120,0,0,0,,,,2025-01-01 08:00,2025-01-21 16:00,,2024-07-10 08:00,2024-07-30 16:00,2024-07-10 08:00,2024-07-30 16:00,2024-07-10 08:00,2024-07-30 16:00,2025-01-01 08:00,2025-01-21 16:00,,PT_Normal,,,,,cW0as5fkh0+O18e/Am5V4A,kEtroe/KK0Sc0UH58DUnvw,,,N,0,0,,,2023-02-08 18:30,2023-02-08 18:31,NotPrmUser,NotPrmUser,
141365,27166,54857,178,0,N,1,N,N,CP_Drtn,TT_Task,DT_FixedDUR2,TK_NotStart,PCON120,Bid Estimate Negotiations,,1000,0,80,0,0,0,80,0,0,0,,,,2025-01-22 08:00,2025-02-04 16:00,,2024-07-31 08:00,2024-08-13 16:00,2024-07-31 08:00,2024-08-13 16:00,2024-07-31 08:00,2024-08-13 16:00,2025-01-22 08:00,2025-02-04 16:00,,PT_Normal,,,,,t2gwzAkd0UuvlBjGyAzmgQ,vVq/A4TvUk2oVFwVkMHIhw,,,N,0,0,,,2023-02-08 18:30,2023-02-08 18:31,NotPrmUser,NotPrmUser,
141366,27166,54857,178,0,N,1,N,N,CP_Drtn,TT_Task,DT_FixedDUR2,TK_NotStart,PCON130,Revise Estimate based on IFC,,1000,0,40,0,0,0,40,0,0,0,,,,2025-02-05 08:00,2025-02-11 16:00,,2024-08-14 08:00,2024-08-20 16:00,2024-08-14 08:00,2024-08-20 16:00,2024-08-14 08:00,2024-08-20 16:00,2025-02-05 08:00,2025-02-11 16:00,,PT_Normal,,,,,8ZRF2VKPiUmjoQfvgcwEVQ,0vcR272FZkKA5cEcJWN59Q,,,N,0,0,,,2023-02-08 18:30,2023-02-08 18:31,NotPrmUser,NotPrmUser,
141367,27166,54857,178,0,N,1,N,N,CP_Drtn,TT_Task,DT_FixedDUR2,TK_NotStart,PCON140,Issue Release,,1000,1000,80,0,0,0,80,0,0,0,,,,2025-02-12 08:00,2025-02-25 16:00,,2024-08-21 08:00,2024-09-03 16:00,2024-08-21 08:00,2024-09-03 16:00,2024-08-21 08:00,2024-09-03 16:00,2025-02-12 08:00,2025-02-25 16:00,,PT_Normal,,,,,kwW2mewBl022bazUNDF8ZA,jvr8LnCGGkKeuzO20qz28Q,,,N,0,0,,,2023-02-08 18:30,2023-02-08 18:31,NotPrmUser,NotPrmUser,
141368,27166,54859,178,0,N,1,N,N,CP_Drtn,TT_Task,DT_FixedDUR2,TK_NotStart,PCON200,Civil Pre-Construction Meeting (Civil Construction Ready),,0,0,40,0,0,0,40,0,0,0,,,,2025-02-26 08:00,2025-03-04 16:00,,2025-02-26 08:00,2025-03-04 16:00,2025-02-26 08:00,2025-03-04 16:00,2025-02-26 08:00,2025-03-04 16:00,2025-02-26 08:00,2025-03-04 16:00,,PT_Normal,,,,,BXPk9vqKkEiSYM2IAlB/ig,TQsJNEkHRkKMKnoIQGsC8g,,,Y,0,0,,,2023-02-08 18:30,2023-02-08 18:31,NotPrmUser,NotPrmUser,
141369,27166,54859,178,0,N,1,N,N,CP_Drtn,TT_Task,DT_FixedDUR2,TK_NotStart,PCON210,Electrical - Pre-Construction Meeting (Electical Construction Ready),,240,0,40,0,0,0,40,0,0,0,,,,2025-04-09 08:00,2025-04-15 16:00,,2025-02-26 08:00,2025-03-04 16:00,2025-02-26 08:00,2025-03-04 16:00,2025-02-26 08:00,2025-03-04 16:00,2025-04-09 08:00,2025-04-15 16:00,,PT_Normal,,,,,Q1yWr/RQ3UCN2XYVJZPVtA,5KEbVXL4WU+NxsWxH+t5Xg,,,N,0,0,,,2023-02-08 18:30,2023-02-08 18:31,NotPrmUser,NotPrmUser,
141370,27166,54858,178,0,N,1,N,N,CP_Drtn,TT_Task,DT_FixedDUR2,TK_NotStart,PCON150,Initiate Performance Partnering Process @ 60%,,1480,0,40,0,0,0,40,0,0,0,,,,2025-02-05 08:00,2025-02-11 16:00,,2024-05-22 08:00,2024-05-28 16:00,2024-05-22 08:00,2024-05-28 16:00,2024-05-22 08:00,2024-05-28 16:00,2025-02-05 08:00,2025-02-11 16:00,,PT_Normal,,,,,eqykVBaMd0OVPiMD0byfQQ,sOd17v5XnUixh6Irqoi+dg,,,N,0,0,,,2023-02-08 18:30,2023-02-08 18:31,NotPrmUser,NotPrmUser,
141371,27166,54858,178,0,N,1,N,N,CP_Drtn,TT_Task,DT_FixedDUR2,TK_NotStart,PCON160,Receive Estimate from Contractor,,1480,0,120,0,0,0,120,0,0,0,,,,2025-02-12 08:00,2025-03-04 16:00,,2024-05-29 08:00,2024-06-18 16:00,2024-05-29 08:00,2024-06-18 16:00,2024-05-29 08:00,2024-06-18 16:00,2025-02-12 08:00,2025-03-04 16:00,,PT_Normal,,,,,LCs/AhCeL0md+9liIXbtDQ,UOs/v5o20EGd5OVsP5VJkw,,,N,0,0,,,2023-02-08 18:30,2023-02-08 18:31,NotPrmUser,NotPrmUser,
141372,27166,54858,178,0,N,1,N,N,CP_Drtn,TT_Task,DT_FixedDUR2,TK_NotStart,PCON170,Bid Estimate Negotiations,,1480,0,80,0,0,0,80,0,0,0,,,,2025-03-05 08:00,2025-03-18 16:00,,2024-06-19 08:00,2024-07-02 16:00,2024-06-19 08:00,2024-07-02 16:00,2024-06-19 08:00,2024-07-02 16:00,2025-03-05 08:00,2025-03-18 16:00,,PT_Normal,,,,,r3dHcsm05Euynqv+DU91wg,LUnF5K5z/0+hUrHK1xj6jQ,,,N,0,0,,,2023-02-08 18:30,2023-02-08 18:31,NotPrmUser,NotPrmUser,
141373,27166,54858,178,0,N,1,N,N,CP_Drtn,TT_Task,DT_FixedDUR2,TK_NotStart,PCON180,Revise Estimate based on IFC,,1480,0,40,0,0,0,40,0,0,0,,,,2025-03-19 08:00,2025-03-25 16:00,,2024-07-03 08:00,2024-07-09 16:00,2024-07-03 08:00,2024-07-09 16:00,2024-07-03 08:00,2024-07-09 16:00,2025-03-19 08:00,2025-03-25 16:00,,PT_Normal,,,,,FvRyJR6r/UW7U67t/6H8iw,ba+EJ9Ama0mCPe+EQnChCw,,,N,0,0,,,2023-02-08 18:30,2023-02-08 18:31,NotPrmUser,NotPrmUser,
141374,27166,54858,178,0,N,1,N,N,CP_Drtn,TT_Task,DT_FixedDUR2,TK_NotStart,PCON190,Issue Release,,1480,1240,80,0,0,0,80,0,0,0,,,,2025-03-26 08:00,2025-04-08 16:00,,2024-07-10 08:00,2024-07-23 16:00,2024-07-10 08:00,2024-07-23 16:00,2024-07-10 08:00,2024-07-23 16:00,2025-03-26 08:00,2025-04-08 16:00,,PT_Normal,,,,,eoOoD4cFnUmmPoAtBnqbkQ,Z+Eo/3hG3EOllYJ7sYIITw,,,N,0,0,,,2023-02-08 18:30,2023-02-08 18:31,NotPrmUser,NotPrmUser,
141375,27166,54851,178,0,N,1,N,N,CP_Drtn,TT_Task,DT_FixedDUR2,TK_NotStart,PRO1010,Order Long Lead Civil Material,,680,680,1200,0,0,0,1200,0,0,0,,,,2024-07-31 08:00,2025-02-25 16:00,,2024-04-03 08:00,2024-10-29 16:00,2024-04-03 08:00,2024-10-29 16:00,2024-04-03 08:00,2024-10-29 16:00,2024-07-31 08:00,2025-02-25 16:00,,PT_Normal,,,,,JQqDjqnYt0irPqMhCVkbDQ,hkrz5MGgeUOiHHxw0KY2wQ,,,N,0,0,,,2023-02-08 18:30,2023-02-08 18:31,NotPrmUser,NotPrmUser,
141376,27166,54851,178,0,N,1,N,N,CP_Drtn,TT_Task,DT_FixedDUR2,TK_NotStart,PRO1050,Order Short Lead Materials,,600,600,200,0,0,0,200,0,0,0,,,,2025-01-22 08:00,2025-02-25 16:00,,2024-10-09 08:00,2024-11-12 16:00,2024-10-09 08:00,2024-11-12 16:00,2024-10-09 08:00,2024-11-12 16:00,2025-01-22 08:00,2025-02-25 16:00,,PT_Normal,,,,,DipoujBMTkyXcjnBJmpknA,rRngoiuYQUG04KRQatRSPw,,,N,0,0,,,2023-02-08 18:30,2023-02-08 18:31,NotPrmUser,NotPrmUser,
141377,27166,54851,178,0,N,1,N,N,CP_Drtn,TT_Task,DT_FixedDUR2,TK_NotStart,PRO1030,Order Long Lead Electrical Materials,,920,680,800,0,0,0,800,0,0,0,,,,2024-11-20 08:00,2025-04-08 16:00,,2024-06-12 08:00,2024-10-29 16:00,2024-06-12 08:00,2024-10-29 16:00,2024-06-12 08:00,2024-10-29 16:00,2024-11-20 08:00,2025-04-08 16:00,,PT_Normal,,,,,CsQU4E7VJ02JKjohI46l1g,T8Y4etYi3EaMipwbHHQrUQ,,,N,0,0,,,2023-02-08 18:30,2023-02-08 18:31,NotPrmUser,NotPrmUser,
141378,27166,54861,178,0,N,1,N,N,CP_Drtn,TT_Task,DT_FixedDUR2,TK_NotStart,CON2000,Civil Construction (Trenching 300 feet/day),7730,0,0,3520,0,14248,14248,3520,0,0,0,,,,2025-03-05 08:00,2026-11-10 16:00,,2025-03-05 08:00,2026-11-10 16:00,2025-03-05 08:00,2026-11-10 16:00,2025-03-05 08:00,2026-11-10 16:00,2025-03-05 08:00,2026-11-10 16:00,,PT_Normal,,,,,YGGNfBrxQE6ntoyUZfzYkw,i63hlLkeHkOVnWRssSkw4w,,,Y,0,0,,,2023-02-08 18:30,2023-02-08 18:37,NotPrmUser,NotPrmUser,
141379,27166,54862,178,0,N,1,N,N,CP_Drtn,TT_Task,DT_FixedDUR2,TK_NotStart,CON3000,Electrical Construction,7786,0,0,3280,0,1640,1640,3280,0,0,0,,,,2025-04-16 08:00,2026-11-10 16:00,,2025-04-16 08:00,2026-11-10 16:00,2025-04-16 08:00,2026-11-10 16:00,2025-04-16 08:00,2026-11-10 16:00,2025-04-16 08:00,2026-11-10 16:00,,PT_Normal,,,,,b01iv6FR0UePd63ti1ZlQw,41xqwjiyA0SspEMd9gmZWA,,,Y,0,0,,,2023-02-08 18:30,2023-02-08 19:35,NotPrmUser,NotPrmUser,
141380,27166,54863,178,0,N,1,N,N,CP_Drtn,TT_Task,DT_FixedDUR2,TK_NotStart,CON4000,Service Cutover,,1056,0,2920,0,0,0,2920,0,0,0,,,,2025-12-19 08:00,2027-05-13 16:00,,2025-06-18 08:00,2026-11-10 16:00,2025-06-18 08:00,2026-11-10 16:00,2025-06-18 08:00,2026-11-10 16:00,2025-12-19 08:00,2027-05-13 16:00,,PT_Normal,,,,,eszLUUMyhEayV5hJGfRNtA,5hYV9VmzEEiiVEF2fJ67aA,,,N,0,0,,,2023-02-08 18:30,2023-02-08 18:31,NotPrmUser,NotPrmUser,
141381,27166,54864,178,0,N,1,N,N,CP_Drtn,TT_Task,DT_FixedDUR2,TK_NotStart,CON5000,Scada Construction,,1056,0,520,0,0,0,520,0,0,0,,,,2027-02-12 08:00,2027-05-13 16:00,,2026-08-12 08:00,2026-11-10 16:00,2026-08-12 08:00,2026-11-10 16:00,2026-08-12 08:00,2026-11-10 16:00,2027-02-12 08:00,2027-05-13 16:00,,PT_Normal,,,,,mEf7enhXak2eXbdPnZLR/g,AFK2YByRvUeJRB9KgPK+5w,,,N,0,0,,,2023-02-08 18:30,2023-02-08 18:31,NotPrmUser,NotPrmUser,
141382,27166,54865,178,0,N,1,N,N,CP_Drtn,TT_Task,DT_FixedDUR2,TK_NotStart,CON6000,Substation Construction,,1056,0,520,0,0,0,520,0,0,0,,,,2027-02-12 08:00,2027-05-13 16:00,,2026-08-12 08:00,2026-11-10 16:00,2026-08-12 08:00,2026-11-10 16:00,2026-08-12 08:00,2026-11-10 16:00,2027-02-12 08:00,2027-05-13 16:00,,PT_Normal,,,,,tcQgHueGREenmc3cFy9RCw,UR1mklZRRE6lmcZx7NC9ag,,,N,0,0,,,2023-02-08 18:30,2023-02-08 18:31,NotPrmUser,NotPrmUser,
141383,27166,54866,178,0,N,1,N,N,CP_Drtn,TT_Task,DT_FixedDrtn,TK_NotStart,CON7000,Overhead RFS (1000 feet per day),7785,0,0,1056,0,1056,1056,1056,0,0,0,,,,2026-11-11 08:00,2027-05-13 16:00,,2026-11-11 08:00,2027-05-13 16:00,2026-11-11 08:00,2027-05-13 16:00,2026-11-11 08:00,2027-05-13 16:00,2026-11-11 08:00,2027-05-13 16:00,,PT_Normal,,,,,KIWina1fxUa+rHi8adJQHA,sBOq5zQ0v0Wnz3T1tJ7v6g,,,Y,0,0,,,2023-02-08 18:30,2023-02-08 18:31,NotPrmUser,NotPrmUser,
141384,27166,54860,178,0,N,1,N,N,CP_Drtn,TT_Task,DT_FixedDUR2,TK_NotStart,ISD1000,ISD - Energize - Put in service,,2008,2008,8,0,0,0,8,25,0,25,,,,2027-10-28 08:00,2027-10-28 16:00,,2026-11-11 08:00,2026-11-11 16:00,2026-11-11 08:00,2026-11-11 16:00,2026-11-11 08:00,2026-11-11 16:00,2027-10-28 08:00,2027-10-28 16:00,,PT_Normal,,,,,dUyL6falXkieotfWAH1C4A,/xrGRgnpCU6U/DjgwAhC5Q,,,N,0,0,,,2023-02-08 18:30,2023-02-08 18:31,NotPrmUser,NotPrmUser,
141385,27166,54843,178,0,N,1,N,N,CP_Drtn,TT_Task,DT_FixedDUR2,TK_NotStart,SUR1000,Survey and LiDAR,7385,0,0,400,0,9182,9182,400,0,0,0,,,,2023-08-30 08:00,2023-11-07 16:00,,2023-08-30 08:00,2023-11-07 16:00,2023-08-30 08:00,2023-11-07 16:00,2023-08-30 08:00,2023-11-07 16:00,2023-08-30 08:00,2023-11-07 16:00,,PT_Normal,,,,,wyDzqmWtlkiDhU7ww4Wpqg,KKJMlVfm70GPaWNIPSiw6Q,,,Y,0,0,,,2023-02-08 18:30,2023-02-08 18:31,NotPrmUser,NotPrmUser,
141386,27166,54848,178,0,N,1,N,N,CP_Drtn,TT_Task,DT_FixedDUR2,TK_NotStart,DES1200,Receive Services Worksheet and Cable Info from Design Firms,,760,0,160,0,0,0,160,0,0,0,,,,2024-05-29 08:00,2024-06-25 16:00,,2024-01-17 08:00,2024-02-13 16:00,2024-01-17 08:00,2024-02-13 16:00,2024-01-17 08:00,2024-02-13 16:00,2024-05-29 08:00,2024-06-25 16:00,,PT_Normal,,,,,5qnJs5qxjky5qPGObdvSVQ,xKr/wxw/Z0mn4vi/GRERHQ,,,N,0,0,,,2023-02-08 18:30,2023-02-08 18:31,NotPrmUser,NotPrmUser,
141387,27166,54848,178,0,N,1,N,N,CP_Drtn,TT_Task,DT_FixedDUR2,TK_NotStart,DES1210,Issue to Trench Inspectors,,2376,1320,80,0,0,0,80,0,0,0,,,,2025-12-05 08:00,2025-12-18 16:00,,2024-10-16 08:00,2024-10-29 16:00,2024-10-16 08:00,2024-10-29 16:00,2024-10-16 08:00,2024-10-29 16:00,2025-12-05 08:00,2025-12-18 16:00,,PT_Normal,,,,,Mkp2cW4caUibIhFm6GO/Lg,cwKEjdSK5kq02Cr+bOVVig,,,N,0,0,,,2023-02-08 18:30,2023-02-08 18:31,NotPrmUser,NotPrmUser,
141388,27166,54860,178,0,N,1,N,N,CP_Drtn,TT_FinMile,DT_FixedDrtn,TK_NotStart,CON1020,Construction Complete,,0,0,0,0,0,0,0,0,0,0,,,,2027-05-13 16:00,2027-05-13 16:00,,2027-05-13 16:00,2027-05-13 16:00,2027-05-13 16:00,2027-05-13 16:00,2027-05-13 16:00,2027-05-13 16:00,2027-05-13 16:00,2027-05-13 16:00,,PT_Normal,,,,,40t7OeLvukaqrDiBGLOsmg,eP+uK//UkEGqqJzFTZb6CA,,,Y,0,0,,,2023-02-08 18:30,2023-02-08 18:31,NotPrmUser,NotPrmUser,
141389,27166,54860,178,0,N,1,N,N,CP_Drtn,TT_Mile,DT_FixedDrtn,TK_NotStart,CON1010,Construction Start,,5536,5536,0,0,0,0,0,0,0,0,,,,2027-10-28 16:00,2027-10-28 16:00,,2025-03-05 08:00,2025-03-05 08:00,2025-03-05 08:00,2025-03-05 08:00,2025-03-05 08:00,2025-03-05 08:00,2027-10-28 16:00,2027-10-28 16:00,,PT_Normal,,,,,TGMLzzs/+kuQUU+4q9NkvA,oA4ExsTTokiHDS9qsrJbeg,,,N,0,0,,,2023-02-08 18:30,2023-02-08 18:31,NotPrmUser,NotPrmUser,
141390,27166,54869,178,0,N,1,N,N,CP_Drtn,TT_Task,DT_FixedDUR2,TK_NotStart,CLO1020,GIS/As-Built and Records Complete,,480,480,480,0,0,0,480,0,0,0,,,,2027-08-06 08:00,2027-10-28 16:00,,2027-05-14 08:00,2027-08-05 16:00,2027-05-14 08:00,2027-08-05 16:00,2027-05-14 08:00,2027-08-05 16:00,2027-08-06 08:00,2027-10-28 16:00,,PT_Normal,,,,,rD3xBNMnYUOZ5e9ETd/dHA,rRfmcvYJOUOclcKnSfYX9Q,,,N,0,0,,,2023-02-08 18:30,2023-02-08 18:31,NotPrmUser,NotPrmUser,
141391,27166,54870,178,0,N,1,N,N,CP_Drtn,TT_Task,DT_FixedDUR2,TK_NotStart,CLO1030,"PO's complete, Work Order Reconcilled and Closed",,0,0,960,0,0,0,960,0,0,0,,,,2027-05-14 08:00,2027-10-28 16:00,,2027-05-14 08:00,2027-10-28 16:00,2027-05-14 08:00,2027-10-28 16:00,2027-05-14 08:00,2027-10-28 16:00,2027-05-14 08:00,2027-10-28 16:00,,PT_Normal,,,,,bVIjMpP8pUOSH8ppOt40kg,GEtpFvEE3EKRMNuc0uDPTw,,,Y,0,0,,,2023-02-08 18:30,2023-02-08 18:31,NotPrmUser,NotPrmUser,
141392,27166,54868,178,0,N,1,N,N,CP_Drtn,TT_FinMile,DT_FixedDrtn,TK_NotStart,CLO1010,Project Complete,,0,0,0,0,0,0,0,0,0,0,,,,2027-10-28 16:00,2027-10-28 16:00,,2027-10-28 16:00,2027-10-28 16:00,2027-10-28 16:00,2027-10-28 16:00,2027-10-28 16:00,2027-10-28 16:00,2027-10-28 16:00,2027-10-28 16:00,,PT_Normal,,,,,2gl3SyVRV0iUbTQoGslg+A,BDEMXs8mDUa36w+dzKd1Yw,,,Y,0,0,,,2023-02-08 18:30,2023-02-08 18:31,NotPrmUser,NotPrmUser,
141393,27166,54844,178,0,N,1,N,N,CP_Drtn,TT_LOE,DT_FixedDUR2,TK_NotStart,DES1000,Design Summary,7257,4096,0,2680,0,16233,16233,2680,0,0,0,,,,2023-11-08 08:00,2027-02-11 16:00,,2023-11-08 08:00,2025-02-25 16:00,2023-11-08 08:00,2025-02-25 16:00,2023-11-08 08:00,2025-02-25 16:00,2023-11-08 08:00,2027-02-11 16:00,,PT_Normal,,,,,I7hsjii3mUKJagKQTpcICQ,fZYedx1eUUK2UydGU18XYQ,,,Y,0,0,,,2023-02-08 18:30,2023-02-08 18:31,NotPrmUser,NotPrmUser,
141394,27166,54860,178,0,N,1,N,N,CP_Drtn,TT_LOE,DT_FixedDUR2,TK_NotStart,CON1000,Construction Summary,7385,0,0,4576,0,9972,9972,4576,25,0,25,,,,2027-05-13 16:00,2027-05-13 16:00,,2025-03-05 08:00,2027-05-13 16:00,2025-03-05 08:00,2027-05-13 16:00,2025-03-05 08:00,2027-05-13 16:00,2027-05-13 16:00,2027-05-13 16:00,,PT_Normal,,,,,0QBDev1bf0i0xf/F29ntsw,S/663UpzjES+asEWin3Q8w,,,N,0,0,,,2023-02-08 18:30,2023-02-08 18:31,NotPrmUser,NotPrmUser,
141395,27166,54868,178,0,N,1,N,N,CP_Drtn,TT_LOE,DT_FixedDUR2,TK_NotStart,CLO1000,Close Out Summary,7385,0,0,960,0,4482,4482,960,0,0,0,,,,2027-05-14 08:00,2027-10-28 16:00,,2027-05-14 08:00,2027-10-28 16:00,2027-05-14 08:00,2027-10-28 16:00,2027-05-14 08:00,2027-10-28 16:00,2027-05-14 08:00,2027-10-28 16:00,,PT_Normal,,,,,QzJyATzQkkS0JWNtRpSQ8g,vAfACKswTECHz8AuvliK1w,,,Y,0,0,,,2023-02-08 18:30,2023-02-08 18:31,NotPrmUser,NotPrmUser,
141396,27166,54841,178,0,N,1,N,N,CP_Drtn,TT_LOE,DT_FixedDUR2,TK_NotStart,PCON1000,Pre-Construction Summary,,0,0,3296,0,0,0,3296,0,0,0,,,,2023-07-31 08:00,2025-03-04 16:00,,2023-07-31 08:00,2025-03-04 16:00,2023-07-31 08:00,2025-03-04 16:00,2023-07-31 08:00,2025-03-04 16:00,2023-07-31 08:00,2025-03-04 16:00,,PT_Normal,,,,,jvFQxpL3ZUarKBDy8NxeiQ,FBuymsO9IEy1TKeSqH/Wqg,,,Y,0,0,,,2023-02-08 18:30,2023-02-08 18:31,NotPrmUser,NotPrmUser,
141397,27167,54872,178,0,N,1,N,N,CP_Drtn,TT_Task,DT_FixedDUR2,TK_NotStart,SCO1000,Bundling / Phasing of circuits for project sequencing,,0,0,80,0,0,0,80,0,0,0,2023-08-07 00:00,,,2023-08-07 08:00,2023-08-18 16:00,,2023-08-07 08:00,2023-08-18 16:00,2023-08-07 08:00,2023-08-18 16:00,2023-08-07 08:00,2023-08-18 16:00,2023-08-07 08:00,2023-08-18 16:00,CS_MSOA,PT_Normal,,,,,9vho1GzfMUqPlkcZJ39mcA,TzvKvfdy9EaU0GQONf975g,,,Y,0,0,,,2023-02-08 18:30,2023-02-08 18:31,NotPrmUser,NotPrmUser,
141398,27167,54872,178,0,N,1,N,N,CP_Drtn,TT_Task,DT_FixedDUR2,TK_NotStart,SCO1010,Constructability Review,,0,0,40,0,0,0,40,0,0,0,,,,2023-08-21 08:00,2023-08-25 16:00,,2023-08-21 08:00,2023-08-25 16:00,2023-08-21 08:00,2023-08-25 16:00,2023-08-21 08:00,2023-08-25 16:00,2023-08-21 08:00,2023-08-25 16:00,,PT_Normal,,,,,CRvHA+IudEiXUw5FBUCkbQ,zm3/xD2PckigCOstiKK07A,,,Y,0,0,,,2023-02-08 18:30,2023-02-08 18:31,NotPrmUser,NotPrmUser,
141399,27167,54872,178,0,N,1,N,N,CP_Drtn,TT_Task,DT_FixedDUR2,TK_NotStart,SCO1020,SDG&E Review,,0,0,16,0,0,0,16,0,0,0,,,,2023-08-28 08:00,2023-08-29 16:00,,2023-08-28 08:00,2023-08-29 16:00,2023-08-28 08:00,2023-08-29 16:00,2023-08-28 08:00,2023-08-29 16:00,2023-08-28 08:00,2023-08-29 16:00,,PT_Normal,,,,,wACrS+M5HUeTBOsmM/DF2Q,HIDnL+r2LUGeA3kvY/v+jg,,,Y,0,0,,,2023-02-08 18:30,2023-02-08 18:31,NotPrmUser,NotPrmUser,
141400,27167,54873,178,0,N,1,N,N,CP_Drtn,TT_Task,DT_FixedDUR2,TK_NotStart,PLA1000,Workorder Setup,,0,0,40,0,0,0,40,0,0,0,,,,2023-08-30 08:00,2023-09-05 16:00,,2023-08-30 08:00,2023-09-05 16:00,2023-08-30 08:00,2023-09-05 16:00,2023-08-30 08:00,2023-09-05 16:00,2023-08-30 08:00,2023-09-05 16:00,,PT_Normal,,,,,Jdzp0TkrokiNC9V8z4KSMg,LlyDw7xC+UWgaDVCbvtqRQ,,,Y,0,0,,,2023-02-08 18:30,2023-02-08 18:31,NotPrmUser,NotPrmUser,
141401,27167,54876,178,0,N,1,N,N,CP_Drtn,TT_Task,DT_FixedDUR2,TK_NotStart,DES1040,10% Submittal,,0,0,200,0,0,0,200,0,0,0,,,,2023-11-15 08:00,2023-12-21 16:00,,2023-11-15 08:00,2023-12-21 16:00,2023-11-15 08:00,2023-12-21 16:00,2023-11-15 08:00,2023-12-21 16:00,2023-11-15 08:00,2023-12-21 16:00,,PT_Normal,,,,,5/8xMFt76Uen9Mb0U4Zw5g,mBzi0OLmp0G0ue0VtIGXDA,,,Y,0,0,,,2023-02-08 18:30,2023-02-08 18:31,NotPrmUser,NotPrmUser,
141402,27167,54876,178,0,N,1,N,N,CP_Drtn,TT_Task,DT_FixedDUR2,TK_NotStart,DES1050,30% Submittal,,0,0,400,0,0,0,400,0,0,0,,,,2023-12-26 08:00,2024-03-05 16:00,,2023-12-26 08:00,2024-03-05 16:00,2023-12-26 08:00,2024-03-05 16:00,2023-12-26 08:00,2024-03-05 16:00,2023-12-26 08:00,2024-03-05 16:00,,PT_Normal,,,,,EICYWd2ggESpRgaj259/gQ,aMkWVvRueUOr6uu+aeTaCA,,,Y,0,0,,,2023-02-08 18:30,2023-02-08 18:31,NotPrmUser,NotPrmUser,
141403,27167,54876,178,0,N,1,N,N,CP_Drtn,TT_Task,DT_FixedDUR2,TK_NotStart,DES1060,30% Review,,0,0,80,0,0,0,80,0,0,0,,,,2024-03-06 08:00,2024-03-19 16:00,,2024-03-06 08:00,2024-03-19 16:00,2024-03-06 08:00,2024-03-19 16:00,2024-03-06 08:00,2024-03-19 16:00,2024-03-06 08:00,2024-03-19 16:00,,PT_Normal,,,,,jtNHS8c8xECbMKYBVTSRvg,XzBddu96IUapIBO5Pd6ebA,,,Y,0,0,,,2023-02-08 18:30,2023-02-08 18:31,NotPrmUser,NotPrmUser,
141404,27167,54876,178,0,N,1,N,N,CP_Drtn,TT_Task,DT_FixedDUR2,TK_NotStart,DES1070,60% Submittal,,600,0,560,0,0,0,560,0,0,0,,,,2024-07-03 08:00,2024-10-08 16:00,,2024-03-20 08:00,2024-06-25 16:00,2024-03-20 08:00,2024-06-25 16:00,2024-03-20 08:00,2024-06-25 16:00,2024-07-03 08:00,2024-10-08 16:00,,PT_Normal,,,,,UF4XA33j3UG0V/HwbCRI4w,Qau1D8kjTkWv2hJDVswQug,,,N,0,0,,,2023-02-08 18:30,2023-02-08 18:31,NotPrmUser,NotPrmUser,
141405,27167,54876,178,0,N,1,N,N,CP_Drtn,TT_Task,DT_FixedDUR2,TK_NotStart,DES1080,60% Review,,600,0,80,0,0,0,80,0,0,0,,,,2024-10-09 08:00,2024-10-22 16:00,,2024-06-26 08:00,2024-07-09 16:00,2024-06-26 08:00,2024-07-09 16:00,2024-06-26 08:00,2024-07-09 16:00,2024-10-09 08:00,2024-10-22 16:00,,PT_Normal,,,,,qC3/IaVaVEOrlAYLLsL+Nw,g2RD7RALbkaShSLqCypA0w,,,N,0,0,,,2023-02-08 18:30,2023-02-08 18:31,NotPrmUser,NotPrmUser,
141406,27167,54876,178,0,N,1,N,N,CP_Drtn,TT_Task,DT_FixedDUR2,TK_NotStart,DES1090,90% Submittal,,600,0,360,0,0,0,360,0,0,0,,,,2024-10-23 08:00,2024-12-24 16:00,,2024-07-10 08:00,2024-09-10 16:00,2024-07-10 08:00,2024-09-10 16:00,2024-07-10 08:00,2024-09-10 16:00,2024-10-23 08:00,2024-12-24 16:00,,PT_Normal,,,,,84JO9heJH06lEqVLpWHO7w,hiFVSMschkqYqQI3+Yri0Q,,,N,0,0,,,2023-02-08 18:30,2023-02-08 18:31,NotPrmUser,NotPrmUser,
141407,27167,54876,178,0,N,1,N,N,CP_Drtn,TT_Task,DT_FixedDUR2,TK_NotStart,DES1100,90% Review,,600,0,80,0,0,0,80,0,0,0,,,,2024-12-25 08:00,2025-01-07 16:00,,2024-09-11 08:00,2024-09-24 16:00,2024-09-11 08:00,2024-09-24 16:00,2024-09-11 08:00,2024-09-24 16:00,2024-12-25 08:00,2025-01-07 16:00,,PT_Normal,,,,,VdSzsxoR8kaKHfnfkFY98w,GGQdPhMoj0KTzeZhUkoVpw,,,N,0,0,,,2023-02-08 18:30,2023-02-08 18:31,NotPrmUser,NotPrmUser,
141408,27167,54876,178,0,N,1,N,N,CP_Drtn,TT_Task,DT_FixedDUR2,TK_NotStart,DES1110,100% Submittal,,680,0,160,0,0,0,160,0,0,0,,,,2025-01-22 08:00,2025-02-18 16:00,,2024-09-25 08:00,2024-10-22 16:00,2024-09-25 08:00,2024-10-22 16:00,2024-09-25 08:00,2024-10-22 16:00,2025-01-22 08:00,2025-02-18 16:00,,PT_Normal,,,,,GmTz5Ug8H0eswwXAHpdN2Q,rJFihRP2QUGjkXJAHNxWpQ,,,N,0,0,,,2023-02-08 18:30,2023-02-08 18:31,NotPrmUser,NotPrmUser,
141409,27167,54876,178,0,N,1,N,N,CP_Drtn,TT_Task,DT_FixedDUR2,TK_NotStart,DES1120,Issue IFC Design Package,,0,0,80,0,0,0,80,0,0,0,,,,2025-02-19 08:00,2025-03-04 16:00,,2025-02-19 08:00,2025-03-04 16:00,2025-02-19 08:00,2025-03-04 16:00,2025-02-19 08:00,2025-03-04 16:00,2025-02-19 08:00,2025-03-04 16:00,,PT_Normal,,,,,yX8ZPybRZEGolvqXpUvV9g,8OR0hyM3Q0ys6dAogFMSdw,,,Y,0,0,,,2023-02-08 18:30,2023-02-08 18:31,NotPrmUser,NotPrmUser,
141410,27167,54877,178,0,N,1,N,N,CP_Drtn,TT_Task,DT_FixedDUR2,TK_NotStart,DES1130,60% Submittal,,840,0,480,0,0,0,480,0,0,0,,,,2024-07-17 08:00,2024-10-08 16:00,,2024-02-21 08:00,2024-05-14 16:00,2024-02-21 08:00,2024-05-14 16:00,2024-02-21 08:00,2024-05-14 16:00,2024-07-17 08:00,2024-10-08 16:00,,PT_Normal,,,,,SYz5B2sEw0aWwFTwOG75sQ,uNBfeub2BkWONNif2FdK9w,,,N,0,0,,,2023-02-08 18:30,2023-02-08 18:31,NotPrmUser,NotPrmUser,
141411,27167,54877,178,0,N,1,N,N,CP_Drtn,TT_Task,DT_FixedDUR2,TK_NotStart,DES1140,60% Review,,920,0,80,0,0,0,80,0,0,0,,,,2024-10-23 08:00,2024-11-05 16:00,,2024-05-15 08:00,2024-05-28 16:00,2024-05-15 08:00,2024-05-28 16:00,2024-05-15 08:00,2024-05-28 16:00,2024-10-23 08:00,2024-11-05 16:00,,PT_Normal,,,,,0mAjJaaopkS2iTR5J7+3Ug,GrRFXfh5ok2IhLJLXmm6xQ,,,N,0,0,,,2023-02-08 18:30,2023-02-08 18:31,NotPrmUser,NotPrmUser,
141412,27167,54877,178,0,N,1,N,N,CP_Drtn,TT_Task,DT_FixedDUR2,TK_NotStart,DES1150,90% Submittal,,1120,0,400,0,0,0,400,0,0,0,,,,2024-12-11 08:00,2025-02-18 16:00,,2024-05-29 08:00,2024-08-06 16:00,2024-05-29 08:00,2024-08-06 16:00,2024-05-29 08:00,2024-08-06 16:00,2024-12-11 08:00,2025-02-18 16:00,,PT_Normal,,,,,C6IX4m5mV0eTo3gV7qYZyw,0zqo84YmS0KI2RYAjp1t/w,,,N,0,0,,,2023-02-08 18:30,2023-02-08 18:31,NotPrmUser,NotPrmUser,
141413,27167,54877,178,0,N,1,N,N,CP_Drtn,TT_Task,DT_FixedDUR2,TK_NotStart,DES1160,90% Review,,1120,0,80,0,0,0,80,0,0,0,,,,2025-02-19 08:00,2025-03-04 16:00,,2024-08-07 08:00,2024-08-20 16:00,2024-08-07 08:00,2024-08-20 16:00,2024-08-07 08:00,2024-08-20 16:00,2025-02-19 08:00,2025-03-04 16:00,,PT_Normal,,,,,LX1dU3yX80CgsUY0eea/VQ,FdeptOmy3kmDLEn0Mdwnow,,,N,0,0,,,2023-02-08 18:30,2023-02-08 18:31,NotPrmUser,NotPrmUser,
141414,27167,54877,178,0,N,1,N,N,CP_Drtn,TT_Task,DT_FixedDUR2,TK_NotStart,DES1170,100% Submittal,,1120,880,160,0,0,0,160,0,0,0,,,,2025-03-05 08:00,2025-04-01 16:00,,2024-08-21 08:00,2024-09-17 16:00,2024-08-21 08:00,2024-09-17 16:00,2024-08-21 08:00,2024-09-17 16:00,2025-03-05 08:00,2025-04-01 16:00,,PT_Normal,,,,,jjdFdbSRq0+Dyw5sJvdzyQ,lHbM2TLebE6SbXMgrte5fQ,,,N,0,0,,,2023-02-08 18:30,2023-02-08 18:31,NotPrmUser,NotPrmUser,
141415,27167,54877,178,0,N,1,N,N,CP_Drtn,TT_Task,DT_FixedDUR2,TK_NotStart,DES1180,Issue IFC Design Package,,240,0,80,0,0,0,80,0,0,0,,,,2025-04-02 08:00,2025-04-15 16:00,,2025-02-19 08:00,2025-03-04 16:00,2025-02-19 08:00,2025-03-04 16:00,2025-02-19 08:00,2025-03-04 16:00,2025-04-02 08:00,2025-04-15 16:00,,PT_Normal,,,,,eBF8fC9JE06QQJzKTo3fmA,Vwd6oW7gl0yJDU7xJcHzIw,,,N,0,0,,,2023-02-08 18:30,2023-02-08 18:31,NotPrmUser,NotPrmUser,
141416,27167,54878,178,0,N,1,N,N,CP_Drtn,TT_Task,DT_FixedDUR2,TK_NotStart,DES1190,Issue Services Worksheet to Design Firms,,760,0,160,0,0,0,160,0,0,0,,,,2024-05-08 08:00,2024-06-04 16:00,,2023-12-26 08:00,2024-01-23 16:00,2023-12-26 08:00,2024-01-23 16:00,2023-12-26 08:00,2024-01-23 16:00,2024-05-08 08:00,2024-06-04 16:00,,PT_Normal,,,,,PdTljSmnBUOGlScdHFr27A,s/u/44UAu0S/qklbCyPR5g,,,N,0,0,,,2023-02-08 18:30,2023-02-08 18:31,NotPrmUser,NotPrmUser,
141417,27167,54879,178,0,N,1,N,N,CP_Drtn,TT_Task,DT_FixedDUR2,TK_NotStart,DES1220,SED Design,,6376,0,240,0,0,0,240,0,0,0,,,,2026-12-11 08:00,2027-01-21 16:00,,2023-11-15 08:00,2024-01-02 16:00,2023-11-15 08:00,2024-01-02 16:00,2023-11-15 08:00,2024-01-02 16:00,2026-12-11 08:00,2027-01-21 16:00,,PT_Normal,,,,,pnN2zzSVn0iMzA6EDhG+dQ,O7ws6tX4/EqzREs0esaSig,,,N,0,0,,,2023-02-08 18:30,2023-02-08 18:31,NotPrmUser,NotPrmUser,
141418,27167,54879,178,0,N,1,N,N,CP_Drtn,TT_Task,DT_FixedDUR2,TK_NotStart,DES1230,Issue IFC Design Package,,6376,5320,160,0,0,0,160,0,0,0,,,,2027-01-22 08:00,2027-02-18 16:00,,2024-01-03 08:00,2024-01-30 16:00,2024-01-03 08:00,2024-01-30 16:00,2024-01-03 08:00,2024-01-30 16:00,2027-01-22 08:00,2027-02-18 16:00,,PT_Normal,,,,,Z6qIdCK2w0GFKZV3kZXqSA,JeyfatTok0+eu1RIlm5yhA,,,N,0,0,,,2023-02-08 18:30,2023-02-08 18:31,NotPrmUser,NotPrmUser,
141419,27167,54881,178,0,N,1,N,N,CP_Drtn,TT_Task,DT_FixedDUR2,TK_NotStart,PRO1000,Civil BOM - Long Lead @ 30%,,680,0,120,0,0,0,120,0,0,0,,,,2024-07-17 08:00,2024-08-06 16:00,,2024-03-20 08:00,2024-04-09 16:00,2024-03-20 08:00,2024-04-09 16:00,2024-03-20 08:00,2024-04-09 16:00,2024-07-17 08:00,2024-08-06 16:00,,PT_Normal,,,,,vqexrr4NkUCU+UHFqcbOcA,rKWkBRYf4EGeLOTfUUk0Qg,,,N,0,0,,,2023-02-08 18:30,2023-02-08 18:31,NotPrmUser,NotPrmUser,
141420,27167,54881,178,0,N,1,N,N,CP_Drtn,TT_Task,DT_FixedDUR2,TK_NotStart,PRO1020,Electrical BOM - Long Lead @ 60%,,920,0,120,0,0,0,120,0,0,0,,,,2024-11-06 08:00,2024-11-26 16:00,,2024-05-29 08:00,2024-06-18 16:00,2024-05-29 08:00,2024-06-18 16:00,2024-05-29 08:00,2024-06-18 16:00,2024-11-06 08:00,2024-11-26 16:00,,PT_Normal,,,,,yrBIKz/myUaMdSWE6zayWg,ZOgoCtMi9kmoFUAVi1uUCA,,,N,0,0,,,2023-02-08 18:30,2023-02-08 18:31,NotPrmUser,NotPrmUser,
141421,27167,54881,178,0,N,1,N,N,CP_Drtn,TT_Task,DT_FixedDUR2,TK_NotStart,PRO1040,BOM - Short Lead @ 60%,,600,0,120,0,0,0,120,0,0,0,,,,2025-01-08 08:00,2025-01-28 16:00,,2024-09-25 08:00,2024-10-15 16:00,2024-09-25 08:00,2024-10-15 16:00,2024-09-25 08:00,2024-10-15 16:00,2025-01-08 08:00,2025-01-28 16:00,,PT_Normal,,,,,SrTMECffekeanXsN/aFYRg,q8O959BFhkapAcwmS72oiQ,,,N,0,0,,,2023-02-08 18:30,2023-02-08 18:31,NotPrmUser,NotPrmUser,
141422,27167,54882,178,0,N,1,N,N,CP_Drtn,TT_Task,DT_FixedDUR2,TK_NotStart,PER1000,CalTrans Permit,,0,0,2000,0,0,0,2000,0,0,0,,,,2024-03-20 08:00,2025-03-04 16:00,,2024-03-20 08:00,2025-03-04 16:00,2024-03-20 08:00,2025-03-04 16:00,2024-03-20 08:00,2025-03-04 16:00,2024-03-20 08:00,2025-03-04 16:00,,PT_Normal,,,,,jAN3x4e60kudHQITBIEIpw,qZ6+x0tyPk+nV1DRreMOLQ,,,Y,0,0,,,2023-02-08 18:30,2023-02-08 18:31,NotPrmUser,NotPrmUser,
141423,27167,54882,178,0,N,1,N,N,CP_Drtn,TT_Task,DT_FixedDUR2,TK_NotStart,PER1010,City & County Permits,,1200,1200,800,0,0,0,800,0,0,0,,,,2024-10-16 08:00,2025-03-04 16:00,,2024-03-20 08:00,2024-08-06 16:00,2024-03-20 08:00,2024-08-06 16:00,2024-03-20 08:00,2024-08-06 16:00,2024-10-16 08:00,2025-03-04 16:00,,PT_Normal,,,,,O21cPq0UUEOoID4go+2CQQ,Bg6h7cJe6kOL+nHb78w1UQ,,,N,0,0,,,2023-02-08 18:30,2023-02-08 18:31,NotPrmUser,NotPrmUser,
141424,27167,54882,178,0,N,1,N,N,CP_Drtn,TT_Task,DT_FixedDUR2,TK_NotStart,PER1020,Other Permit (TBD),,1200,1200,800,0,0,0,800,0,0,0,,,,2024-10-16 08:00,2025-03-04 16:00,,2024-03-20 08:00,2024-08-06 16:00,2024-03-20 08:00,2024-08-06 16:00,2024-03-20 08:00,2024-08-06 16:00,2024-10-16 08:00,2025-03-04 16:00,,PT_Normal,,,,,/DpMsahOFU+ssYoUoQy7rA,3ahwDRmzIEK6mPKMxbp2mw,,,N,0,0,,,2023-02-08 18:30,2023-02-08 18:31,NotPrmUser,NotPrmUser,
141425,27167,54883,178,0,N,1,N,N,CP_Drtn,TT_Task,DT_FixedDUR2,TK_NotStart,PUB1000,Public Affairs / Community Outreach,,6216,6216,800,0,0,0,800,0,0,0,,,,2027-06-18 08:00,2027-11-04 16:00,,2024-06-26 08:00,2024-11-12 16:00,2024-06-26 08:00,2024-11-12 16:00,2024-06-26 08:00,2024-11-12 16:00,2027-06-18 08:00,2027-11-04 16:00,,PT_Normal,,,,,yJS2w7vv/0K+Goj2TnT65A,bM2pfK0GCU+qd2tjTH/K9g,,,N,0,0,,,2023-02-08 18:30,2023-02-08 18:31,NotPrmUser,NotPrmUser,
141426,27167,54884,178,0,N,1,N,N,CP_Drtn,TT_Task,DT_FixedDUR2,TK_NotStart,LAN1000,Land Rights and Easement Acquisition,,880,880,1200,0,0,0,1200,0,0,0,,,,2024-08-07 08:00,2025-03-04 16:00,,2024-03-06 08:00,2024-10-01 16:00,2024-03-06 08:00,2024-10-01 16:00,2024-03-06 08:00,2024-10-01 16:00,2024-08-07 08:00,2025-03-04 16:00,,PT_Normal,,,,,Ya1V7ydU8EKfIZSwelOx9g,xKn2O/qSdEeDo5pVHLTfHQ,,,N,0,0,,,2023-02-08 18:30,2023-02-08 18:31,NotPrmUser,NotPrmUser,
141427,27167,54884,178,0,N,1,N,N,CP_Drtn,TT_Task,DT_FixedDUR2,TK_NotStart,LAN1010,Tribal Land Rights,,880,880,1200,0,0,0,1200,0,0,0,,,,2024-08-07 08:00,2025-03-04 16:00,,2024-03-06 08:00,2024-10-01 16:00,2024-03-06 08:00,2024-10-01 16:00,2024-03-06 08:00,2024-10-01 16:00,2024-08-07 08:00,2025-03-04 16:00,,PT_Normal,,,,,IuTzhswwyUaBixjIdomXQQ,1xuYqB+vvk277hZqLLW6yA,,,N,0,0,,,2023-02-08 18:30,2023-02-08 18:31,NotPrmUser,NotPrmUser,
141428,27167,54884,178,0,N,1,N,N,CP_Drtn,TT_Task,DT_FixedDUR2,TK_NotStart,LAN1020,Laydown Yards,,880,880,1200,0,0,0,1200,0,0,0,,,,2024-08-07 08:00,2025-03-04 16:00,,2024-03-06 08:00,2024-10-01 16:00,2024-03-06 08:00,2024-10-01 16:00,2024-03-06 08:00,2024-10-01 16:00,2024-08-07 08:00,2025-03-04 16:00,,PT_Normal,,,,,g57RlKSrbUeZhcy0dC1NLA,fNqOOw0ZAEKImzJ0kC20ug,,,N,0,0,,,2023-02-08 18:30,2023-02-08 18:31,NotPrmUser,NotPrmUser,
141429,27167,54885,178,0,N,1,N,N,CP_Drtn,TT_Task,DT_FixedDUR2,TK_NotStart,ENV1000,10% Environmental Submittal,,880,0,200,0,0,0,200,0,0,0,,,,2024-04-24 08:00,2024-05-28 16:00,,2023-11-15 08:00,2023-12-21 16:00,2023-11-15 08:00,2023-12-21 16:00,2023-11-15 08:00,2023-12-21 16:00,2024-04-24 08:00,2024-05-28 16:00,,PT_Normal,,,,,zh+HIElum0WUIYAsV7sByw,VxGMrxm1bUiE/1KEEosOeQ,,,N,0,0,,,2023-02-08 18:30,2023-02-08 18:31,NotPrmUser,NotPrmUser,
141430,27167,54885,178,0,N,1,N,N,CP_Drtn,TT_Task,DT_FixedDUR2,TK_NotStart,ENV1010,10% Environmental Review,,880,0,120,0,0,0,120,0,0,0,,,,2024-05-29 08:00,2024-06-18 16:00,,2023-12-26 08:00,2024-01-16 16:00,2023-12-26 08:00,2024-01-16 16:00,2023-12-26 08:00,2024-01-16 16:00,2024-05-29 08:00,2024-06-18 16:00,,PT_Normal,,,,,a2+Kfxq60E+nORvAYhkqRg,ZzFrGGXb1UqEqF0c9zqemA,,,N,0,0,,,2023-02-08 18:30,2023-02-08 18:31,NotPrmUser,NotPrmUser,
141431,27167,54885,178,0,N,1,N,N,CP_Drtn,TT_Task,DT_FixedDUR2,TK_NotStart,ENV1020,30% Environmental Submittal,,840,0,200,0,0,0,200,0,0,0,,,,2024-10-09 08:00,2024-11-12 16:00,,2024-05-15 08:00,2024-06-18 16:00,2024-05-15 08:00,2024-06-18 16:00,2024-05-15 08:00,2024-06-18 16:00,2024-10-09 08:00,2024-11-12 16:00,,PT_Normal,,,,,voa7xazY4UK97TJXtdoWVw,YNHqD/2TE0S9GlFFz+MDsw,,,N,0,0,,,2023-02-08 18:30,2023-02-08 18:31,NotPrmUser,NotPrmUser,
141432,27167,54885,178,0,N,1,N,N,CP_Drtn,TT_Task,DT_FixedDUR2,TK_NotStart,ENV1030,30% Environmental Review,,840,0,120,0,0,0,120,0,0,0,,,,2024-11-13 08:00,2024-12-03 16:00,,2024-06-19 08:00,2024-07-09 16:00,2024-06-19 08:00,2024-07-09 16:00,2024-06-19 08:00,2024-07-09 16:00,2024-11-13 08:00,2024-12-03 16:00,,PT_Normal,,,,,2bpPKhKZxkucm9pNKbpjFQ,DuPJHOPE90qnKcbDTKYiJQ,,,N,0,0,,,2023-02-08 18:30,2023-02-08 18:31,NotPrmUser,NotPrmUser,
141433,27167,54885,178,0,N,1,N,N,CP_Drtn,TT_Task,DT_FixedDUR2,TK_NotStart,ENV1040,60% Environmental Submittal,,840,0,280,0,0,0,280,0,0,0,,,,2024-12-04 08:00,2025-01-21 16:00,,2024-07-10 08:00,2024-08-27 16:00,2024-07-10 08:00,2024-08-27 16:00,2024-07-10 08:00,2024-08-27 16:00,2024-12-04 08:00,2025-01-21 16:00,,PT_Normal,,,,,vs4dZ5Vn3U+dBGEuBnNBZw,ZxZQxjzP30itxLKLsU6bEQ,,,N,0,0,,,2023-02-08 18:30,2023-02-08 18:31,NotPrmUser,NotPrmUser,
141434,27167,54885,178,0,N,1,N,N,CP_Drtn,TT_Task,DT_FixedDUR2,TK_NotStart,ENV1050,60% Environmental Release,,960,960,120,0,0,0,120,0,0,0,,,,2025-02-12 08:00,2025-03-04 16:00,,2024-08-28 08:00,2024-09-17 16:00,2024-08-28 08:00,2024-09-17 16:00,2024-08-28 08:00,2024-09-17 16:00,2025-02-12 08:00,2025-03-04 16:00,,PT_Normal,,,,,5q9GXwXLyk6Tdm96XjC6wA,Ym3BfLrg3UK5i/IC6asFXw,,,N,0,0,,,2023-02-08 18:30,2023-02-08 18:31,NotPrmUser,NotPrmUser,
141435,27167,54885,178,0,N,1,N,N,CP_Drtn,TT_Task,DT_FixedDUR2,TK_NotStart,ENV1060,BIA NEPA Submittal,,840,0,80,0,0,0,80,0,0,0,,,,2025-01-22 08:00,2025-02-04 16:00,,2024-08-28 08:00,2024-09-10 16:00,2024-08-28 08:00,2024-09-10 16:00,2024-08-28 08:00,2024-09-10 16:00,2025-01-22 08:00,2025-02-04 16:00,,PT_Normal,,,,,PvfpCTTs5kCQWjqBDBxa/g,aBDYn0E5TkiuliF2BTvT2w,,,N,0,0,,,2023-02-08 18:30,2023-02-08 18:31,NotPrmUser,NotPrmUser,
141436,27167,54885,178,0,N,1,N,N,CP_Drtn,TT_Task,DT_FixedDUR2,TK_NotStart,ENV1070,"BIA Received (Add 250 days, if needed)",,840,840,160,0,0,0,160,0,0,0,,,,2025-02-05 08:00,2025-03-04 16:00,,2024-09-11 08:00,2024-10-08 16:00,2024-09-11 08:00,2024-10-08 16:00,2024-09-11 08:00,2024-10-08 16:00,2025-02-05 08:00,2025-03-04 16:00,,PT_Normal,,,,,Obv5054s5kOecYWnCO2q9A,Z8qq++mqSUC0l6P5yVEC1A,,,N,0,0,,,2023-02-08 18:30,2023-02-08 18:31,NotPrmUser,NotPrmUser,
141437,27167,54875,178,0,N,1,N,N,CP_Drtn,TT_Task,DT_FixedDUR2,TK_NotStart,DES1010,Seismic / Geotech Submittal,,880,0,200,0,0,0,200,0,0,0,,,,2024-06-19 08:00,2024-07-23 16:00,,2024-01-17 08:00,2024-02-20 16:00,2024-01-17 08:00,2024-02-20 16:00,2024-01-17 08:00,2024-02-20 16:00,2024-06-19 08:00,2024-07-23 16:00,,PT_Normal,,,,,x+wEoDwoAUCA2SGuFoEsWA,Ek2HSB1NRESj9idDmwnRsg,,,N,0,0,,,2023-02-08 18:30,2023-02-08 18:31,NotPrmUser,NotPrmUser,
141438,27167,54875,178,0,N,1,N,N,CP_Drtn,TT_Task,DT_FixedDUR2,TK_NotStart,DES1020,Potholing Submittal,,880,40,200,0,0,0,200,0,0,0,,,,2024-07-24 08:00,2024-08-27 16:00,,2024-02-21 08:00,2024-03-26 16:00,2024-02-21 08:00,2024-03-26 16:00,2024-02-21 08:00,2024-03-26 16:00,2024-07-24 08:00,2024-08-27 16:00,,PT_Normal,,,,,NqkGTtaOukW4RFf84axnJA,JbuCWLba7kOW6dmqa+5Icw,,,N,0,0,,,2023-02-08 18:30,2023-02-08 18:31,NotPrmUser,NotPrmUser,
141439,27167,54875,178,0,N,1,N,N,CP_Drtn,TT_Task,DT_FixedDUR2,TK_NotStart,DES1030,Potholing Release /Perform Potholing,,840,0,240,0,0,0,240,0,0,0,,,,2024-08-28 08:00,2024-10-08 16:00,,2024-04-03 08:00,2024-05-14 16:00,2024-04-03 08:00,2024-05-14 16:00,2024-04-03 08:00,2024-05-14 16:00,2024-08-28 08:00,2024-10-08 16:00,,PT_Normal,,,,,vHFamk+Z6E28+RvGKKKhzA,tZBQuGIR+U+OsAos5oIcbQ,,,N,0,0,,,2023-02-08 18:30,2023-02-08 18:31,NotPrmUser,NotPrmUser,
141440,27167,54887,178,0,N,1,N,N,CP_Drtn,TT_Task,DT_FixedDUR2,TK_NotStart,PCON100,Initiate Performance Partnering Process @ 60%,,1000,0,40,0,0,0,40,0,0,0,,,,2025-01-01 08:00,2025-01-07 16:00,,2024-07-10 08:00,2024-07-16 16:00,2024-07-10 08:00,2024-07-16 16:00,2024-07-10 08:00,2024-07-16 16:00,2025-01-01 08:00,2025-01-07 16:00,,PT_Normal,,,,,x3hAsgk5x0i5TS5ZT2AoCQ,fG4qK0NkkUOeBu12gFtJgw,,,N,0,0,,,2023-02-08 18:30,2023-02-08 18:31,NotPrmUser,NotPrmUser,
141441,27167,54887,178,0,N,1,N,N,CP_Drtn,TT_Task,DT_FixedDUR2,TK_NotStart,PCON110,Receive Estimate from Contractor,,1000,0,120,0,0,0,120,0,0,0,,,,2025-01-08 08:00,2025-01-28 16:00,,2024-07-17 08:00,2024-08-06 16:00,2024-07-17 08:00,2024-08-06 16:00,2024-07-17 08:00,2024-08-06 16:00,2025-01-08 08:00,2025-01-28 16:00,,PT_Normal,,,,,c2Mz0fNPWE6r0JC0cGjodg,sv4p8AWU8Eavfn1IrYZXLA,,,N,0,0,,,2023-02-08 18:30,2023-02-08 18:31,NotPrmUser,NotPrmUser,
141442,27167,54887,178,0,N,1,N,N,CP_Drtn,TT_Task,DT_FixedDUR2,TK_NotStart,PCON120,Bid Estimate Negotiations,,1000,0,80,0,0,0,80,0,0,0,,,,2025-01-29 08:00,2025-02-11 16:00,,2024-08-07 08:00,2024-08-20 16:00,2024-08-07 08:00,2024-08-20 16:00,2024-08-07 08:00,2024-08-20 16:00,2025-01-29 08:00,2025-02-11 16:00,,PT_Normal,,,,,cZ4yimMeY0Gjo91Q3FhYRA,+wYjZw16PEivqEj377Q0Pw,,,N,0,0,,,2023-02-08 18:30,2023-02-08 18:31,NotPrmUser,NotPrmUser,
141443,27167,54887,178,0,N,1,N,N,CP_Drtn,TT_Task,DT_FixedDUR2,TK_NotStart,PCON130,Revise Estimate based on IFC,,1000,0,40,0,0,0,40,0,0,0,,,,2025-02-12 08:00,2025-02-18 16:00,,2024-08-21 08:00,2024-08-27 16:00,2024-08-21 08:00,2024-08-27 16:00,2024-08-21 08:00,2024-08-27 16:00,2025-02-12 08:00,2025-02-18 16:00,,PT_Normal,,,,,99mkZJ/9aUeW9KyNaBmIyw,xzRlOOvC3kmjOsgGk1WAGA,,,N,0,0,,,2023-02-08 18:30,2023-02-08 18:31,NotPrmUser,NotPrmUser,
141444,27167,54887,178,0,N,1,N,N,CP_Drtn,TT_Task,DT_FixedDUR2,TK_NotStart,PCON140,Issue Release,,1000,1000,80,0,0,0,80,0,0,0,,,,2025-02-19 08:00,2025-03-04 16:00,,2024-08-28 08:00,2024-09-10 16:00,2024-08-28 08:00,2024-09-10 16:00,2024-08-28 08:00,2024-09-10 16:00,2025-02-19 08:00,2025-03-04 16:00,,PT_Normal,,,,,Z1uWJIyIakqjYKrBVi9IVw,iEcLs4etSUqhuRV2PMEQYQ,,,N,0,0,,,2023-02-08 18:30,2023-02-08 18:31,NotPrmUser,NotPrmUser,
141445,27167,54889,178,0,N,1,N,N,CP_Drtn,TT_Task,DT_FixedDUR2,TK_NotStart,PCON200,Civil Pre-Construction Meeting (Civil Construction Ready),,0,0,40,0,0,0,40,0,0,0,,,,2025-03-05 08:00,2025-03-11 16:00,,2025-03-05 08:00,2025-03-11 16:00,2025-03-05 08:00,2025-03-11 16:00,2025-03-05 08:00,2025-03-11 16:00,2025-03-05 08:00,2025-03-11 16:00,,PT_Normal,,,,,si5+jhKAUUWuPd3PdApqHQ,+Q4mT2/HqEWIrXHSJaPY5A,,,Y,0,0,,,2023-02-08 18:30,2023-02-08 18:31,NotPrmUser,NotPrmUser,
141446,27167,54889,178,0,N,1,N,N,CP_Drtn,TT_Task,DT_FixedDUR2,TK_NotStart,PCON210,Electrical - Pre-Construction Meeting (Electical Construction Ready),,240,0,40,0,0,0,40,0,0,0,,,,2025-04-16 08:00,2025-04-22 16:00,,2025-03-05 08:00,2025-03-11 16:00,2025-03-05 08:00,2025-03-11 16:00,2025-03-05 08:00,2025-03-11 16:00,2025-04-16 08:00,2025-04-22 16:00,,PT_Normal,,,,,vRUL2ApTh0ChR0q08lS0Pw,LlZKxneex0qwet59+CXibQ,,,N,0,0,,,2023-02-08 18:30,2023-02-08 18:31,NotPrmUser,NotPrmUser,
141447,27167,54888,178,0,N,1,N,N,CP_Drtn,TT_Task,DT_FixedDUR2,TK_NotStart,PCON150,Initiate Performance Partnering Process @ 60%,,1480,0,40,0,0,0,40,0,0,0,,,,2025-02-12 08:00,2025-02-18 16:00,,2024-05-29 08:00,2024-06-04 16:00,2024-05-29 08:00,2024-06-04 16:00,2024-05-29 08:00,2024-06-04 16:00,2025-02-12 08:00,2025-02-18 16:00,,PT_Normal,,,,,xQGMGFWbHUOD/cjwf/fyHA,Iw4UFObVBkaeVtRX5+PeNA,,,N,0,0,,,2023-02-08 18:30,2023-02-08 18:31,NotPrmUser,NotPrmUser,
141448,27167,54888,178,0,N,1,N,N,CP_Drtn,TT_Task,DT_FixedDUR2,TK_NotStart,PCON160,Receive Estimate from Contractor,,1480,0,120,0,0,0,120,0,0,0,,,,2025-02-19 08:00,2025-03-11 16:00,,2024-06-05 08:00,2024-06-25 16:00,2024-06-05 08:00,2024-06-25 16:00,2024-06-05 08:00,2024-06-25 16:00,2025-02-19 08:00,2025-03-11 16:00,,PT_Normal,,,,,J/qmaG/IWku/5PLg0cW1Zw,YhHyq+Ikh02AyezKfJ0x8w,,,N,0,0,,,2023-02-08 18:30,2023-02-08 18:31,NotPrmUser,NotPrmUser,
141449,27167,54888,178,0,N,1,N,N,CP_Drtn,TT_Task,DT_FixedDUR2,TK_NotStart,PCON170,Bid Estimate Negotiations,,1480,0,80,0,0,0,80,0,0,0,,,,2025-03-12 08:00,2025-03-25 16:00,,2024-06-26 08:00,2024-07-09 16:00,2024-06-26 08:00,2024-07-09 16:00,2024-06-26 08:00,2024-07-09 16:00,2025-03-12 08:00,2025-03-25 16:00,,PT_Normal,,,,,1YifWQtqbk6NalC9kZyvrQ,Fnkyq1rh9kWtMAnrwU0NOQ,,,N,0,0,,,2023-02-08 18:30,2023-02-08 18:31,NotPrmUser,NotPrmUser,
141450,27167,54888,178,0,N,1,N,N,CP_Drtn,TT_Task,DT_FixedDUR2,TK_NotStart,PCON180,Revise Estimate based on IFC,,1480,0,40,0,0,0,40,0,0,0,,,,2025-03-26 08:00,2025-04-01 16:00,,2024-07-10 08:00,2024-07-16 16:00,2024-07-10 08:00,2024-07-16 16:00,2024-07-10 08:00,2024-07-16 16:00,2025-03-26 08:00,2025-04-01 16:00,,PT_Normal,,,,,jEOZmeR9QkWzx83OZilrwg,b7V/m9kHoUillEvPqpQBPg,,,N,0,0,,,2023-02-08 18:30,2023-02-08 18:31,NotPrmUser,NotPrmUser,
141451,27167,54888,178,0,N,1,N,N,CP_Drtn,TT_Task,DT_FixedDUR2,TK_NotStart,PCON190,Issue Release,,1480,1240,80,0,0,0,80,0,0,0,,,,2025-04-02 08:00,2025-04-15 16:00,,2024-07-17 08:00,2024-07-30 16:00,2024-07-17 08:00,2024-07-30 16:00,2024-07-17 08:00,2024-07-30 16:00,2025-04-02 08:00,2025-04-15 16:00,,PT_Normal,,,,,AzeGPCjKlU6F8prVGuvVxw,v5wgLNT0SUuO8P4HoZd7xQ,,,N,0,0,,,2023-02-08 18:30,2023-02-08 18:31,NotPrmUser,NotPrmUser,
141452,27167,54881,178,0,N,1,N,N,CP_Drtn,TT_Task,DT_FixedDUR2,TK_NotStart,PRO1010,Order Long Lead Civil Material,,680,680,1200,0,0,0,1200,0,0,0,,,,2024-08-07 08:00,2025-03-04 16:00,,2024-04-10 08:00,2024-11-05 16:00,2024-04-10 08:00,2024-11-05 16:00,2024-04-10 08:00,2024-11-05 16:00,2024-08-07 08:00,2025-03-04 16:00,,PT_Normal,,,,,UjtqIczJXUuJJA84WWea/Q,CuOLmiyIL0KcOtxEopx4gQ,,,N,0,0,,,2023-02-08 18:30,2023-02-08 18:31,NotPrmUser,NotPrmUser,
141453,27167,54881,178,0,N,1,N,N,CP_Drtn,TT_Task,DT_FixedDUR2,TK_NotStart,PRO1050,Order Short Lead Materials,,600,600,200,0,0,0,200,0,0,0,,,,2025-01-29 08:00,2025-03-04 16:00,,2024-10-16 08:00,2024-11-19 16:00,2024-10-16 08:00,2024-11-19 16:00,2024-10-16 08:00,2024-11-19 16:00,2025-01-29 08:00,2025-03-04 16:00,,PT_Normal,,,,,wiDxcaLFDEepHxK9/CqjLg,FHKoWT1CQEiTrHb+fld9KQ,,,N,0,0,,,2023-02-08 18:30,2023-02-08 18:31,NotPrmUser,NotPrmUser,
141454,27167,54881,178,0,N,1,N,N,CP_Drtn,TT_Task,DT_FixedDUR2,TK_NotStart,PRO1030,Order Long Lead Electrical Materials,,920,680,800,0,0,0,800,0,0,0,,,,2024-11-27 08:00,2025-04-15 16:00,,2024-06-19 08:00,2024-11-05 16:00,2024-06-19 08:00,2024-11-05 16:00,2024-06-19 08:00,2024-11-05 16:00,2024-11-27 08:00,2025-04-15 16:00,,PT_Normal,,,,,e3GYie67HEqufCgP5MROLA,Z2DACvQcxUy7LpWeuTzYvw,,,N,0,0,,,2023-02-08 18:30,2023-02-08 18:31,NotPrmUser,NotPrmUser,
141455,27167,54891,178,0,N,1,N,N,CP_Drtn,TT_Task,DT_FixedDUR2,TK_NotStart,CON2000,Civil Construction (Trenching 300 feet/day),7730,0,0,3520,0,7208,7208,3520,0,0,0,,,,2025-03-12 08:00,2026-11-17 16:00,,2025-03-12 08:00,2026-11-17 16:00,2025-03-12 08:00,2026-11-17 16:00,2025-03-12 08:00,2026-11-17 16:00,2025-03-12 08:00,2026-11-17 16:00,,PT_Normal,,,,,RKEQOEY8o0iIu5kPi3GRaw,QkgmYzABuUmGCftOfvM4Xg,,,Y,0,0,,,2023-02-08 18:30,2023-02-08 19:11,NotPrmUser,NotPrmUser,
141456,27167,54892,178,0,N,1,N,N,CP_Drtn,TT_Task,DT_FixedDUR2,TK_NotStart,CON3000,Electrical Construction,7786,0,0,3280,0,1640,1640,3280,0,0,0,,,,2025-04-23 08:00,2026-11-17 16:00,,2025-04-23 08:00,2026-11-17 16:00,2025-04-23 08:00,2026-11-17 16:00,2025-04-23 08:00,2026-11-17 16:00,2025-04-23 08:00,2026-11-17 16:00,,PT_Normal,,,,,zO+3mw3qD0aHBtqEpFGyZA,0KwOrXB/HU2q3CntyCmzoA,,,Y,0,0,,,2023-02-08 18:30,2023-02-08 19:35,NotPrmUser,NotPrmUser,
141457,27167,54893,178,0,N,1,N,N,CP_Drtn,TT_Task,DT_FixedDUR2,TK_NotStart,CON4000,Service Cutover,,1056,0,2920,0,0,0,2920,0,0,0,,,,2025-12-26 08:00,2027-05-20 16:00,,2025-06-25 08:00,2026-11-17 16:00,2025-06-25 08:00,2026-11-17 16:00,2025-06-25 08:00,2026-11-17 16:00,2025-12-26 08:00,2027-05-20 16:00,,PT_Normal,,,,,RrEnHBzPG0+t9yT0kWICIA,7kzd5aPnpE6cvP0O8xCDQQ,,,N,0,0,,,2023-02-08 18:30,2023-02-08 18:31,NotPrmUser,NotPrmUser,
141458,27167,54894,178,0,N,1,N,N,CP_Drtn,TT_Task,DT_FixedDUR2,TK_NotStart,CON5000,Scada Construction,,1056,0,520,0,0,0,520,0,0,0,,,,2027-02-19 08:00,2027-05-20 16:00,,2026-08-19 08:00,2026-11-17 16:00,2026-08-19 08:00,2026-11-17 16:00,2026-08-19 08:00,2026-11-17 16:00,2027-02-19 08:00,2027-05-20 16:00,,PT_Normal,,,,,S8oqvy2v5kW4yzYixRzNgQ,WGOsXtceHUGrWfqk6/xtWw,,,N,0,0,,,2023-02-08 18:30,2023-02-08 18:31,NotPrmUser,NotPrmUser,
141459,27167,54895,178,0,N,1,N,N,CP_Drtn,TT_Task,DT_FixedDUR2,TK_NotStart,CON6000,Substation Construction,,1056,0,520,0,0,0,520,0,0,0,,,,2027-02-19 08:00,2027-05-20 16:00,,2026-08-19 08:00,2026-11-17 16:00,2026-08-19 08:00,2026-11-17 16:00,2026-08-19 08:00,2026-11-17 16:00,2027-02-19 08:00,2027-05-20 16:00,,PT_Normal,,,,,mAbjsld8WE24gfugYUVTgw,79MObB8FY0K5YPNdZc3XqA,,,N,0,0,,,2023-02-08 18:30,2023-02-08 18:31,NotPrmUser,NotPrmUser,
141460,27167,54896,178,0,N,1,N,N,CP_Drtn,TT_Task,DT_FixedDrtn,TK_NotStart,CON7000,Overhead RFS (1000 feet per day),7785,0,0,1056,0,1056,1056,1056,0,0,0,,,,2026-11-18 08:00,2027-05-20 16:00,,2026-11-18 08:00,2027-05-20 16:00,2026-11-18 08:00,2027-05-20 16:00,2026-11-18 08:00,2027-05-20 16:00,2026-11-18 08:00,2027-05-20 16:00,,PT_Normal,,,,,Z1arjsWJwkyNPsIGoC1cLA,NofHhchBRUefKPj2T+QSNw,,,Y,0,0,,,2023-02-08 18:30,2023-02-08 18:31,NotPrmUser,NotPrmUser,
141461,27167,54890,178,0,N,1,N,N,CP_Drtn,TT_Task,DT_FixedDUR2,TK_NotStart,ISD1000,ISD - Energize - Put in service,,2008,2008,8,0,0,0,8,25,0,25,,,,2027-11-04 08:00,2027-11-04 16:00,,2026-11-18 08:00,2026-11-18 16:00,2026-11-18 08:00,2026-11-18 16:00,2026-11-18 08:00,2026-11-18 16:00,2027-11-04 08:00,2027-11-04 16:00,,PT_Normal,,,,,xDSV1W6uLka4u4eN1LCs2Q,CpfuvpiX40iRXnjrOVAneA,,,N,0,0,,,2023-02-08 18:30,2023-02-08 18:31,NotPrmUser,NotPrmUser,
141462,27167,54873,178,0,N,1,N,N,CP_Drtn,TT_Task,DT_FixedDUR2,TK_NotStart,SUR1000,Survey and LiDAR,7385,0,0,400,0,9182,9182,400,0,0,0,,,,2023-09-06 08:00,2023-11-14 16:00,,2023-09-06 08:00,2023-11-14 16:00,2023-09-06 08:00,2023-11-14 16:00,2023-09-06 08:00,2023-11-14 16:00,2023-09-06 08:00,2023-11-14 16:00,,PT_Normal,,,,,NycvfhCOlEe1X1XR4PFiXw,u3RCSCnYQkS9x7uz04ZR4g,,,Y,0,0,,,2023-02-08 18:30,2023-02-08 18:31,NotPrmUser,NotPrmUser,
141463,27167,54878,178,0,N,1,N,N,CP_Drtn,TT_Task,DT_FixedDUR2,TK_NotStart,DES1200,Receive Services Worksheet and Cable Info from Design Firms,,760,0,160,0,0,0,160,0,0,0,,,,2024-06-05 08:00,2024-07-02 16:00,,2024-01-24 08:00,2024-02-20 16:00,2024-01-24 08:00,2024-02-20 16:00,2024-01-24 08:00,2024-02-20 16:00,2024-06-05 08:00,2024-07-02 16:00,,PT_Normal,,,,,hw3QCfnfnEapQMraErdJ5g,qTidw+38lE+y1Xr/fy2Twg,,,N,0,0,,,2023-02-08 18:30,2023-02-08 18:31,NotPrmUser,NotPrmUser,
141464,27167,54878,178,0,N,1,N,N,CP_Drtn,TT_Task,DT_FixedDUR2,TK_NotStart,DES1210,Issue to Trench Inspectors,,2376,1320,80,0,0,0,80,0,0,0,,,,2025-12-12 08:00,2025-12-25 16:00,,2024-10-23 08:00,2024-11-05 16:00,2024-10-23 08:00,2024-11-05 16:00,2024-10-23 08:00,2024-11-05 16:00,2025-12-12 08:00,2025-12-25 16:00,,PT_Normal,,,,,Q7WfnWFQyUOPVDP0DJrZ4w,p5avHU6b00+JB7BCRJOI5g,,,N,0,0,,,2023-02-08 18:30,2023-02-08 18:31,NotPrmUser,NotPrmUser,
141465,27167,54890,178,0,N,1,N,N,CP_Drtn,TT_FinMile,DT_FixedDrtn,TK_NotStart,CON1020,Construction Complete,,0,0,0,0,0,0,0,0,0,0,,,,2027-05-20 16:00,2027-05-20 16:00,,2027-05-20 16:00,2027-05-20 16:00,2027-05-20 16:00,2027-05-20 16:00,2027-05-20 16:00,2027-05-20 16:00,2027-05-20 16:00,2027-05-20 16:00,,PT_Normal,,,,,RGvTiaWox0W1ZnSpuseHqg,E57L1hktw0G0E8OqSWXzxQ,,,Y,0,0,,,2023-02-08 18:30,2023-02-08 18:31,NotPrmUser,NotPrmUser,
141466,27167,54890,178,0,N,1,N,N,CP_Drtn,TT_Mile,DT_FixedDrtn,TK_NotStart,CON1010,Construction Start,,5536,5536,0,0,0,0,0,0,0,0,,,,2027-11-04 16:00,2027-11-04 16:00,,2025-03-12 08:00,2025-03-12 08:00,2025-03-12 08:00,2025-03-12 08:00,2025-03-12 08:00,2025-03-12 08:00,2027-11-04 16:00,2027-11-04 16:00,,PT_Normal,,,,,QEReRjASpEOat/Jwuq9JZw,QhnLpg3OwEeUfNHE9nnvnw,,,N,0,0,,,2023-02-08 18:30,2023-02-08 18:31,NotPrmUser,NotPrmUser,
141467,27167,54899,178,0,N,1,N,N,CP_Drtn,TT_Task,DT_FixedDUR2,TK_NotStart,CLO1020,GIS/As-Built and Records Complete,,480,480,480,0,0,0,480,0,0,0,,,,2027-08-13 08:00,2027-11-04 16:00,,2027-05-21 08:00,2027-08-12 16:00,2027-05-21 08:00,2027-08-12 16:00,2027-05-21 08:00,2027-08-12 16:00,2027-08-13 08:00,2027-11-04 16:00,,PT_Normal,,,,,wjAb+e7+PkCLQFzm0uc7kg,Mkx5IDgIqEGgiGbK11+9xg,,,N,0,0,,,2023-02-08 18:30,2023-02-08 18:31,NotPrmUser,NotPrmUser,
141468,27167,54900,178,0,N,1,N,N,CP_Drtn,TT_Task,DT_FixedDUR2,TK_NotStart,CLO1030,"PO's complete, Work Order Reconcilled and Closed",,0,0,960,0,0,0,960,0,0,0,,,,2027-05-21 08:00,2027-11-04 16:00,,2027-05-21 08:00,2027-11-04 16:00,2027-05-21 08:00,2027-11-04 16:00,2027-05-21 08:00,2027-11-04 16:00,2027-05-21 08:00,2027-11-04 16:00,,PT_Normal,,,,,sGS7bnuSkUWX1i9QBxoRLQ,BCa8sWC5Uk6w4bFUt7WNQA,,,Y,0,0,,,2023-02-08 18:30,2023-02-08 18:31,NotPrmUser,NotPrmUser,
141469,27167,54898,178,0,N,1,N,N,CP_Drtn,TT_FinMile,DT_FixedDrtn,TK_NotStart,CLO1010,Project Complete,,0,0,0,0,0,0,0,0,0,0,,,,2027-11-04 16:00,2027-11-04 16:00,,2027-11-04 16:00,2027-11-04 16:00,2027-11-04 16:00,2027-11-04 16:00,2027-11-04 16:00,2027-11-04 16:00,2027-11-04 16:00,2027-11-04 16:00,,PT_Normal,,,,,HB1BTFTNmE2WNveW9/+CEw,KYJoeSPY6EuwrEX1mRyT5w,,,Y,0,0,,,2023-02-08 18:30,2023-02-08 18:31,NotPrmUser,NotPrmUser,
141470,27167,54874,178,0,N,1,N,N,CP_Drtn,TT_LOE,DT_FixedDUR2,TK_NotStart,DES1000,Design Summary,7257,4096,0,2680,0,16233,16233,2680,0,0,0,,,,2023-11-15 08:00,2027-02-18 16:00,,2023-11-15 08:00,2025-03-04 16:00,2023-11-15 08:00,2025-03-04 16:00,2023-11-15 08:00,2025-03-04 16:00,2023-11-15 08:00,2027-02-18 16:00,,PT_Normal,,,,,gzbhppmEEEib2kPgqNqK2g,DSr4Ba5UK0uyaAEMU+wwnw,,,Y,0,0,,,2023-02-08 18:30,2023-02-08 18:31,NotPrmUser,NotPrmUser,
141471,27167,54890,178,0,N,1,N,N,CP_Drtn,TT_LOE,DT_FixedDUR2,TK_NotStart,CON1000,Construction Summary,7385,0,0,4576,0,9972,9972,4576,25,0,25,,,,2027-05-20 16:00,2027-05-20 16:00,,2025-03-12 08:00,2027-05-20 16:00,2025-03-12 08:00,2027-05-20 16:00,2025-03-12 08:00,2027-05-20 16:00,2027-05-20 16:00,2027-05-20 16:00,,PT_Normal,,,,,Te+IsN5j+kyJxAvC+kDxnA,IDoTPM6b9E2oLdVp1ABqlQ,,,N,0,0,,,2023-02-08 18:30,2023-02-08 18:31,NotPrmUser,NotPrmUser,
141472,27167,54898,178,0,N,1,N,N,CP_Drtn,TT_LOE,DT_FixedDUR2,TK_NotStart,CLO1000,Close Out Summary,7385,0,0,960,0,4482,4482,960,0,0,0,,,,2027-05-21 08:00,2027-11-04 16:00,,2027-05-21 08:00,2027-11-04 16:00,2027-05-21 08:00,2027-11-04 16:00,2027-05-21 08:00,2027-11-04 16:00,2027-05-21 08:00,2027-11-04 16:00,,PT_Normal,,,,,+fBSaDEloUS4UEhJigrHdQ,7DQu/xfsu0aPb06CqcnMqg,,,Y,0,0,,,2023-02-08 18:30,2023-02-08 18:31,NotPrmUser,NotPrmUser,
141473,27167,54871,178,0,N,1,N,N,CP_Drtn,TT_LOE,DT_FixedDUR2,TK_NotStart,PCON1000,Pre-Construction Summary,,0,0,3296,0,0,0,3296,0,0,0,,,,2023-08-07 08:00,2025-03-11 16:00,,2023-08-07 08:00,2025-03-11 16:00,2023-08-07 08:00,2025-03-11 16:00,2023-08-07 08:00,2025-03-11 16:00,2023-08-07 08:00,2025-03-11 16:00,,PT_Normal,,,,,W1+x0oDXv0q5Zed6rLS0yg,Utiz+Ypr1EC9SoLjtsxCiA,,,Y,0,0,,,2023-02-08 18:30,2023-02-08 18:31,NotPrmUser,NotPrmUser,
141474,27168,54902,178,0,N,1,N,N,CP_Drtn,TT_Task,DT_FixedDUR2,TK_NotStart,SCO1000,Bundling / Phasing of circuits for project sequencing,,0,0,80,0,0,0,80,0,0,0,2023-08-14 00:00,,,2023-08-14 08:00,2023-08-25 16:00,,2023-08-14 08:00,2023-08-25 16:00,2023-08-14 08:00,2023-08-25 16:00,2023-08-14 08:00,2023-08-25 16:00,2023-08-14 08:00,2023-08-25 16:00,CS_MSOA,PT_Normal,,,,,3tHIqWDqZEO8WZF4Bz3DBg,6cSnjb9EqEmRuVWytX6wOQ,,,Y,0,0,,,2023-02-08 18:30,2023-02-08 18:31,NotPrmUser,NotPrmUser,
141475,27168,54902,178,0,N,1,N,N,CP_Drtn,TT_Task,DT_FixedDUR2,TK_NotStart,SCO1010,Constructability Review,,0,0,40,0,0,0,40,0,0,0,,,,2023-08-28 08:00,2023-09-01 16:00,,2023-08-28 08:00,2023-09-01 16:00,2023-08-28 08:00,2023-09-01 16:00,2023-08-28 08:00,2023-09-01 16:00,2023-08-28 08:00,2023-09-01 16:00,,PT_Normal,,,,,7iR0Lf/1YUmGleak2BCgbQ,qvI2VxYElUa0N8Wx2ErcRQ,,,Y,0,0,,,2023-02-08 18:30,2023-02-08 18:31,NotPrmUser,NotPrmUser,
141476,27168,54902,178,0,N,1,N,N,CP_Drtn,TT_Task,DT_FixedDUR2,TK_NotStart,SCO1020,SDG&E Review,,0,0,16,0,0,0,16,0,0,0,,,,2023-09-04 08:00,2023-09-05 16:00,,2023-09-04 08:00,2023-09-05 16:00,2023-09-04 08:00,2023-09-05 16:00,2023-09-04 08:00,2023-09-05 16:00,2023-09-04 08:00,2023-09-05 16:00,,PT_Normal,,,,,JVQORNGd30y+yBCJTUe2wQ,3qcvMjiH0EC0pd5Ihh/6fw,,,Y,0,0,,,2023-02-08 18:30,2023-02-08 18:31,NotPrmUser,NotPrmUser,
141477,27168,54903,178,0,N,1,N,N,CP_Drtn,TT_Task,DT_FixedDUR2,TK_NotStart,PLA1000,Workorder Setup,,0,0,40,0,0,0,40,0,0,0,,,,2023-09-06 08:00,2023-09-12 16:00,,2023-09-06 08:00,2023-09-12 16:00,2023-09-06 08:00,2023-09-12 16:00,2023-09-06 08:00,2023-09-12 16:00,2023-09-06 08:00,2023-09-12 16:00,,PT_Normal,,,,,FfVKAHKVnEqudRzMTkpaug,bBMPuA5In0Wbfykg/OgbOA,,,Y,0,0,,,2023-02-08 18:30,2023-02-08 18:31,NotPrmUser,NotPrmUser,
141478,27168,54906,178,0,N,1,N,N,CP_Drtn,TT_Task,DT_FixedDUR2,TK_NotStart,DES1040,10% Submittal,,0,0,200,0,0,0,200,0,0,0,,,,2023-11-22 08:00,2024-01-02 16:00,,2023-11-22 08:00,2024-01-02 16:00,2023-11-22 08:00,2024-01-02 16:00,2023-11-22 08:00,2024-01-02 16:00,2023-11-22 08:00,2024-01-02 16:00,,PT_Normal,,,,,sA9yG9l/1U+0t/I/ve8lbg,WNHI/IBq1UqeG5JJ7dyS4A,,,Y,0,0,,,2023-02-08 18:30,2023-02-08 18:31,NotPrmUser,NotPrmUser,
141479,27168,54906,178,0,N,1,N,N,CP_Drtn,TT_Task,DT_FixedDUR2,TK_NotStart,DES1050,30% Submittal,,0,0,400,0,0,0,400,0,0,0,,,,2024-01-03 08:00,2024-03-12 16:00,,2024-01-03 08:00,2024-03-12 16:00,2024-01-03 08:00,2024-03-12 16:00,2024-01-03 08:00,2024-03-12 16:00,2024-01-03 08:00,2024-03-12 16:00,,PT_Normal,,,,,4kDOxiyCF0eIBFkLzByNtg,Hvp0DR8Sg02CbxFNoV2sAw,,,Y,0,0,,,2023-02-08 18:30,2023-02-08 18:31,NotPrmUser,NotPrmUser,
141480,27168,54906,178,0,N,1,N,N,CP_Drtn,TT_Task,DT_FixedDUR2,TK_NotStart,DES1060,30% Review,,0,0,80,0,0,0,80,0,0,0,,,,2024-03-13 08:00,2024-03-26 16:00,,2024-03-13 08:00,2024-03-26 16:00,2024-03-13 08:00,2024-03-26 16:00,2024-03-13 08:00,2024-03-26 16:00,2024-03-13 08:00,2024-03-26 16:00,,PT_Normal,,,,,mYaUlHkgJE21aBcYq9yObw,DfgmaoIkEUOuBMpU4Xy7VQ,,,Y,0,0,,,2023-02-08 18:30,2023-02-08 18:31,NotPrmUser,NotPrmUser,
141481,27168,54906,178,0,N,1,N,N,CP_Drtn,TT_Task,DT_FixedDUR2,TK_NotStart,DES1070,60% Submittal,,600,0,560,0,0,0,560,0,0,0,,,,2024-07-10 08:00,2024-10-15 16:00,,2024-03-27 08:00,2024-07-02 16:00,2024-03-27 08:00,2024-07-02 16:00,2024-03-27 08:00,2024-07-02 16:00,2024-07-10 08:00,2024-10-15 16:00,,PT_Normal,,,,,WOq7zJKBHEuLLTh76tmd1A,96N1gUFoZUGM/7op03OWKQ,,,N,0,0,,,2023-02-08 18:30,2023-02-08 18:31,NotPrmUser,NotPrmUser,
141482,27168,54906,178,0,N,1,N,N,CP_Drtn,TT_Task,DT_FixedDUR2,TK_NotStart,DES1080,60% Review,,600,0,80,0,0,0,80,0,0,0,,,,2024-10-16 08:00,2024-10-29 16:00,,2024-07-03 08:00,2024-07-16 16:00,2024-07-03 08:00,2024-07-16 16:00,2024-07-03 08:00,2024-07-16 16:00,2024-10-16 08:00,2024-10-29 16:00,,PT_Normal,,,,,vInK4LWbWE+vKIfYz32YlQ,sdrTkNaclEWjiqAqfWHgow,,,N,0,0,,,2023-02-08 18:30,2023-02-08 18:31,NotPrmUser,NotPrmUser,
141483,27168,54906,178,0,N,1,N,N,CP_Drtn,TT_Task,DT_FixedDUR2,TK_NotStart,DES1090,90% Submittal,,600,0,360,0,0,0,360,0,0,0,,,,2024-10-30 08:00,2024-12-31 16:00,,2024-07-17 08:00,2024-09-17 16:00,2024-07-17 08:00,2024-09-17 16:00,2024-07-17 08:00,2024-09-17 16:00,2024-10-30 08:00,2024-12-31 16:00,,PT_Normal,,,,,9slIhlBri0OdsZZVCVPqdg,VR4zbaWEsE6+NsBbVqA61w,,,N,0,0,,,2023-02-08 18:30,2023-02-08 18:31,NotPrmUser,NotPrmUser,
141484,27168,54906,178,0,N,1,N,N,CP_Drtn,TT_Task,DT_FixedDUR2,TK_NotStart,DES1100,90% Review,,600,0,80,0,0,0,80,0,0,0,,,,2025-01-01 08:00,2025-01-14 16:00,,2024-09-18 08:00,2024-10-01 16:00,2024-09-18 08:00,2024-10-01 16:00,2024-09-18 08:00,2024-10-01 16:00,2025-01-01 08:00,2025-01-14 16:00,,PT_Normal,,,,,nvSCuBs3DUyA6SrLNUaOMQ,QT/82RbUzUSQGRgzRimv1g,,,N,0,0,,,2023-02-08 18:30,2023-02-08 18:31,NotPrmUser,NotPrmUser,
141485,27168,54906,178,0,N,1,N,N,CP_Drtn,TT_Task,DT_FixedDUR2,TK_NotStart,DES1110,100% Submittal,,680,0,160,0,0,0,160,0,0,0,,,,2025-01-29 08:00,2025-02-25 16:00,,2024-10-02 08:00,2024-10-29 16:00,2024-10-02 08:00,2024-10-29 16:00,2024-10-02 08:00,2024-10-29 16:00,2025-01-29 08:00,2025-02-25 16:00,,PT_Normal,,,,,v0w5URT88UWX3bc7uIFvGg,CgGEdhQ1a0i1Hg6WwBfhzQ,,,N,0,0,,,2023-02-08 18:30,2023-02-08 18:31,NotPrmUser,NotPrmUser,
141486,27168,54906,178,0,N,1,N,N,CP_Drtn,TT_Task,DT_FixedDUR2,TK_NotStart,DES1120,Issue IFC Design Package,,0,0,80,0,0,0,80,0,0,0,,,,2025-02-26 08:00,2025-03-11 16:00,,2025-02-26 08:00,2025-03-11 16:00,2025-02-26 08:00,2025-03-11 16:00,2025-02-26 08:00,2025-03-11 16:00,2025-02-26 08:00,2025-03-11 16:00,,PT_Normal,,,,,KKJ7mbornkKz18DHqUqD1w,DoU/JGsV2keZW2X0jDxtSQ,,,Y,0,0,,,2023-02-08 18:30,2023-02-08 18:31,NotPrmUser,NotPrmUser,
141487,27168,54907,178,0,N,1,N,N,CP_Drtn,TT_Task,DT_FixedDUR2,TK_NotStart,DES1130,60% Submittal,,840,0,480,0,0,0,480,0,0,0,,,,2024-07-24 08:00,2024-10-15 16:00,,2024-02-28 08:00,2024-05-21 16:00,2024-02-28 08:00,2024-05-21 16:00,2024-02-28 08:00,2024-05-21 16:00,2024-07-24 08:00,2024-10-15 16:00,,PT_Normal,,,,,irpHwL/0Ck6XBY4xzcheOQ,tH35inEfe0CQyc41sABhbA,,,N,0,0,,,2023-02-08 18:30,2023-02-08 18:31,NotPrmUser,NotPrmUser,
141488,27168,54907,178,0,N,1,N,N,CP_Drtn,TT_Task,DT_FixedDUR2,TK_NotStart,DES1140,60% Review,,920,0,80,0,0,0,80,0,0,0,,,,2024-10-30 08:00,2024-11-12 16:00,,2024-05-22 08:00,2024-06-04 16:00,2024-05-22 08:00,2024-06-04 16:00,2024-05-22 08:00,2024-06-04 16:00,2024-10-30 08:00,2024-11-12 16:00,,PT_Normal,,,,,odugTPia10qUU46XobEaaw,J7UxeWB1iE2krTOA/gfBTw,,,N,0,0,,,2023-02-08 18:30,2023-02-08 18:31,NotPrmUser,NotPrmUser,
141489,27168,54907,178,0,N,1,N,N,CP_Drtn,TT_Task,DT_FixedDUR2,TK_NotStart,DES1150,90% Submittal,,1120,0,400,0,0,0,400,0,0,0,,,,2024-12-18 08:00,2025-02-25 16:00,,2024-06-05 08:00,2024-08-13 16:00,2024-06-05 08:00,2024-08-13 16:00,2024-06-05 08:00,2024-08-13 16:00,2024-12-18 08:00,2025-02-25 16:00,,PT_Normal,,,,,iVnRKxAIGUKl2fsHR7kuCA,PPbvalAV1EqFFbTk1Dk9xg,,,N,0,0,,,2023-02-08 18:30,2023-02-08 18:31,NotPrmUser,NotPrmUser,
141490,27168,54907,178,0,N,1,N,N,CP_Drtn,TT_Task,DT_FixedDUR2,TK_NotStart,DES1160,90% Review,,1120,0,80,0,0,0,80,0,0,0,,,,2025-02-26 08:00,2025-03-11 16:00,,2024-08-14 08:00,2024-08-27 16:00,2024-08-14 08:00,2024-08-27 16:00,2024-08-14 08:00,2024-08-27 16:00,2025-02-26 08:00,2025-03-11 16:00,,PT_Normal,,,,,i9k+zOWiXk28IdGgXsCsaA,l5O/sutsEkOBsklyPJ/lLw,,,N,0,0,,,2023-02-08 18:30,2023-02-08 18:31,NotPrmUser,NotPrmUser,
141491,27168,54907,178,0,N,1,N,N,CP_Drtn,TT_Task,DT_FixedDUR2,TK_NotStart,DES1170,100% Submittal,,1120,880,160,0,0,0,160,0,0,0,,,,2025-03-12 08:00,2025-04-08 16:00,,2024-08-28 08:00,2024-09-24 16:00,2024-08-28 08:00,2024-09-24 16:00,2024-08-28 08:00,2024-09-24 16:00,2025-03-12 08:00,2025-04-08 16:00,,PT_Normal,,,,,G4Oa9sCFNUeXlGuHN5SLKQ,gT5Adr2GAk2Vc/yiwqQTpQ,,,N,0,0,,,2023-02-08 18:30,2023-02-08 18:31,NotPrmUser,NotPrmUser,
141492,27168,54907,178,0,N,1,N,N,CP_Drtn,TT_Task,DT_FixedDUR2,TK_NotStart,DES1180,Issue IFC Design Package,,240,0,80,0,0,0,80,0,0,0,,,,2025-04-09 08:00,2025-04-22 16:00,,2025-02-26 08:00,2025-03-11 16:00,2025-02-26 08:00,2025-03-11 16:00,2025-02-26 08:00,2025-03-11 16:00,2025-04-09 08:00,2025-04-22 16:00,,PT_Normal,,,,,Re25sm4qdUivuRfFAVX33w,yO6Lnet4iUGktUoKsJ3r2Q,,,N,0,0,,,2023-02-08 18:30,2023-02-08 18:31,NotPrmUser,NotPrmUser,
141493,27168,54908,178,0,N,1,N,N,CP_Drtn,TT_Task,DT_FixedDUR2,TK_NotStart,DES1190,Issue Services Worksheet to Design Firms,,760,0,160,0,0,0,160,0,0,0,,,,2024-05-15 08:00,2024-06-11 16:00,,2024-01-03 08:00,2024-01-30 16:00,2024-01-03 08:00,2024-01-30 16:00,2024-01-03 08:00,2024-01-30 16:00,2024-05-15 08:00,2024-06-11 16:00,,PT_Normal,,,,,FjUhmyNQUUmTs7MBV5ajtw,Y2Vsvn+Zk0CXUP7ponAWVg,,,N,0,0,,,2023-02-08 18:30,2023-02-08 18:31,NotPrmUser,NotPrmUser,
141494,27168,54909,178,0,N,1,N,N,CP_Drtn,TT_Task,DT_FixedDUR2,TK_NotStart,DES1220,SED Design,,6376,0,240,0,0,0,240,0,0,0,,,,2026-12-18 08:00,2027-01-28 16:00,,2023-11-22 08:00,2024-01-09 16:00,2023-11-22 08:00,2024-01-09 16:00,2023-11-22 08:00,2024-01-09 16:00,2026-12-18 08:00,2027-01-28 16:00,,PT_Normal,,,,,Tf/JzaQg0ku/ooyuNhBCsw,oKG8LsVsqUKUieX56HUC2A,,,N,0,0,,,2023-02-08 18:30,2023-02-08 18:31,NotPrmUser,NotPrmUser,
141495,27168,54909,178,0,N,1,N,N,CP_Drtn,TT_Task,DT_FixedDUR2,TK_NotStart,DES1230,Issue IFC Design Package,,6376,5320,160,0,0,0,160,0,0,0,,,,2027-01-29 08:00,2027-02-25 16:00,,2024-01-10 08:00,2024-02-06 16:00,2024-01-10 08:00,2024-02-06 16:00,2024-01-10 08:00,2024-02-06 16:00,2027-01-29 08:00,2027-02-25 16:00,,PT_Normal,,,,,4eJw+nLil0qRB763gWXyJQ,9VNbK2/68EWoyMHoOtxUCQ,,,N,0,0,,,2023-02-08 18:30,2023-02-08 18:31,NotPrmUser,NotPrmUser,
141496,27168,54911,178,0,N,1,N,N,CP_Drtn,TT_Task,DT_FixedDUR2,TK_NotStart,PRO1000,Civil BOM - Long Lead @ 30%,,680,0,120,0,0,0,120,0,0,0,,,,2024-07-24 08:00,2024-08-13 16:00,,2024-03-27 08:00,2024-04-16 16:00,2024-03-27 08:00,2024-04-16 16:00,2024-03-27 08:00,2024-04-16 16:00,2024-07-24 08:00,2024-08-13 16:00,,PT_Normal,,,,,DMzDIwROXEO44eqwgKSGFg,hZd2FHck70q3Yw/XGhQi+Q,,,N,0,0,,,2023-02-08 18:30,2023-02-08 18:31,NotPrmUser,NotPrmUser,
141497,27168,54911,178,0,N,1,N,N,CP_Drtn,TT_Task,DT_FixedDUR2,TK_NotStart,PRO1020,Electrical BOM - Long Lead @ 60%,,920,0,120,0,0,0,120,0,0,0,,,,2024-11-13 08:00,2024-12-03 16:00,,2024-06-05 08:00,2024-06-25 16:00,2024-06-05 08:00,2024-06-25 16:00,2024-06-05 08:00,2024-06-25 16:00,2024-11-13 08:00,2024-12-03 16:00,,PT_Normal,,,,,wvmjy7TLmU6evtV6eN4Ibw,BXl8rAzczU+t8H3TSqlhRA,,,N,0,0,,,2023-02-08 18:30,2023-02-08 18:31,NotPrmUser,NotPrmUser,
141498,27168,54911,178,0,N,1,N,N,CP_Drtn,TT_Task,DT_FixedDUR2,TK_NotStart,PRO1040,BOM - Short Lead @ 60%,,600,0,120,0,0,0,120,0,0,0,,,,2025-01-15 08:00,2025-02-04 16:00,,2024-10-02 08:00,2024-10-22 16:00,2024-10-02 08:00,2024-10-22 16:00,2024-10-02 08:00,2024-10-22 16:00,2025-01-15 08:00,2025-02-04 16:00,,PT_Normal,,,,,tz89MBPDj0qNwe1IL9HVyQ,kq9kJWPlrEed2IOm/rXIKQ,,,N,0,0,,,2023-02-08 18:30,2023-02-08 18:31,NotPrmUser,NotPrmUser,
141499,27168,54912,178,0,N,1,N,N,CP_Drtn,TT_Task,DT_FixedDUR2,TK_NotStart,PER1000,CalTrans Permit,,0,0,2000,0,0,0,2000,0,0,0,,,,2024-03-27 08:00,2025-03-11 16:00,,2024-03-27 08:00,2025-03-11 16:00,2024-03-27 08:00,2025-03-11 16:00,2024-03-27 08:00,2025-03-11 16:00,2024-03-27 08:00,2025-03-11 16:00,,PT_Normal,,,,,RoVfl5Fp70u+iiB60nXFnw,ijVk5f5az0OERCWAxnXiaw,,,Y,0,0,,,2023-02-08 18:30,2023-02-08 18:31,NotPrmUser,NotPrmUser,
141500,27168,54912,178,0,N,1,N,N,CP_Drtn,TT_Task,DT_FixedDUR2,TK_NotStart,PER1010,City & County Permits,,1200,1200,800,0,0,0,800,0,0,0,,,,2024-10-23 08:00,2025-03-11 16:00,,2024-03-27 08:00,2024-08-13 16:00,2024-03-27 08:00,2024-08-13 16:00,2024-03-27 08:00,2024-08-13 16:00,2024-10-23 08:00,2025-03-11 16:00,,PT_Normal,,,,,mGm9cTnPXU+Zm8fb3Ajtkw,xjo17AEjjEi5woVuqy4Q7A,,,N,0,0,,,2023-02-08 18:30,2023-02-08 18:31,NotPrmUser,NotPrmUser,
141501,27168,54912,178,0,N,1,N,N,CP_Drtn,TT_Task,DT_FixedDUR2,TK_NotStart,PER1020,Other Permit (TBD),,1200,1200,800,0,0,0,800,0,0,0,,,,2024-10-23 08:00,2025-03-11 16:00,,2024-03-27 08:00,2024-08-13 16:00,2024-03-27 08:00,2024-08-13 16:00,2024-03-27 08:00,2024-08-13 16:00,2024-10-23 08:00,2025-03-11 16:00,,PT_Normal,,,,,R0GUljnoBEGGhe/LRbUWuQ,pIOeBRp/pkq8QjgJ5pBkxg,,,N,0,0,,,2023-02-08 18:30,2023-02-08 18:31,NotPrmUser,NotPrmUser,
141502,27168,54913,178,0,N,1,N,N,CP_Drtn,TT_Task,DT_FixedDUR2,TK_NotStart,PUB1000,Public Affairs / Community Outreach,,6216,6216,800,0,0,0,800,0,0,0,,,,2027-06-25 08:00,2027-11-11 16:00,,2024-07-03 08:00,2024-11-19 16:00,2024-07-03 08:00,2024-11-19 16:00,2024-07-03 08:00,2024-11-19 16:00,2027-06-25 08:00,2027-11-11 16:00,,PT_Normal,,,,,XGPdDUCzFEOT2KzcpdLN2A,pgv1mkVOTUCQ7foAo0nNeA,,,N,0,0,,,2023-02-08 18:30,2023-02-08 18:31,NotPrmUser,NotPrmUser,
141503,27168,54914,178,0,N,1,N,N,CP_Drtn,TT_Task,DT_FixedDUR2,TK_NotStart,LAN1000,Land Rights and Easement Acquisition,,880,880,1200,0,0,0,1200,0,0,0,,,,2024-08-14 08:00,2025-03-11 16:00,,2024-03-13 08:00,2024-10-08 16:00,2024-03-13 08:00,2024-10-08 16:00,2024-03-13 08:00,2024-10-08 16:00,2024-08-14 08:00,2025-03-11 16:00,,PT_Normal,,,,,yOWo/jBO3UmjsYXYTUJ6kA,InnC5rlEg0CA5VZqOa41GA,,,N,0,0,,,2023-02-08 18:30,2023-02-08 18:31,NotPrmUser,NotPrmUser,
141504,27168,54914,178,0,N,1,N,N,CP_Drtn,TT_Task,DT_FixedDUR2,TK_NotStart,LAN1010,Tribal Land Rights,,880,880,1200,0,0,0,1200,0,0,0,,,,2024-08-14 08:00,2025-03-11 16:00,,2024-03-13 08:00,2024-10-08 16:00,2024-03-13 08:00,2024-10-08 16:00,2024-03-13 08:00,2024-10-08 16:00,2024-08-14 08:00,2025-03-11 16:00,,PT_Normal,,,,,NL+XUla4QkuFcvYZCXCzbw,YeV8M8Ep3kGp7xfWRy9gfw,,,N,0,0,,,2023-02-08 18:30,2023-02-08 18:31,NotPrmUser,NotPrmUser,
141505,27168,54914,178,0,N,1,N,N,CP_Drtn,TT_Task,DT_FixedDUR2,TK_NotStart,LAN1020,Laydown Yards,,880,880,1200,0,0,0,1200,0,0,0,,,,2024-08-14 08:00,2025-03-11 16:00,,2024-03-13 08:00,2024-10-08 16:00,2024-03-13 08:00,2024-10-08 16:00,2024-03-13 08:00,2024-10-08 16:00,2024-08-14 08:00,2025-03-11 16:00,,PT_Normal,,,,,pW1DSX0zBkGrvsrez8SInQ,/UyPBh1og0mvrFSd/ZDh6w,,,N,0,0,,,2023-02-08 18:30,2023-02-08 18:31,NotPrmUser,NotPrmUser,
141506,27168,54915,178,0,N,1,N,N,CP_Drtn,TT_Task,DT_FixedDUR2,TK_NotStart,ENV1000,10% Environmental Submittal,,880,0,200,0,0,0,200,0,0,0,,,,2024-05-01 08:00,2024-06-04 16:00,,2023-11-22 08:00,2024-01-02 16:00,2023-11-22 08:00,2024-01-02 16:00,2023-11-22 08:00,2024-01-02 16:00,2024-05-01 08:00,2024-06-04 16:00,,PT_Normal,,,,,9fVFfDVZ4UWzi9vlpoVASQ,/d0a5rvTGEi7AJmg+9uUZw,,,N,0,0,,,2023-02-08 18:30,2023-02-08 18:31,NotPrmUser,NotPrmUser,
141507,27168,54915,178,0,N,1,N,N,CP_Drtn,TT_Task,DT_FixedDUR2,TK_NotStart,ENV1010,10% Environmental Review,,880,0,120,0,0,0,120,0,0,0,,,,2024-06-05 08:00,2024-06-25 16:00,,2024-01-03 08:00,2024-01-23 16:00,2024-01-03 08:00,2024-01-23 16:00,2024-01-03 08:00,2024-01-23 16:00,2024-06-05 08:00,2024-06-25 16:00,,PT_Normal,,,,,e6poMecXQU2BLNN0Rv1UpA,9g9puisG0UC79SVNmcOASA,,,N,0,0,,,2023-02-08 18:30,2023-02-08 18:31,NotPrmUser,NotPrmUser,
141508,27168,54915,178,0,N,1,N,N,CP_Drtn,TT_Task,DT_FixedDUR2,TK_NotStart,ENV1020,30% Environmental Submittal,,840,0,200,0,0,0,200,0,0,0,,,,2024-10-16 08:00,2024-11-19 16:00,,2024-05-22 08:00,2024-06-25 16:00,2024-05-22 08:00,2024-06-25 16:00,2024-05-22 08:00,2024-06-25 16:00,2024-10-16 08:00,2024-11-19 16:00,,PT_Normal,,,,,PNEPBCxufkieFdHEx3O9Jg,97j/sRpxPk6hI3mxX/u9fg,,,N,0,0,,,2023-02-08 18:30,2023-02-08 18:31,NotPrmUser,NotPrmUser,
141509,27168,54915,178,0,N,1,N,N,CP_Drtn,TT_Task,DT_FixedDUR2,TK_NotStart,ENV1030,30% Environmental Review,,840,0,120,0,0,0,120,0,0,0,,,,2024-11-20 08:00,2024-12-10 16:00,,2024-06-26 08:00,2024-07-16 16:00,2024-06-26 08:00,2024-07-16 16:00,2024-06-26 08:00,2024-07-16 16:00,2024-11-20 08:00,2024-12-10 16:00,,PT_Normal,,,,,iDDMoX1Pn0W2+DWjBaHwnQ,NFvU3fnwnU6hVLxT9Fb2FQ,,,N,0,0,,,2023-02-08 18:30,2023-02-08 18:31,NotPrmUser,NotPrmUser,
141510,27168,54915,178,0,N,1,N,N,CP_Drtn,TT_Task,DT_FixedDUR2,TK_NotStart,ENV1040,60% Environmental Submittal,,840,0,280,0,0,0,280,0,0,0,,,,2024-12-11 08:00,2025-01-28 16:00,,2024-07-17 08:00,2024-09-03 16:00,2024-07-17 08:00,2024-09-03 16:00,2024-07-17 08:00,2024-09-03 16:00,2024-12-11 08:00,2025-01-28 16:00,,PT_Normal,,,,,xNVn3OVGsk+jgXDdxN7X6A,a/yuxKJrrU2SPGngDLy/Cg,,,N,0,0,,,2023-02-08 18:30,2023-02-08 18:31,NotPrmUser,NotPrmUser,
141511,27168,54915,178,0,N,1,N,N,CP_Drtn,TT_Task,DT_FixedDUR2,TK_NotStart,ENV1050,60% Environmental Release,,960,960,120,0,0,0,120,0,0,0,,,,2025-02-19 08:00,2025-03-11 16:00,,2024-09-04 08:00,2024-09-24 16:00,2024-09-04 08:00,2024-09-24 16:00,2024-09-04 08:00,2024-09-24 16:00,2025-02-19 08:00,2025-03-11 16:00,,PT_Normal,,,,,AkYXtFIEvEesqjGOGkZaBg,cuDc9TFejky65Sr9iZ6XFA,,,N,0,0,,,2023-02-08 18:30,2023-02-08 18:31,NotPrmUser,NotPrmUser,
141512,27168,54915,178,0,N,1,N,N,CP_Drtn,TT_Task,DT_FixedDUR2,TK_NotStart,ENV1060,BIA NEPA Submittal,,840,0,80,0,0,0,80,0,0,0,,,,2025-01-29 08:00,2025-02-11 16:00,,2024-09-04 08:00,2024-09-17 16:00,2024-09-04 08:00,2024-09-17 16:00,2024-09-04 08:00,2024-09-17 16:00,2025-01-29 08:00,2025-02-11 16:00,,PT_Normal,,,,,1vbvd1pUz0q2ASew15zF2w,SzG5/Rqnd0iNllCvGokVbQ,,,N,0,0,,,2023-02-08 18:30,2023-02-08 18:31,NotPrmUser,NotPrmUser,
141513,27168,54915,178,0,N,1,N,N,CP_Drtn,TT_Task,DT_FixedDUR2,TK_NotStart,ENV1070,"BIA Received (Add 250 days, if needed)",,840,840,160,0,0,0,160,0,0,0,,,,2025-02-12 08:00,2025-03-11 16:00,,2024-09-18 08:00,2024-10-15 16:00,2024-09-18 08:00,2024-10-15 16:00,2024-09-18 08:00,2024-10-15 16:00,2025-02-12 08:00,2025-03-11 16:00,,PT_Normal,,,,,iHLEaMVXV0y8oESG23bDNQ,UBWLJziHv0qKcjTwv378yQ,,,N,0,0,,,2023-02-08 18:30,2023-02-08 18:31,NotPrmUser,NotPrmUser,
141514,27168,54905,178,0,N,1,N,N,CP_Drtn,TT_Task,DT_FixedDUR2,TK_NotStart,DES1010,Seismic / Geotech Submittal,,880,0,200,0,0,0,200,0,0,0,,,,2024-06-26 08:00,2024-07-30 16:00,,2024-01-24 08:00,2024-02-27 16:00,2024-01-24 08:00,2024-02-27 16:00,2024-01-24 08:00,2024-02-27 16:00,2024-06-26 08:00,2024-07-30 16:00,,PT_Normal,,,,,Sbt7XsZ/JkerutZqo4D91Q,djmUGrU55kW2JyTh3gtBKQ,,,N,0,0,,,2023-02-08 18:30,2023-02-08 18:31,NotPrmUser,NotPrmUser,
141515,27168,54905,178,0,N,1,N,N,CP_Drtn,TT_Task,DT_FixedDUR2,TK_NotStart,DES1020,Potholing Submittal,,880,40,200,0,0,0,200,0,0,0,,,,2024-07-31 08:00,2024-09-03 16:00,,2024-02-28 08:00,2024-04-02 16:00,2024-02-28 08:00,2024-04-02 16:00,2024-02-28 08:00,2024-04-02 16:00,2024-07-31 08:00,2024-09-03 16:00,,PT_Normal,,,,,uwE02h2isUSkX+l1qHLxGA,d+TMHR+GGEKjqotbyg8RuA,,,N,0,0,,,2023-02-08 18:30,2023-02-08 18:31,NotPrmUser,NotPrmUser,
141516,27168,54905,178,0,N,1,N,N,CP_Drtn,TT_Task,DT_FixedDUR2,TK_NotStart,DES1030,Potholing Release /Perform Potholing,,840,0,240,0,0,0,240,0,0,0,,,,2024-09-04 08:00,2024-10-15 16:00,,2024-04-10 08:00,2024-05-21 16:00,2024-04-10 08:00,2024-05-21 16:00,2024-04-10 08:00,2024-05-21 16:00,2024-09-04 08:00,2024-10-15 16:00,,PT_Normal,,,,,H2wd/vWStkGja3srNG7nsg,ulyRo3uAAEWNMz2s34adaw,,,N,0,0,,,2023-02-08 18:30,2023-02-08 18:31,NotPrmUser,NotPrmUser,
141517,27168,54917,178,0,N,1,N,N,CP_Drtn,TT_Task,DT_FixedDUR2,TK_NotStart,PCON100,Initiate Performance Partnering Process @ 60%,,1000,0,40,0,0,0,40,0,0,0,,,,2025-01-08 08:00,2025-01-14 16:00,,2024-07-17 08:00,2024-07-23 16:00,2024-07-17 08:00,2024-07-23 16:00,2024-07-17 08:00,2024-07-23 16:00,2025-01-08 08:00,2025-01-14 16:00,,PT_Normal,,,,,WOB9nNIsq0mhhbqFZIM5dw,Ev9CdAxSGU6StZ20G9kCuA,,,N,0,0,,,2023-02-08 18:30,2023-02-08 18:31,NotPrmUser,NotPrmUser,
141518,27168,54917,178,0,N,1,N,N,CP_Drtn,TT_Task,DT_FixedDUR2,TK_NotStart,PCON110,Receive Estimate from Contractor,,1000,0,120,0,0,0,120,0,0,0,,,,2025-01-15 08:00,2025-02-04 16:00,,2024-07-24 08:00,2024-08-13 16:00,2024-07-24 08:00,2024-08-13 16:00,2024-07-24 08:00,2024-08-13 16:00,2025-01-15 08:00,2025-02-04 16:00,,PT_Normal,,,,,22B4CnLWkUyYpxy87eSnhA,70BH4rN+iUS2SRZy5AbRbA,,,N,0,0,,,2023-02-08 18:30,2023-02-08 18:31,NotPrmUser,NotPrmUser,
141519,27168,54917,178,0,N,1,N,N,CP_Drtn,TT_Task,DT_FixedDUR2,TK_NotStart,PCON120,Bid Estimate Negotiations,,1000,0,80,0,0,0,80,0,0,0,,,,2025-02-05 08:00,2025-02-18 16:00,,2024-08-14 08:00,2024-08-27 16:00,2024-08-14 08:00,2024-08-27 16:00,2024-08-14 08:00,2024-08-27 16:00,2025-02-05 08:00,2025-02-18 16:00,,PT_Normal,,,,,Jsrw/1NqYUyGybIDlHcTDw,LzvM7v8C6EGvFBAZU+yUkw,,,N,0,0,,,2023-02-08 18:30,2023-02-08 18:31,NotPrmUser,NotPrmUser,
141520,27168,54917,178,0,N,1,N,N,CP_Drtn,TT_Task,DT_FixedDUR2,TK_NotStart,PCON130,Revise Estimate based on IFC,,1000,0,40,0,0,0,40,0,0,0,,,,2025-02-19 08:00,2025-02-25 16:00,,2024-08-28 08:00,2024-09-03 16:00,2024-08-28 08:00,2024-09-03 16:00,2024-08-28 08:00,2024-09-03 16:00,2025-02-19 08:00,2025-02-25 16:00,,PT_Normal,,,,,wyF1NUB1uEW1EpMKkwdrfQ,Ju9wBy0cv0Cx8Gr4UtS6/A,,,N,0,0,,,2023-02-08 18:30,2023-02-08 18:31,NotPrmUser,NotPrmUser,
141521,27168,54917,178,0,N,1,N,N,CP_Drtn,TT_Task,DT_FixedDUR2,TK_NotStart,PCON140,Issue Release,,1000,1000,80,0,0,0,80,0,0,0,,,,2025-02-26 08:00,2025-03-11 16:00,,2024-09-04 08:00,2024-09-17 16:00,2024-09-04 08:00,2024-09-17 16:00,2024-09-04 08:00,2024-09-17 16:00,2025-02-26 08:00,2025-03-11 16:00,,PT_Normal,,,,,lHeOE5rCtkeHySCfsLIsuQ,qn2ADuWs4E+wJjhF06YhlA,,,N,0,0,,,2023-02-08 18:30,2023-02-08 18:31,NotPrmUser,NotPrmUser,
141522,27168,54919,178,0,N,1,N,N,CP_Drtn,TT_Task,DT_FixedDUR2,TK_NotStart,PCON200,Civil Pre-Construction Meeting (Civil Construction Ready),,0,0,40,0,0,0,40,0,0,0,,,,2025-03-12 08:00,2025-03-18 16:00,,2025-03-12 08:00,2025-03-18 16:00,2025-03-12 08:00,2025-03-18 16:00,2025-03-12 08:00,2025-03-18 16:00,2025-03-12 08:00,2025-03-18 16:00,,PT_Normal,,,,,b4yoWqU2kUayx429FcLgBg,/fzpRIBTS0Wi39o0yqA71w,,,Y,0,0,,,2023-02-08 18:30,2023-02-08 18:31,NotPrmUser,NotPrmUser,
141523,27168,54919,178,0,N,1,N,N,CP_Drtn,TT_Task,DT_FixedDUR2,TK_NotStart,PCON210,Electrical - Pre-Construction Meeting (Electical Construction Ready),,240,0,40,0,0,0,40,0,0,0,,,,2025-04-23 08:00,2025-04-29 16:00,,2025-03-12 08:00,2025-03-18 16:00,2025-03-12 08:00,2025-03-18 16:00,2025-03-12 08:00,2025-03-18 16:00,2025-04-23 08:00,2025-04-29 16:00,,PT_Normal,,,,,dNP099mQykmVeDjF+CobzA,12e5IMSkRkiRg5cqGBDQXQ,,,N,0,0,,,2023-02-08 18:30,2023-02-08 18:31,NotPrmUser,NotPrmUser,
141524,27168,54918,178,0,N,1,N,N,CP_Drtn,TT_Task,DT_FixedDUR2,TK_NotStart,PCON150,Initiate Performance Partnering Process @ 60%,,1480,0,40,0,0,0,40,0,0,0,,,,2025-02-19 08:00,2025-02-25 16:00,,2024-06-05 08:00,2024-06-11 16:00,2024-06-05 08:00,2024-06-11 16:00,2024-06-05 08:00,2024-06-11 16:00,2025-02-19 08:00,2025-02-25 16:00,,PT_Normal,,,,,/Rw+rLCc6EOEDLwhVc1xqQ,f2X6w5mkAUOEA/JypUUNyQ,,,N,0,0,,,2023-02-08 18:30,2023-02-08 18:31,NotPrmUser,NotPrmUser,
141525,27168,54918,178,0,N,1,N,N,CP_Drtn,TT_Task,DT_FixedDUR2,TK_NotStart,PCON160,Receive Estimate from Contractor,,1480,0,120,0,0,0,120,0,0,0,,,,2025-02-26 08:00,2025-03-18 16:00,,2024-06-12 08:00,2024-07-02 16:00,2024-06-12 08:00,2024-07-02 16:00,2024-06-12 08:00,2024-07-02 16:00,2025-02-26 08:00,2025-03-18 16:00,,PT_Normal,,,,,nn9QhBFxUkiepv2KI+1XVA,rk2s0DkpKEeSXveHtzIy3Q,,,N,0,0,,,2023-02-08 18:30,2023-02-08 18:31,NotPrmUser,NotPrmUser,
141526,27168,54918,178,0,N,1,N,N,CP_Drtn,TT_Task,DT_FixedDUR2,TK_NotStart,PCON170,Bid Estimate Negotiations,,1480,0,80,0,0,0,80,0,0,0,,,,2025-03-19 08:00,2025-04-01 16:00,,2024-07-03 08:00,2024-07-16 16:00,2024-07-03 08:00,2024-07-16 16:00,2024-07-03 08:00,2024-07-16 16:00,2025-03-19 08:00,2025-04-01 16:00,,PT_Normal,,,,,o2+YVbUjV0+DdVrgKHi4eg,YApkJLF0+kSSJ15fIfEBDg,,,N,0,0,,,2023-02-08 18:30,2023-02-08 18:31,NotPrmUser,NotPrmUser,
141527,27168,54918,178,0,N,1,N,N,CP_Drtn,TT_Task,DT_FixedDUR2,TK_NotStart,PCON180,Revise Estimate based on IFC,,1480,0,40,0,0,0,40,0,0,0,,,,2025-04-02 08:00,2025-04-08 16:00,,2024-07-17 08:00,2024-07-23 16:00,2024-07-17 08:00,2024-07-23 16:00,2024-07-17 08:00,2024-07-23 16:00,2025-04-02 08:00,2025-04-08 16:00,,PT_Normal,,,,,LvacHQ1Cw0aLuBDUych1aw,EwmR9gDcRkilu5ifVa5rGw,,,N,0,0,,,2023-02-08 18:30,2023-02-08 18:31,NotPrmUser,NotPrmUser,
141528,27168,54918,178,0,N,1,N,N,CP_Drtn,TT_Task,DT_FixedDUR2,TK_NotStart,PCON190,Issue Release,,1480,1240,80,0,0,0,80,0,0,0,,,,2025-04-09 08:00,2025-04-22 16:00,,2024-07-24 08:00,2024-08-06 16:00,2024-07-24 08:00,2024-08-06 16:00,2024-07-24 08:00,2024-08-06 16:00,2025-04-09 08:00,2025-04-22 16:00,,PT_Normal,,,,,NtaZDJ7+406NiJR7cD0NlA,oW7iIYKsE0WOc4JueInPYw,,,N,0,0,,,2023-02-08 18:30,2023-02-08 18:31,NotPrmUser,NotPrmUser,
141529,27168,54911,178,0,N,1,N,N,CP_Drtn,TT_Task,DT_FixedDUR2,TK_NotStart,PRO1010,Order Long Lead Civil Material,,680,680,1200,0,0,0,1200,0,0,0,,,,2024-08-14 08:00,2025-03-11 16:00,,2024-04-17 08:00,2024-11-12 16:00,2024-04-17 08:00,2024-11-12 16:00,2024-04-17 08:00,2024-11-12 16:00,2024-08-14 08:00,2025-03-11 16:00,,PT_Normal,,,,,enTMLV6zCUyUJvHSp3+vYw,6sTpeY3Zeka9jvaJf74F/A,,,N,0,0,,,2023-02-08 18:30,2023-02-08 18:31,NotPrmUser,NotPrmUser,
141530,27168,54911,178,0,N,1,N,N,CP_Drtn,TT_Task,DT_FixedDUR2,TK_NotStart,PRO1050,Order Short Lead Materials,,600,600,200,0,0,0,200,0,0,0,,,,2025-02-05 08:00,2025-03-11 16:00,,2024-10-23 08:00,2024-11-26 16:00,2024-10-23 08:00,2024-11-26 16:00,2024-10-23 08:00,2024-11-26 16:00,2025-02-05 08:00,2025-03-11 16:00,,PT_Normal,,,,,CR/0O9AogEeOWSOYe3Yw3Q,F4nwLXMbfEG//gmRBKf/Ng,,,N,0,0,,,2023-02-08 18:30,2023-02-08 18:31,NotPrmUser,NotPrmUser,
141531,27168,54911,178,0,N,1,N,N,CP_Drtn,TT_Task,DT_FixedDUR2,TK_NotStart,PRO1030,Order Long Lead Electrical Materials,,920,680,800,0,0,0,800,0,0,0,,,,2024-12-04 08:00,2025-04-22 16:00,,2024-06-26 08:00,2024-11-12 16:00,2024-06-26 08:00,2024-11-12 16:00,2024-06-26 08:00,2024-11-12 16:00,2024-12-04 08:00,2025-04-22 16:00,,PT_Normal,,,,,a/kFV+EzDUiGDwAoGFXQiQ,6VuYdtYZ9kaH8kE5VINo4Q,,,N,0,0,,,2023-02-08 18:30,2023-02-08 18:31,NotPrmUser,NotPrmUser,
141532,27168,54921,178,0,N,1,N,N,CP_Drtn,TT_Task,DT_FixedDUR2,TK_NotStart,CON2000,Civil Construction (Trenching 300 feet/day),7730,0,0,3520,0,14248,14248,3520,0,0,0,,,,2025-03-19 08:00,2026-11-24 16:00,,2025-03-19 08:00,2026-11-24 16:00,2025-03-19 08:00,2026-11-24 16:00,2025-03-19 08:00,2026-11-24 16:00,2025-03-19 08:00,2026-11-24 16:00,,PT_Normal,,,,,ECHDaAf/MkeYGH9gAYvb2w,qB9j92cJv0yBwZ6ayTeTtw,,,Y,0,0,,,2023-02-08 18:30,2023-02-08 18:37,NotPrmUser,NotPrmUser,
141533,27168,54922,178,0,N,1,N,N,CP_Drtn,TT_Task,DT_FixedDUR2,TK_NotStart,CON3000,Electrical Construction,7786,0,0,3280,0,1640,1640,3280,0,0,0,,,,2025-04-30 08:00,2026-11-24 16:00,,2025-04-30 08:00,2026-11-24 16:00,2025-04-30 08:00,2026-11-24 16:00,2025-04-30 08:00,2026-11-24 16:00,2025-04-30 08:00,2026-11-24 16:00,,PT_Normal,,,,,O4j60aKPOUqfCpctLZD2oA,292/xZCTXEK0bbhipfBpQQ,,,Y,0,0,,,2023-02-08 18:30,2023-02-08 19:35,NotPrmUser,NotPrmUser,
141534,27168,54923,178,0,N,1,N,N,CP_Drtn,TT_Task,DT_FixedDUR2,TK_NotStart,CON4000,Service Cutover,,1056,0,2920,0,0,0,2920,0,0,0,,,,2026-01-02 08:00,2027-05-27 16:00,,2025-07-02 08:00,2026-11-24 16:00,2025-07-02 08:00,2026-11-24 16:00,2025-07-02 08:00,2026-11-24 16:00,2026-01-02 08:00,2027-05-27 16:00,,PT_Normal,,,,,SavbmpSrPUucrlJKCrEa9g,ZXNw2lDeSUOmSOQqtXGKkw,,,N,0,0,,,2023-02-08 18:30,2023-02-08 18:31,NotPrmUser,NotPrmUser,
141535,27168,54924,178,0,N,1,N,N,CP_Drtn,TT_Task,DT_FixedDUR2,TK_NotStart,CON5000,Scada Construction,,1056,0,520,0,0,0,520,0,0,0,,,,2027-02-26 08:00,2027-05-27 16:00,,2026-08-26 08:00,2026-11-24 16:00,2026-08-26 08:00,2026-11-24 16:00,2026-08-26 08:00,2026-11-24 16:00,2027-02-26 08:00,2027-05-27 16:00,,PT_Normal,,,,,cDlHYq7clEavaDDtEvHkLA,7nkZ3gVQa0miO/lL03nQKQ,,,N,0,0,,,2023-02-08 18:30,2023-02-08 18:31,NotPrmUser,NotPrmUser,
141536,27168,54925,178,0,N,1,N,N,CP_Drtn,TT_Task,DT_FixedDUR2,TK_NotStart,CON6000,Substation Construction,,1056,0,520,0,0,0,520,0,0,0,,,,2027-02-26 08:00,2027-05-27 16:00,,2026-08-26 08:00,2026-11-24 16:00,2026-08-26 08:00,2026-11-24 16:00,2026-08-26 08:00,2026-11-24 16:00,2027-02-26 08:00,2027-05-27 16:00,,PT_Normal,,,,,6cLcPKz9m0m4UBkk2wX/9A,6Pc9m8Bk/06gkoavEg9HRA,,,N,0,0,,,2023-02-08 18:30,2023-02-08 18:31,NotPrmUser,NotPrmUser,
141537,27168,54926,178,0,N,1,N,N,CP_Drtn,TT_Task,DT_FixedDrtn,TK_NotStart,CON7000,Overhead RFS (1000 feet per day),7785,0,0,1056,0,1056,1056,1056,0,0,0,,,,2026-11-25 08:00,2027-05-27 16:00,,2026-11-25 08:00,2027-05-27 16:00,2026-11-25 08:00,2027-05-27 16:00,2026-11-25 08:00,2027-05-27 16:00,2026-11-25 08:00,2027-05-27 16:00,,PT_Normal,,,,,N0mHf4jNS0qCKBx35Upg4g,e0tgTwd0EU2q4y6XHY3o/w,,,Y,0,0,,,2023-02-08 18:30,2023-02-08 18:31,NotPrmUser,NotPrmUser,
141538,27168,54920,178,0,N,1,N,N,CP_Drtn,TT_Task,DT_FixedDUR2,TK_NotStart,ISD1000,ISD - Energize - Put in service,,2008,2008,8,0,0,0,8,25,0,25,,,,2027-11-11 08:00,2027-11-11 16:00,,2026-11-25 08:00,2026-11-25 16:00,2026-11-25 08:00,2026-11-25 16:00,2026-11-25 08:00,2026-11-25 16:00,2027-11-11 08:00,2027-11-11 16:00,,PT_Normal,,,,,gjHIATjIKU2CaIugeud7EA,d+XVEYTBj0i3zuqw9hVV0Q,,,N,0,0,,,2023-02-08 18:30,2023-02-08 18:31,NotPrmUser,NotPrmUser,
141539,27168,54903,178,0,N,1,N,N,CP_Drtn,TT_Task,DT_FixedDUR2,TK_NotStart,SUR1000,Survey and LiDAR,7385,0,0,400,0,9182,9182,400,0,0,0,,,,2023-09-13 08:00,2023-11-21 16:00,,2023-09-13 08:00,2023-11-21 16:00,2023-09-13 08:00,2023-11-21 16:00,2023-09-13 08:00,2023-11-21 16:00,2023-09-13 08:00,2023-11-21 16:00,,PT_Normal,,,,,NhxynT6x0UOQjXWNuMwd/A,xpUas4bKIE+N+qsLrQ2Xjg,,,Y,0,0,,,2023-02-08 18:30,2023-02-08 18:31,NotPrmUser,NotPrmUser,
141540,27168,54908,178,0,N,1,N,N,CP_Drtn,TT_Task,DT_FixedDUR2,TK_NotStart,DES1200,Receive Services Worksheet and Cable Info from Design Firms,,760,0,160,0,0,0,160,0,0,0,,,,2024-06-12 08:00,2024-07-09 16:00,,2024-01-31 08:00,2024-02-27 16:00,2024-01-31 08:00,2024-02-27 16:00,2024-01-31 08:00,2024-02-27 16:00,2024-06-12 08:00,2024-07-09 16:00,,PT_Normal,,,,,puIBiXMMXkWwWzFhbuAZVQ,yQAlrr2Qxk6IZa0tKCOM/w,,,N,0,0,,,2023-02-08 18:30,2023-02-08 18:31,NotPrmUser,NotPrmUser,
141541,27168,54908,178,0,N,1,N,N,CP_Drtn,TT_Task,DT_FixedDUR2,TK_NotStart,DES1210,Issue to Trench Inspectors,,2376,1320,80,0,0,0,80,0,0,0,,,,2025-12-19 08:00,2026-01-01 16:00,,2024-10-30 08:00,2024-11-12 16:00,2024-10-30 08:00,2024-11-12 16:00,2024-10-30 08:00,2024-11-12 16:00,2025-12-19 08:00,2026-01-01 16:00,,PT_Normal,,,,,oWDLS0+6kEKO1T+XNCxtUQ,BCGV2A8zpUCT4DV6zT5aDw,,,N,0,0,,,2023-02-08 18:30,2023-02-08 18:31,NotPrmUser,NotPrmUser,
141542,27168,54920,178,0,N,1,N,N,CP_Drtn,TT_FinMile,DT_FixedDrtn,TK_NotStart,CON1020,Construction Complete,,0,0,0,0,0,0,0,0,0,0,,,,2027-05-27 16:00,2027-05-27 16:00,,2027-05-27 16:00,2027-05-27 16:00,2027-05-27 16:00,2027-05-27 16:00,2027-05-27 16:00,2027-05-27 16:00,2027-05-27 16:00,2027-05-27 16:00,,PT_Normal,,,,,mtYkBicZukiONtfz1BFuPQ,DUzJTr2x10uS1YbJ9+b9qw,,,Y,0,0,,,2023-02-08 18:30,2023-02-08 18:31,NotPrmUser,NotPrmUser,
141543,27168,54920,178,0,N,1,N,N,CP_Drtn,TT_Mile,DT_FixedDrtn,TK_NotStart,CON1010,Construction Start,,5536,5536,0,0,0,0,0,0,0,0,,,,2027-11-11 16:00,2027-11-11 16:00,,2025-03-19 08:00,2025-03-19 08:00,2025-03-19 08:00,2025-03-19 08:00,2025-03-19 08:00,2025-03-19 08:00,2027-11-11 16:00,2027-11-11 16:00,,PT_Normal,,,,,24SBqXkNzUSdTNU9kgnwqg,xj/f4O4RXUuOIYafvCjDaA,,,N,0,0,,,2023-02-08 18:30,2023-02-08 18:31,NotPrmUser,NotPrmUser,
141544,27168,54929,178,0,N,1,N,N,CP_Drtn,TT_Task,DT_FixedDUR2,TK_NotStart,CLO1020,GIS/As-Built and Records Complete,,480,480,480,0,0,0,480,0,0,0,,,,2027-08-20 08:00,2027-11-11 16:00,,2027-05-28 08:00,2027-08-19 16:00,2027-05-28 08:00,2027-08-19 16:00,2027-05-28 08:00,2027-08-19 16:00,2027-08-20 08:00,2027-11-11 16:00,,PT_Normal,,,,,tjeZc1M09EOrtRk9yFVrYQ,/FaW7aDLfEiXtDOx2GOimw,,,N,0,0,,,2023-02-08 18:30,2023-02-08 18:31,NotPrmUser,NotPrmUser,
141545,27168,54930,178,0,N,1,N,N,CP_Drtn,TT_Task,DT_FixedDUR2,TK_NotStart,CLO1030,"PO's complete, Work Order Reconcilled and Closed",,0,0,960,0,0,0,960,0,0,0,,,,2027-05-28 08:00,2027-11-11 16:00,,2027-05-28 08:00,2027-11-11 16:00,2027-05-28 08:00,2027-11-11 16:00,2027-05-28 08:00,2027-11-11 16:00,2027-05-28 08:00,2027-11-11 16:00,,PT_Normal,,,,,fma9XehZqkaWJ4xJjayvtQ,9xH2Pm+fnkS1qcX4eW+gsg,,,Y,0,0,,,2023-02-08 18:30,2023-02-08 18:31,NotPrmUser,NotPrmUser,
141546,27168,54928,178,0,N,1,N,N,CP_Drtn,TT_FinMile,DT_FixedDrtn,TK_NotStart,CLO1010,Project Complete,,0,0,0,0,0,0,0,0,0,0,,,,2027-11-11 16:00,2027-11-11 16:00,,2027-11-11 16:00,2027-11-11 16:00,2027-11-11 16:00,2027-11-11 16:00,2027-11-11 16:00,2027-11-11 16:00,2027-11-11 16:00,2027-11-11 16:00,,PT_Normal,,,,,r1u+yMZajE6tAANOO4kBcg,INYQ32aAs0yUV1xAmXm4fw,,,Y,0,0,,,2023-02-08 18:30,2023-02-08 18:31,NotPrmUser,NotPrmUser,
141547,27168,54904,178,0,N,1,N,N,CP_Drtn,TT_LOE,DT_FixedDUR2,TK_NotStart,DES1000,Design Summary,7257,4096,0,2680,0,16233,16233,2680,0,0,0,,,,2023-11-22 08:00,2027-02-25 16:00,,2023-11-22 08:00,2025-03-11 16:00,2023-11-22 08:00,2025-03-11 16:00,2023-11-22 08:00,2025-03-11 16:00,2023-11-22 08:00,2027-02-25 16:00,,PT_Normal,,,,,YL4HeMYSH0Oypno2WtlySQ,sYm5bR9s9kWDqw48F573ew,,,Y,0,0,,,2023-02-08 18:30,2023-02-08 18:31,NotPrmUser,NotPrmUser,
141548,27168,54920,178,0,N,1,N,N,CP_Drtn,TT_LOE,DT_FixedDUR2,TK_NotStart,CON1000,Construction Summary,7385,0,0,4576,0,9972,9972,4576,25,0,25,,,,2027-05-27 16:00,2027-05-27 16:00,,2025-03-19 08:00,2027-05-27 16:00,2025-03-19 08:00,2027-05-27 16:00,2025-03-19 08:00,2027-05-27 16:00,2027-05-27 16:00,2027-05-27 16:00,,PT_Normal,,,,,pcEF11uQX0ySNDy29wm99A,gNTpjcDvgUWWmcesSHA1sw,,,N,0,0,,,2023-02-08 18:30,2023-02-08 18:31,NotPrmUser,NotPrmUser,
141549,27168,54928,178,0,N,1,N,N,CP_Drtn,TT_LOE,DT_FixedDUR2,TK_NotStart,CLO1000,Close Out Summary,7385,0,0,960,0,4482,4482,960,0,0,0,,,,2027-05-28 08:00,2027-11-11 16:00,,2027-05-28 08:00,2027-11-11 16:00,2027-05-28 08:00,2027-11-11 16:00,2027-05-28 08:00,2027-11-11 16:00,2027-05-28 08:00,2027-11-11 16:00,,PT_Normal,,,,,jooQb9m2EkSr4eoogvZHqQ,jseq4D/pSEKSLXfGtP+mtg,,,Y,0,0,,,2023-02-08 18:30,2023-02-08 18:31,NotPrmUser,NotPrmUser,
141550,27168,54901,178,0,N,1,N,N,CP_Drtn,TT_LOE,DT_FixedDUR2,TK_NotStart,PCON1000,Pre-Construction Summary,,0,0,3296,0,0,0,3296,0,0,0,,,,2023-08-14 08:00,2025-03-18 16:00,,2023-08-14 08:00,2025-03-18 16:00,2023-08-14 08:00,2025-03-18 16:00,2023-08-14 08:00,2025-03-18 16:00,2023-08-14 08:00,2025-03-18 16:00,,PT_Normal,,,,,hFuRbcV1k0uxPbCdsdetSw,XdgREtnBh0a9XLQt0ofb5Q,,,Y,0,0,,,2023-02-08 18:30,2023-02-08 18:31,NotPrmUser,NotPrmUser,
